# Comercial Juguetes Wingtip

How a schedule from MS Project changed from version to version. A marks actual dates.

## Version 1 (saved 2003-11-28, file Comercial Juguetes Wingtip 5a.mpp)

| ID | WBS | Task | Duration | Start | Finish | Predecessors | Total float |
| --- | --- | --- | --- | --- | --- | --- | --- |
| 1 | 1 | **Preproducción** | 8.5d | 2005-01-03 | 2005-01-13 |  | 0d |
| 2 |  | Revisar guión | 2.5d | 2005-01-03 | 2005-01-05 |  | 0d |
| 3 |  | Reunir personal de producción | 3d | 2005-01-05 | 2005-01-10 | 2 | 0d |
| 4 |  | Elegir lugares | 1d | 2005-01-10 | 2005-01-11 | 3 | 0d |
| 5 |  | Realizar audiciones | 2d | 2005-01-11 | 2005-01-13 | 4 | 0d |
| 6 |  | ¡Preproducción completada! | 0d | 2005-01-13 | 2005-01-13 | 5 | 0d |
| 7 | 2 | **Producción** | 4.5d | 2005-01-13 | 2005-01-19 | 1 | 0d |
| 8 |  | Ensayos | 2.25d | 2005-01-13 | 2005-01-17 |  | 0d |
| 9 |  | Proyección del video | 2d | 2005-01-17 | 2005-01-18 | 8 | 0d |
| 10 |  | Montaje de película | 1d | 2005-01-19 | 2005-01-19 | 9 | 0d |
| 11 |  | ¡Producción completada! | 0d | 2005-01-19 | 2005-01-19 | 10 | 0d |
| 12 | 3 | **Postproducción** | 3.5d | 2005-01-20 | 2005-01-25 | 7 | 0d |
| 13 |  | Montaje | 2d | 2005-01-20 | 2005-01-21 |  | 0d |
| 14 |  | Añadir sonido final | 1d | 2005-01-24 | 2005-01-24 | 13 | 0d |
| 15 |  | Copia final para el cliente | 4h | 2005-01-25 | 2005-01-25 | 14 | 0d |

## Version 2 (saved 2007-12-21, file Comercial Juguetes Wingtip 3.mpp)

Last finish stays 2005-01-25.

Removed: 11 ¡Producción completada!; 12 Postproducción; 13 Montaje; 14 Añadir sonido final; 15 Copia final para el cliente

Changed:

| ID | Task | Start | Finish | Duration | Other |
| --- | --- | --- | --- | --- | --- |
| 1 | **Preproducción** |  | 2005-01-13 → 2005-01-18 (+5d) | 8.5d → 12d |  |
| 2 | Revisar guión |  | 2005-01-05 → 2005-01-07 (+2d) | 2.5d → 5d | resources Garrett R. Vargas; Scott Cooper → none |
| 3 | Reunir personal de producción | 2005-01-05 → 2005-01-10 (+5d) | 2005-01-10 → 2005-01-12 (+2d) |  | resources Garrett R. Vargas; Patti Mintz → none |
| 4 | Elegir lugares | 2005-01-10 → 2005-01-13 (+3d) | 2005-01-11 → 2005-01-14 (+3d) | 1d → 2d | resources Scott Cooper; Patti Mintz; Cinta de video [4 Cintas de 30-min] → none |
| 5 | Realizar audiciones | 2005-01-11 → 2005-01-17 (+6d) | 2005-01-13 → 2005-01-18 (+5d) |  | resources Peter Kelly; Scott Cooper; Jonathan Mollerup; Patti Mintz → none |
| 6 | ¡Preproducción completada! | 2005-01-13 → 2005-01-18 (+5d) | 2005-01-13 → 2005-01-18 (+5d) |  |  |
| 7 | **Producción** | 2005-01-13 → 2005-01-19 (+6d) | 2005-01-19 → 2005-01-25 (+6d) | 4.5d → 5d |  |
| 8 | Ensayos | 2005-01-13 → 2005-01-19 (+6d) | 2005-01-17 → 2005-01-20 (+3d) | 2.25d → 2d | resources Garrett R. Vargas; Jim Hance; Scott Cooper; Patti Mintz; Peter Kelly; Jon Ganio [50%]; John Rodman; 600 vatios de luz y sonido [400%]; Cámara Boom [200%]; Cámara de grabación Mini-DV; Kit reflector; Cinta de video [1 Cintas de 30-min] → none |
| 9 | Proyección del video | 2005-01-17 → 2005-01-21 (+4d) | 2005-01-18 → 2005-01-24 (+6d) |  | resources Garrett R. Vargas; Jim Hance; Scott Cooper; Patti Mintz; Peter Kelly; Jon Ganio [50%]; John Rodman; 600 vatios de luz y sonido [400%]; Cámara Boom [200%]; Cámara de grabación Mini-DV [300%]; Kit reflector; Cinta de video [16 Cintas de 30-min]; Electricista [200%] → none |
| 10 | Montaje de película | 2005-01-19 → 2005-01-25 (+6d) | 2005-01-19 → 2005-01-25 (+6d) |  | resources Jo Brown; Laboratorio Edición → none |

## Version 3 (saved 2007-12-21, file Comercial Juguetes Wingtip 4.mpp)

Last finish 2005-01-25 → 2005-01-20 (-5d).

Changed:

| ID | Task | Start | Finish | Duration | Total float | Other |
| --- | --- | --- | --- | --- | --- | --- |
| 1 | **Preproducción** |  | 2005-01-18 → 2005-01-13 (-5d) | 12d → 8.5d | 0d → 0.8d |  |
| 2 | Revisar guión |  | 2005-01-07 → 2005-01-05 (-2d) | 5d → 2.5d | 0d → 0.8d | resources none → Garrett R. Vargas; Scott Cooper |
| 3 | Reunir personal de producción | 2005-01-10 → 2005-01-05 (-5d) | 2005-01-12 → 2005-01-10 (-2d) |  | 0d → 0.8d | resources none → Garrett R. Vargas; Patti Mintz |
| 4 | Elegir lugares | 2005-01-13 → 2005-01-10 (-3d) | 2005-01-14 → 2005-01-11 (-3d) | 2d → 1d | 0d → 0.8d | resources none → Scott Cooper; Patti Mintz; Cinta de video [4 Cintas de 30-min] |
| 5 | Realizar audiciones | 2005-01-17 → 2005-01-11 (-6d) | 2005-01-18 → 2005-01-13 (-5d) |  | 0d → 0.8d | resources none → Peter Kelly; Scott Cooper; Jonathan Mollerup; Patti Mintz |
| 6 | ¡Preproducción completada! | 2005-01-18 → 2005-01-13 (-5d) | 2005-01-18 → 2005-01-13 (-5d) |  | 0d → 0.8d |  |
| 7 | **Producción** | 2005-01-19 → 2005-01-13 (-6d) | 2005-01-25 → 2005-01-20 (-5d) | 5d → 5.1d |  |  |
| 8 | Ensayos | 2005-01-19 → 2005-01-13 (-6d) | 2005-01-20 → 2005-01-17 (-3d) | 2d → 1.29d |  | resources none → 600 vatios de luz y sonido [400%]; Garrett R. Vargas [25%]; Jim Hance; Scott Cooper; Patti Mintz; Peter Kelly; John Rodman [63%]; Jon Ganio [50%]; Cámara de grabación Mini-DV; Kit reflector; Cámara Boom [200%]; Cinta de video [1 Cintas de 30-min] |
| 9 | Proyección del video | 2005-01-21 → 2005-01-17 (-4d) | 2005-01-24 → 2005-01-19 (-5d) | 2d → 2.5d |  | resources none → Garrett R. Vargas [75%]; Jim Hance [75%]; Scott Cooper [75%]; Patti Mintz [75%]; Peter Kelly [75%]; John Rodman; Jon Ganio [38%]; Electricista [150%]; Cámara de grabación Mini-DV [225%]; 600 vatios de luz y sonido [300%]; Kit reflector [75%]; Cámara Boom [150%]; Cinta de video [16 Cintas de 30-min] |
| 10 | Montaje de película | 2005-01-25 → 2005-01-19 (-6d) | 2005-01-25 → 2005-01-20 (-5d) |  |  | resources none → Jo Brown [50%]; Laboratorio Edición [50%] |

## Version 4 (data date 2005-01-10, saved 2007-12-21, file Comercial Juguetes Wingtip 6.mpp)

Last finish 2005-01-20 → 2005-01-31 (+11d). Complete tasks 0 → 6.

Added:

| ID | Task | Duration | Start | Finish | Predecessors | Resources |
| --- | --- | --- | --- | --- | --- | --- |
| 11 | ¡Producción completada! | 0d | 2005-01-25 | 2005-01-25 | 10 |  |
| 12 | **Postproducción** | 3.5d | 2005-01-26 | 2005-01-31 | 7 |  |
| 13 | Montaje | 2d | 2005-01-26 | 2005-01-27 |  | Laboratorio Edición; Scott Cooper; Peter Kelly |
| 14 | Añadir sonido final | 1d | 2005-01-28 | 2005-01-28 | 13 | Laboratorio Edición; Jo Brown; Scott Cooper |
| 15 | Copia final para el cliente | 4h | 2005-01-31 | 2005-01-31 | 14 | Garrett R. Vargas |

Changed:

| ID | Task | Start | Finish | Duration | Complete | Total float | Other |
| --- | --- | --- | --- | --- | --- | --- | --- |
| 1 | **Preproducción** | 2005-01-03 A |  | 8.5d → 9d | 0% → 99% | 0.8d → 7d | baseline start none → 2005-01-03; baseline finish none → 2005-01-13 |
| 2 | Revisar guión | 2005-01-03 A | 2005-01-05 A |  | 0% → 100% | 0.8d → none | baseline start none → 2005-01-03; baseline finish none → 2005-01-05 |
| 3 | Reunir personal de producción | 2005-01-05 A | 2005-01-10 A |  | 0% → 100% | 0.8d → none | baseline start none → 2005-01-05; baseline finish none → 2005-01-10 |
| 4 | Elegir lugares | 2005-01-10 A | 2005-01-11 A |  | 0% → 100% | 0.8d → none | baseline start none → 2005-01-10; baseline finish none → 2005-01-11 |
| 5 | Realizar audiciones | 2005-01-11 A | 2005-01-13 A | 2d → 2.5d | 0% → 100% | 0.8d → none | baseline start none → 2005-01-11; baseline finish none → 2005-01-13 |
| 6 | ¡Preproducción completada! |  |  |  |  | 0.8d → 7d | baseline start none → 2005-01-13; baseline finish none → 2005-01-13 |
| 7 | **Producción** | 2005-01-13 → 2005-01-17 A (+4d) | 2005-01-20 → 2005-01-25 (+5d) | 5.1d → 7d | 0% → 86% |  | baseline start none → 2005-01-13; baseline finish none → 2005-01-19 |
| 8 | Ensayos | 2005-01-13 → 2005-01-17 A (+4d) | 2005-01-17 → 2005-01-19 A (+2d) | 1.29d → 3d | 0% → 100% | 0d → none | resources 600 vatios de luz y sonido [400%]; Garrett R. Vargas [25%]; Jim Hance; Scott Cooper; Patti Mintz; Peter Kelly; John Rodman [63%]; Jon Ganio [50%]; Cámara de grabación Mini-DV; Kit reflector; Cámara Boom [200%]; Cinta de video [1 Cintas de 30-min] → Garrett R. Vargas; Jim Hance; Scott Cooper; Patti Mintz; Peter Kelly; Jon Ganio [50%]; John Rodman; 600 vatios de luz y sonido [400%]; Cámara Boom [200%]; Cámara de grabación Mini-DV; Kit reflector; Cinta de video [1 Cintas de 30-min]; baseline start none → 2005-01-13; baseline finish none → 2005-01-17 |
| 9 | Proyección del video | 2005-01-17 → 2005-01-19 A (+2d) | 2005-01-19 → 2005-01-24 A (+5d) | 2.5d → 3d | 0% → 100% | 0d → none | resources Garrett R. Vargas [75%]; Jim Hance [75%]; Scott Cooper [75%]; Patti Mintz [75%]; Peter Kelly [75%]; John Rodman; Jon Ganio [38%]; Electricista [150%]; Cámara de grabación Mini-DV [225%]; 600 vatios de luz y sonido [300%]; Kit reflector [75%]; Cámara Boom [150%]; Cinta de video [16 Cintas de 30-min] → Garrett R. Vargas; Jim Hance; Scott Cooper; Patti Mintz; Peter Kelly; Jon Ganio [50%]; John Rodman; 600 vatios de luz y sonido [400%]; Cámara Boom [200%]; Cámara de grabación Mini-DV [300%]; Kit reflector; Cinta de video [16 Cintas de 30-min]; Electricista [200%]; baseline start none → 2005-01-17; baseline finish none → 2005-01-18 |
| 10 | Montaje de película | 2005-01-19 → 2005-01-25 (+6d) | 2005-01-20 → 2005-01-25 (+5d) |  |  |  | resources Jo Brown [50%]; Laboratorio Edición [50%] → Jo Brown; Laboratorio Edición; baseline start none → 2005-01-19; baseline finish none → 2005-01-19 |
