How a schedule from MS Project changed from version to version. A marks actual dates.

## Version 1 (saved 2009-06-02)

| ID | WBS | Task | Duration | Start | Finish | Total float |
| --- | --- | --- | --- | --- | --- | --- |
| 1 | 1 | **Vestuario** | 1d? | 2009-06-02 | 2009-06-02 | 0d |
| 2 | 1.1 | **Vestuario del novio** | 1d? | 2009-06-02 | 2009-06-02 | 0d |
| 3 |  | Concertar cita previa | 1d? | 2009-06-02 | 2009-06-02 | 0d |
| 4 |  | Selección de posibilidades | 1d? | 2009-06-02 | 2009-06-02 | 0d |
| 5 |  | Elección traje definitivo | 1d? | 2009-06-02 | 2009-06-02 | 0d |
| 6 |  | Selección de complementos | 1d? | 2009-06-02 | 2009-06-02 | 0d |
| 7 |  | Elección definitiva de complementos | 1d? | 2009-06-02 | 2009-06-02 | 0d |
| 8 |  | Firma de contrato modista | 0d | 2009-06-02 | 2009-06-02 | 1d |
| 9 |  | Realización de arreglos | 1d? | 2009-06-02 | 2009-06-02 | 0d |
| 10 |  | Prueba de arreglos | 1d? | 2009-06-02 | 2009-06-02 | 0d |
| 11 |  | Entrega del traje | 0d | 2009-06-02 | 2009-06-02 | 1d |
| 12 | 1.2 | **Vestuario de la novia** | 1d? | 2009-06-02 | 2009-06-02 | 0d |
| 13 |  | Concertar cita previa | 1d? | 2009-06-02 | 2009-06-02 | 0d |
| 14 |  | Selección de posibilidades | 1d? | 2009-06-02 | 2009-06-02 | 0d |
| 15 |  | Elección traje definitivo | 1d? | 2009-06-02 | 2009-06-02 | 0d |
| 16 |  | Selección de complementos | 1d? | 2009-06-02 | 2009-06-02 | 0d |
| 17 |  | Elección definitiva de complementos | 1d? | 2009-06-02 | 2009-06-02 | 0d |
| 18 |  | Firma de contrato modista | 0d | 2009-06-02 | 2009-06-02 | 1d |
| 19 |  | Realización de arreglos | 1d? | 2009-06-02 | 2009-06-02 | 0d |
| 20 |  | Prueba de arregos | 1d? | 2009-06-02 | 2009-06-02 | 0d |
| 21 |  | Entrega del traje | 0d | 2009-06-02 | 2009-06-02 | 1d |
| 22 |  | Cobro de vestuario | 1d? | 2009-06-02 | 2009-06-02 | 0d |
| 23 |  | Pago de vestuario | 1d? | 2009-06-02 | 2009-06-02 | 0d |
| 24 |  | Cierre contrato vestuario | 0d | 2009-06-02 | 2009-06-02 | 1d |
| 25 | 2 | **Anillos** | 1d? | 2009-06-02 | 2009-06-02 | 0d |
| 26 |  | Concertar cita previa | 1d? | 2009-06-02 | 2009-06-02 | 0d |
| 27 |  | Selección de posiblidades | 1d? | 2009-06-02 | 2009-06-02 | 0d |
| 28 |  | Elección modelo definitivo | 1d? | 2009-06-02 | 2009-06-02 | 0d |
| 29 |  | Firma de contrato joyería | 0d | 2009-06-02 | 2009-06-02 | 1d |
| 30 |  | Arreglos y grabados | 1d? | 2009-06-02 | 2009-06-02 | 0d |
| 31 |  | Prueba de arregos | 1d? | 2009-06-02 | 2009-06-02 | 0d |
| 32 |  | Entrega de alianzas | 0d | 2009-06-02 | 2009-06-02 | 1d |
| 33 |  | Cobro de alianzas | 1d? | 2009-06-02 | 2009-06-02 | 0d |
| 34 |  | Pago de alianzas | 1d? | 2009-06-02 | 2009-06-02 | 0d |
| 35 |  | Cierre contrato alianzas | 0d | 2009-06-02 | 2009-06-02 | 1d |
| 36 | 3 | **Peinado** | 1d? | 2009-06-02 | 2009-06-02 | 0d |
| 37 |  | Concertar cita previa | 1d? | 2009-06-02 | 2009-06-02 | 0d |
| 38 |  | Selección de posiblidades | 1d? | 2009-06-02 | 2009-06-02 | 0d |
| 39 |  | Prueba de posiblidades | 1d? | 2009-06-02 | 2009-06-02 | 0d |
| 40 |  | Selección de peinado definitivo | 1d? | 2009-06-02 | 2009-06-02 | 0d |
| 41 |  | Peinado definitivo elegido | 1d? | 2009-06-02 | 2009-06-02 | 0d |
| 42 |  | Firma de contrato peinado | 0d | 2009-06-02 | 2009-06-02 | 1d |
| 43 |  | Servicio de peluquería | 1d? | 2009-06-02 | 2009-06-02 | 0d |
| 44 |  | Cobro de peluquería | 1d? | 2009-06-02 | 2009-06-02 | 0d |
| 45 |  | Pago de peluquería | 1d? | 2009-06-02 | 2009-06-02 | 0d |
| 46 |  | Cierre contrato peluquería | 0d | 2009-06-02 | 2009-06-02 | 1d |
| 47 | 4 | **Fotografía** | 1d? | 2009-06-02 | 2009-06-02 | 0d |
| 48 |  | Concertar cita previa | 1d? | 2009-06-02 | 2009-06-02 | 0d |
| 49 |  | Selección de album | 1d? | 2009-06-02 | 2009-06-02 | 0d |
| 50 |  | Firma contrato fotógrafo | 0d | 2009-06-02 | 2009-06-02 | 1d |
| 51 |  | Realización fotos estudio | 1d? | 2009-06-02 | 2009-06-02 | 0d |
| 52 |  | Realización reportaje fotográfico | 1d? | 2009-06-02 | 2009-06-02 | 0d |
| 53 |  | Cobro servicio fotográfico | 1d? | 2009-06-02 | 2009-06-02 | 0d |
| 54 |  | Pago servicio fotográfico | 1d? | 2009-06-02 | 2009-06-02 | 0d |
| 55 |  | Entrega reportaje fotográfico | 0d | 2009-06-02 | 2009-06-02 | 1d |
| 56 |  | Cierre contrato fotógrafo | 0d | 2009-06-02 | 2009-06-02 | 1d |
| 57 | 5 | **Flores y decoración** | 1d? | 2009-06-02 | 2009-06-02 | 0d |
| 58 |  | Concertar cita previa | 1d? | 2009-06-02 | 2009-06-02 | 0d |
| 59 |  | Selección del tipo de decoración | 1d? | 2009-06-02 | 2009-06-02 | 0d |
| 60 |  | Selección tipo plantas | 1d? | 2009-06-02 | 2009-06-02 | 0d |
| 61 |  | Selección ramo novia | 1d? | 2009-06-02 | 2009-06-02 | 0d |
| 62 |  | Firma contrato floristería | 1d? | 2009-06-02 | 2009-06-02 | 0d |
| 63 |  | Instalación decoración iglesia | 1d? | 2009-06-02 | 2009-06-02 | 0d |
| 64 |  | Entrega ramo novia | 0d | 2009-06-02 | 2009-06-02 | 1d |
| 65 |  | Cierre contrato floristería | 0d | 2009-06-02 | 2009-06-02 | 1d |
| 66 | 6 | **Papelería y regalos** | 1d? | 2009-06-02 | 2009-06-02 | 0d |
| 67 | 6.1 | **Invitaciones** | 1d? | 2009-06-02 | 2009-06-02 | 0d |
| 68 |  | Elaboración lista invitados | 1d? | 2009-06-02 | 2009-06-02 | 0d |
| 69 |  | Elaboración lista bodas | 1d? | 2009-06-02 | 2009-06-02 | 0d |
| 70 |  | Concertar cita previa | 1d? | 2009-06-02 | 2009-06-02 | 0d |

| ID | WBS | Task | Duration | Start | Finish | Total float |
| --- | --- | --- | --- | --- | --- | --- |
| 71 |  | Selección tipo invitación | 1d? | 2009-06-02 | 2009-06-02 | 0d |
| 72 |  | Selección texto invitación | 1d? | 2009-06-02 | 2009-06-02 | 0d |
| 73 |  | Firma contrato papelería | 0d | 2009-06-02 | 2009-06-02 | 1d |
| 74 |  | Envío invitaciones | 1d? | 2009-06-02 | 2009-06-02 | 0d |
| 75 |  | Cierre contrato papelería | 0d | 2009-06-02 | 2009-06-02 | 1d |
| 76 | 6.2 | **Regalo madrina** | 1d? | 2009-06-02 | 2009-06-02 | 0d |
| 77 |  | Concertar cita previa | 1d? | 2009-06-02 | 2009-06-02 | 0d |
| 78 |  | Selección regalo | 1d? | 2009-06-02 | 2009-06-02 | 0d |
| 79 |  | Firma contrato regalos madrina | 0d | 2009-06-02 | 2009-06-02 | 1d |
| 80 |  | Entrega regalos madrina | 1d? | 2009-06-02 | 2009-06-02 | 0d |
| 81 |  | Cierre contrato regalo madrina | 0d | 2009-06-02 | 2009-06-02 | 1d |
| 82 | 6.3 | **Regalo padrino** | 1d? | 2009-06-02 | 2009-06-02 | 0d |
| 83 |  | Concertar cita previa | 1d? | 2009-06-02 | 2009-06-02 | 0d |
| 84 |  | Selección regalo | 1d? | 2009-06-02 | 2009-06-02 | 0d |
| 85 |  | Firma contrato regalo padrino | 0d | 2009-06-02 | 2009-06-02 | 1d |
| 86 |  | Entrega regalos padrino | 1d? | 2009-06-02 | 2009-06-02 | 0d |
| 87 |  | Cierre contrato regalo padrino | 0d | 2009-06-02 | 2009-06-02 | 1d |
| 88 |  | Orquesta y música | 1d? | 2009-06-02 | 2009-06-02 | 0d |
| 89 |  | Transporte | 1d? | 2009-06-02 | 2009-06-02 | 0d |
| 90 |  | Trámites administrativos | 1d? | 2009-06-02 | 2009-06-02 | 0d |
| 91 |  | Noche de bodas | 1d? | 2009-06-02 | 2009-06-02 | 0d |
| 92 |  | Organización banquete | 1d? | 2009-06-02 | 2009-06-02 | 0d |

## Version 2 (saved 2009-06-03)

Last finish 2009-06-02 → 2009-06-17 (+15d).

Added:

| ID | Task | Duration | Start | Finish | Predecessors |
| --- | --- | --- | --- | --- | --- |
| 40 | Servicio peluquería fotos estudio | 2h | 2009-06-02 18:00 | 2009-06-03 10:00 | 39 |
| 61 | Pago servicio floristería | 0d | 2009-06-02 19:00 | 2009-06-02 19:00 | 60 |
| 84 | **Música ceremonia** | 1.25d | 2009-06-02 09:00 | 2009-06-03 11:00 |  |
| 85 | Concertar cita previa | 1h | 2009-06-02 09:00 | 2009-06-02 10:00 |  |
| 86 | Selección repertorio | 1d | 2009-06-02 10:00 | 2009-06-03 10:00 | 85 |
| 87 | Firma contrato música ceremonia | 0d | 2009-06-03 10:00 | 2009-06-03 10:00 | 86 |
| 88 | Actuación día boda | 1h | 2009-06-03 10:00 | 2009-06-03 11:00 | 87 |
| 89 | Pago y Cierre contrato grupo | 0d | 2009-06-03 11:00 | 2009-06-03 11:00 | 88 |
| 90 | **Música banquete** | 2.62d | 2009-06-02 09:00 | 2009-06-04 16:00 |  |
| 91 | Concertar cita previa | 1h | 2009-06-02 09:00 | 2009-06-02 10:00 |  |
| 92 | Selección tipo música | 2d | 2009-06-02 10:00 | 2009-06-04 10:00 | 91 |
| 93 | Firma contrato música banquete | 0d | 2009-06-04 10:00 | 2009-06-04 10:00 | 92 |
| 94 | Actuación día boda | 4h | 2009-06-04 10:00 | 2009-06-04 16:00 | 93 |
| 95 | Pago y Cierre contrato música | 0d | 2009-06-04 16:00 | 2009-06-04 16:00 | 94 |
| 97 | **Transporte novios** | 0.25d | 2009-06-02 09:00 | 2009-06-02 11:00 |  |
| 98 | Concertar cita previa | 1h | 2009-06-02 09:00 | 2009-06-02 10:00 |  |
| 99 | Selección del tipo de transporte | 2h | 2009-06-02 09:00 | 2009-06-02 11:00 |  |
| 100 | Firma contrato | 0d | 2009-06-02 09:00 | 2009-06-02 09:00 |  |
| 101 | Desplazamiento de los novios iglesia | 1h | 2009-06-02 09:00 | 2009-06-02 10:00 |  |
| 102 | Desplazamiento novios hotel noche bodas | 2h | 2009-06-02 09:00 | 2009-06-02 11:00 |  |
| 103 | Cierre del contrato | 0d | 2009-06-02 09:00 | 2009-06-02 09:00 |  |
| 104 | **Transporte invitados** | 0.75d | 2009-06-02 09:00 | 2009-06-02 17:00 |  |
| 105 | Concertar cita previa | 1h | 2009-06-02 09:00 | 2009-06-02 10:00 |  |
| 106 | Selección del tipo de vehículo | 1h | 2009-06-02 09:00 | 2009-06-02 10:00 |  |
| 107 | Determinación servicios a prestar | 1h | 2009-06-02 09:00 | 2009-06-02 10:00 |  |
| 108 | Firma del contrato | 0d | 2009-06-02 09:00 | 2009-06-02 09:00 |  |
| 109 | Servicio de transporte | 6h | 2009-06-02 09:00 | 2009-06-02 17:00 |  |
| 110 | Cierre de contrato | 0d | 2009-06-02 09:00 | 2009-06-02 09:00 |  |
| 112 | **Iglesia** | 10.12d | 2009-06-02 09:00 | 2009-06-16 10:00 |  |
| 113 | Concertar cita previa párroco | 1h | 2009-06-02 09:00 | 2009-06-02 10:00 |  |
| 114 | Reserva fecha boda | 1h | 2009-06-02 10:00 | 2009-06-02 11:00 | 113 |
| 115 | Selección fechas cursos prematrimoniales | 1h | 2009-06-02 11:00 | 2009-06-02 12:00 | 114 |
| 116 | Obtención certificados bautismo | 10d | 2009-06-02 10:00 | 2009-06-16 10:00 | 113 |
| 117 | Realización cursos prematrimoniales | 5d | 2009-06-02 12:00 | 2009-06-09 12:00 | 115 |
| 118 | Entrega certificados | 1h | 2009-06-09 12:00 | 2009-06-09 13:00 | 117 |
| 119 | Limpieza iglesia | 2h | 2009-06-02 11:00 | 2009-06-02 13:00 | 114 |
| 120 | Celebración ceremonia | 2h | 2009-06-02 15:00 | 2009-06-02 17:00 | 119 |
| 121 | Recogida y limpieza iglesia | 2h | 2009-06-02 17:00 | 2009-06-02 19:00 | 120 |
| 122 | Iglesia recogida | 0d | 2009-06-02 19:00 | 2009-06-02 19:00 | 121 |
| 123 | **Recinto banquete** | 4.62d | 2009-06-02 09:00 | 2009-06-08 16:00 |  |
| 124 | Cita previa ayuntamiento | 1h | 2009-06-02 09:00 | 2009-06-02 10:00 |  |
| 125 | Obtención permiso celebración evento | 2d | 2009-06-02 10:00 | 2009-06-04 10:00 | 124 |
| 126 | Firma contrato uso recinto | 0d | 2009-06-04 10:00 | 2009-06-04 10:00 | 125 |
| 127 | Cita previa proveedor carpa | 1h | 2009-06-04 10:00 | 2009-06-04 11:00 | 126 |
| 128 | Selección carpa | 1h | 2009-06-04 11:00 | 2009-06-04 12:00 | 127 |
| 129 | Firma contrato proveedor carpa | 0d | 2009-06-04 12:00 | 2009-06-04 12:00 | 128 |
| 130 | Instalación carpa | 5h | 2009-06-04 12:00 | 2009-06-04 19:00 | 129 |
| 131 | Celebración evento | 8h | 2009-06-05 09:00 | 2009-06-05 19:00 | 130 |
| 132 | Retirada carpa | 5h | 2009-06-08 09:00 | 2009-06-08 16:00 | 131 |
| 133 | Cierre contrato ayuntamiento | 0d | 2009-06-08 16:00 | 2009-06-08 16:00 | 132 |
| 134 | Cierre contrato proveedor carpa | 0d | 2009-06-08 16:00 | 2009-06-08 16:00 | 133 |
| 136 | Selección destino noche bodas | 1h | 2009-06-02 09:00 | 2009-06-02 10:00 |  |
| 137 | Selección hotel | 1h | 2009-06-02 10:00 | 2009-06-02 11:00 | 136 |
| 138 | Reserva hotel | 1h | 2009-06-02 11:00 | 2009-06-02 12:00 | 137 |
| 139 | Firma contrato hotel | 0d | 2009-06-02 12:00 | 2009-06-02 12:00 | 138 |
| 140 | Noche de bodas hotel | 1d? | 2009-06-02 12:00 | 2009-06-03 12:00 | 139 |
| 141 | Cierre contrato hotel | 0d | 2009-06-03 12:00 | 2009-06-03 12:00 | 140 |
| 143 | Concerta cita previa restaurador | 1d? | 2009-06-02 09:00 | 2009-06-02 19:00 |  |
| 144 | Selección menú boda | 1d? | 2009-06-02 09:00 | 2009-06-02 19:00 |  |
| 145 | Prueba menú boda | 1d? | 2009-06-02 09:00 | 2009-06-02 19:00 |  |
| 146 | Firma contrato restaurante | 0d | 2009-06-02 09:00 | 2009-06-02 09:00 |  |
| 147 | Selección servicio catering | 1d? | 2009-06-02 09:00 | 2009-06-02 19:00 |  |
| 148 | Firma contrato catering | 0d | 2009-06-02 09:00 | 2009-06-02 09:00 |  |
| 149 | Servicio restaurante boda | 1d? | 2009-06-02 09:00 | 2009-06-02 19:00 |  |
| 150 | Servicio catering boda | 1d? | 2009-06-02 09:00 | 2009-06-02 19:00 |  |
| 151 | Cierre contrato restaurante | 0d | 2009-06-02 09:00 | 2009-06-02 09:00 |  |
| 152 | Cierre contrato catering | 0d | 2009-06-02 09:00 | 2009-06-02 09:00 |  |

Removed: 22 Cobro de vestuario; 33 Cobro de alianzas; 41 Peinado definitivo elegido; 44 Cobro de peluquería; 53 Cobro servicio fotográfico; 81 Cierre contrato regalo madrina; 87 Cierre contrato regalo padrino

Changed:

| ID | Task | Start | Finish | Duration | Total float | Predecessors |
| --- | --- | --- | --- | --- | --- | --- |
| 1 | **Vestuario** | 2009-06-02 → 2009-06-02 09:00 | 2009-06-02 → 2009-06-17 12:00 (+15d) | 1d? → 11.38d |  |  |
| 2 | **Vestuario del novio** | 2009-06-02 → 2009-06-02 09:00 | 2009-06-02 → 2009-06-12 11:00 (+10d) | 1d? → 8.25d | 0d → 3.12d |  |
| 3 | Concertar cita previa | 2009-06-02 → 2009-06-02 09:00 | 2009-06-02 → 2009-06-02 10:00 | 1d? → 1h | 0d → 3.12d |  |
| 4 | Selección de posibilidades | 2009-06-02 → 2009-06-02 10:00 | 2009-06-02 → 2009-06-02 13:00 | 1d? → 3h | 0d → 3.12d | none → 3 |
| 5 | Elección traje definitivo | 2009-06-02 → 2009-06-02 15:00 | 2009-06-02 → 2009-06-02 18:00 | 1d? → 3h | 0d → 3.12d | none → 4 |
| 6 | Selección de complementos | 2009-06-02 → 2009-06-02 18:00 | 2009-06-02 → 2009-06-02 19:00 | 1d? → 1h | 0d → 3.12d | none → 5 |
| 7 | Elección definitiva de complementos | 2009-06-02 → 2009-06-03 09:00 (+1d) | 2009-06-02 → 2009-06-03 10:00 (+1d) | 1d? → 1h | 0d → 3.12d | none → 6 |
| 8 | Firma de contrato modista | 2009-06-02 → 2009-06-03 10:00 (+1d) | 2009-06-02 → 2009-06-03 10:00 (+1d) |  | 1d → 3.12d | none → 7 |
| 9 | Realización de arreglos | 2009-06-02 → 2009-06-03 10:00 (+1d) | 2009-06-02 → 2009-06-12 10:00 (+10d) | 1d? → 7d | 0d → 3.12d | none → 8 |
| 10 | Prueba de arreglos | 2009-06-02 → 2009-06-12 10:00 (+10d) | 2009-06-02 → 2009-06-12 11:00 (+10d) | 1d? → 1h | 0d → 3.12d | none → 9 |
| 11 | Entrega del traje | 2009-06-02 → 2009-06-12 11:00 (+10d) | 2009-06-02 → 2009-06-12 11:00 (+10d) |  | 1d → 3.12d | none → 10 |
| 12 | **Vestuario de la novia** | 2009-06-02 → 2009-06-02 09:00 | 2009-06-02 → 2009-06-17 12:00 (+15d) | 1d? → 11.38d |  |  |
| 13 | Concertar cita previa | 2009-06-02 → 2009-06-02 09:00 | 2009-06-02 → 2009-06-02 10:00 | 1d? → 1h |  |  |
| 14 | Selección de posibilidades | 2009-06-02 → 2009-06-02 10:00 | 2009-06-02 → 2009-06-02 16:00 | 1d? → 4h |  | none → 13 |
| 15 | Elección traje definitivo | 2009-06-02 → 2009-06-02 16:00 | 2009-06-02 → 2009-06-02 19:00 | 1d? → 3h |  | none → 14 |
| 16 | Selección de complementos | 2009-06-02 → 2009-06-03 09:00 (+1d) | 2009-06-02 → 2009-06-03 10:00 (+1d) | 1d? → 1h |  | none → 15 |
| 17 | Elección definitiva de complementos | 2009-06-02 → 2009-06-03 10:00 (+1d) | 2009-06-02 → 2009-06-03 11:00 (+1d) | 1d? → 1h |  | none → 16 |
| 18 | Firma de contrato modista | 2009-06-02 → 2009-06-03 11:00 (+1d) | 2009-06-02 → 2009-06-03 11:00 (+1d) |  | 1d → 0d | none → 17 |
| 19 | Realización de arreglos | 2009-06-02 → 2009-06-03 11:00 (+1d) | 2009-06-02 → 2009-06-17 11:00 (+15d) | 1d? → 10d |  | none → 18 |
| 20 | Prueba de arregos | 2009-06-02 → 2009-06-17 11:00 (+15d) | 2009-06-02 → 2009-06-17 12:00 (+15d) | 1d? → 1h |  | none → 19 |
| 21 | Entrega del traje | 2009-06-02 → 2009-06-17 12:00 (+15d) | 2009-06-02 → 2009-06-17 12:00 (+15d) |  | 1d → 0d | none → 20 |
| 22 | Pago de vestuario | 2009-06-02 → 2009-06-17 12:00 (+15d) | 2009-06-02 → 2009-06-17 12:00 (+15d) | 1d? → 0d | 0d → 0.25d | none → 11, 21 |
| 23 | Cierre contrato vestuario | 2009-06-02 → 2009-06-17 12:00 (+15d) | 2009-06-02 → 2009-06-17 12:00 (+15d) |  | 1d → 0.25d | none → 22 |
| 24 | **Anillos** | 2009-06-02 → 2009-06-02 09:00 | 2009-06-02 → 2009-06-11 16:00 (+9d) | 1d? → 7.62d | 0d → 4d |  |
| 25 | Concertar cita previa | 2009-06-02 → 2009-06-02 09:00 | 2009-06-02 → 2009-06-02 10:00 | 1d? → 1h | 0d → 4d |  |
| 26 | Selección de posiblidades | 2009-06-02 → 2009-06-02 10:00 | 2009-06-02 → 2009-06-02 12:00 | 1d? → 2h | 0d → 4d | none → 25 |
| 27 | Elección modelo definitivo | 2009-06-02 → 2009-06-02 12:00 | 2009-06-02 → 2009-06-02 13:00 | 1d? → 1h | 0d → 4d | none → 26 |
| 28 | Firma de contrato joyería | 2009-06-02 → 2009-06-02 13:00 | 2009-06-02 → 2009-06-02 13:00 |  | 1d → 4d | none → 27 |
| 29 | Arreglos y grabados | 2009-06-02 → 2009-06-02 15:00 | 2009-06-02 → 2009-06-11 13:00 (+9d) | 1d? → 7d | 0d → 4d | none → 28 |
| 30 | Prueba de arregos | 2009-06-02 → 2009-06-11 15:00 (+9d) | 2009-06-02 → 2009-06-11 16:00 (+9d) | 1d? → 1h | 0d → 4d | none → 29 |
| 31 | Entrega de alianzas | 2009-06-02 → 2009-06-11 16:00 (+9d) | 2009-06-02 → 2009-06-11 16:00 (+9d) |  | 1d → 4d | none → 30 |
| 32 | Pago de alianzas | 2009-06-02 → 2009-06-11 16:00 (+9d) | 2009-06-02 → 2009-06-11 16:00 (+9d) | 1d? → 0d | 0d → 4d | none → 31 |
| 33 | Cierre contrato alianzas | 2009-06-02 → 2009-06-11 16:00 (+9d) | 2009-06-02 → 2009-06-11 16:00 (+9d) |  | 1d → 4d | none → 32 |
| 34 | **Peinado** | 2009-06-02 → 2009-06-02 09:00 | 2009-06-02 → 2009-06-03 12:00 (+1d) | 1d? → 1.38d | 0d → 10.25d |  |
| 35 | Concertar cita previa | 2009-06-02 → 2009-06-02 09:00 | 2009-06-02 → 2009-06-02 10:00 | 1d? → 1h | 0d → 10.25d |  |
| 36 | Selección de posiblidades | 2009-06-02 → 2009-06-02 10:00 | 2009-06-02 → 2009-06-02 11:00 | 1d? → 1h | 0d → 10.25d | none → 35 |
| 37 | Prueba de posiblidades | 2009-06-02 → 2009-06-02 11:00 | 2009-06-02 → 2009-06-02 17:00 | 1d? → 4h | 0d → 10.25d | none → 36 |
| 38 | Selección de peinado definitivo | 2009-06-02 → 2009-06-02 17:00 | 2009-06-02 → 2009-06-02 18:00 | 1d? → 1h | 0d → 10.25d | none → 37 |
| 39 | Firma de contrato peinado | 2009-06-02 → 2009-06-02 18:00 | 2009-06-02 → 2009-06-02 18:00 |  | 1d → 10.25d | none → 38 |
| 41 | Servicio de peluquería | 2009-06-02 → 2009-06-03 10:00 (+1d) | 2009-06-02 → 2009-06-03 12:00 (+1d) | 1d? → 2h | 0d → 10.25d | none → 40 |
| 42 | Pago de peluquería | 2009-06-02 → 2009-06-03 12:00 (+1d) | 2009-06-02 → 2009-06-03 12:00 (+1d) | 1d? → 0d | 0d → 10.25d | none → 41 |
| 43 | Cierre contrato peluquería | 2009-06-02 → 2009-06-03 12:00 (+1d) | 2009-06-02 → 2009-06-03 12:00 (+1d) |  | 1d → 10.25d | none → 42 |
| 44 | **Fotografía** | 2009-06-02 → 2009-06-02 09:00 | 2009-06-02 → 2009-06-17 16:00 (+15d) | 1d? → 11.62d |  |  |
| 45 | Concertar cita previa | 2009-06-02 → 2009-06-02 09:00 | 2009-06-02 → 2009-06-02 10:00 | 1d? → 1h | 0d → 11.12d |  |
| 46 | Selección de album | 2009-06-02 → 2009-06-02 10:00 | 2009-06-02 → 2009-06-02 11:00 | 1d? → 1h | 0d → 11.12d | none → 45 |
| 47 | Firma contrato fotógrafo | 2009-06-02 → 2009-06-02 11:00 | 2009-06-02 → 2009-06-02 11:00 |  | 1d → 11.12d | none → 46 |
| 48 | Realización fotos estudio | 2009-06-02 → 2009-06-17 12:00 (+15d) | 2009-06-02 → 2009-06-17 16:00 (+15d) | 1d? → 2h |  | none → 47, 21, 11, 40 |
| 49 | Realización reportaje fotográfico | 2009-06-02 → 2009-06-02 09:00 | 2009-06-02 → 2009-06-02 13:00 | 1d? → 4h | 0d → 11.12d |  |
| 50 | Pago servicio fotográfico | 2009-06-02 → 2009-06-17 16:00 (+15d) | 2009-06-02 → 2009-06-17 16:00 (+15d) | 1d? → 0d |  | none → 48, 49 |
| 51 | Entrega reportaje fotográfico | 2009-06-02 → 2009-06-17 16:00 (+15d) | 2009-06-02 → 2009-06-17 16:00 (+15d) |  | 1d → 0d | none → 50 |
| 52 | Cierre contrato fotógrafo | 2009-06-02 → 2009-06-17 16:00 (+15d) | 2009-06-02 → 2009-06-17 16:00 (+15d) |  | 1d → 0d | none → 51 |
| 53 | **Flores y decoración** | 2009-06-02 → 2009-06-02 09:00 | 2009-06-02 → 2009-06-02 19:00 | 1d? → 1d | 0d → 10.62d |  |
| 54 | Concertar cita previa | 2009-06-02 → 2009-06-02 09:00 | 2009-06-02 → 2009-06-02 10:00 | 1d? → 1h | 0d → 10.62d |  |
| 55 | Selección del tipo de decoración | 2009-06-02 → 2009-06-02 10:00 | 2009-06-02 → 2009-06-02 12:00 | 1d? → 2h | 0d → 10.62d | none → 54 |
| 56 | Selección tipo plantas | 2009-06-02 → 2009-06-02 12:00 | 2009-06-02 → 2009-06-02 13:00 | 1d? → 1h | 0d → 10.62d | none → 55 |
| 57 | Selección ramo novia | 2009-06-02 → 2009-06-02 15:00 | 2009-06-02 → 2009-06-02 16:00 | 1d? → 1h | 0d → 10.62d | none → 56 |
| 58 | Firma contrato floristería | 2009-06-02 → 2009-06-02 16:00 | 2009-06-02 → 2009-06-02 16:00 | 1d? → 0d | 0d → 10.62d | none → 57 |
| 59 | Instalación decoración iglesia | 2009-06-02 → 2009-06-02 16:00 | 2009-06-02 → 2009-06-02 19:00 | 1d? → 3h | 0d → 10.62d | none → 58, 119 |
| 60 | Entrega ramo novia | 2009-06-02 → 2009-06-02 19:00 | 2009-06-02 → 2009-06-02 19:00 |  | 1d → 10.62d | none → 59 |
| 62 | Cierre contrato floristería | 2009-06-02 → 2009-06-02 19:00 | 2009-06-02 → 2009-06-02 19:00 |  | 1d → 10.62d | none → 61 |
| 63 | **Papelería y regalos** | 2009-06-02 → 2009-06-02 09:00 | 2009-06-02 → 2009-06-17 13:00 (+15d) | 1d? → 11.5d | 0d → 0.12d |  |
| 64 | **Invitaciones** | 2009-06-02 → 2009-06-02 09:00 | 2009-06-02 → 2009-06-17 13:00 (+15d) | 1d? → 11.5d | 0d → 0.12d |  |
| 65 | Elaboración lista invitados | 2009-06-02 → 2009-06-02 09:00 | 2009-06-02 → 2009-06-03 19:00 (+1d) | 1d? → 2d | 0d → 0.12d |  |
| 66 | Elaboración lista bodas | 2009-06-02 → 2009-06-04 09:00 (+2d) | 2009-06-02 → 2009-06-05 19:00 (+3d) | 1d? → 2d | 0d → 0.12d | none → 65 |
| 67 | Concertar cita previa | 2009-06-02 → 2009-06-08 09:00 (+6d) | 2009-06-02 → 2009-06-08 10:00 (+6d) | 1d? → 1h | 0d → 0.12d | none → 66 |
| 68 | Selección tipo invitación | 2009-06-02 → 2009-06-08 10:00 (+6d) | 2009-06-02 → 2009-06-08 12:00 (+6d) | 1d? → 2h | 0d → 0.12d | none → 67 |
| 69 | Selección texto invitación | 2009-06-02 → 2009-06-08 12:00 (+6d) | 2009-06-02 → 2009-06-08 13:00 (+6d) | 1d? → 1h | 0d → 0.12d | none → 68 |
| 70 | Firma contrato papelería | 2009-06-02 → 2009-06-08 13:00 (+6d) | 2009-06-02 → 2009-06-08 13:00 (+6d) |  | 1d → 0.12d | none → 69 |
| 71 | Envío invitaciones | 2009-06-02 → 2009-06-08 15:00 (+6d) | 2009-06-02 → 2009-06-17 13:00 (+15d) | 1d? → 7d | 0d → 0.12d | none → 70 |
| 72 | **Regalo madrina** | 2009-06-02 → 2009-06-02 09:00 | 2009-06-02 → 2009-06-11 11:00 (+9d) | 1d? → 7.25d | 0d → 4.38d |  |

| ID | Task | Start | Finish | Duration | Total float | Predecessors | Other |
| --- | --- | --- | --- | --- | --- | --- | --- |
| 73 | Concertar cita previa | 2009-06-02 → 2009-06-02 09:00 | 2009-06-02 → 2009-06-02 10:00 | 1d? → 1h | 0d → 4.38d |  |  |
| 74 | Selección regalo | 2009-06-02 → 2009-06-02 10:00 | 2009-06-02 → 2009-06-02 11:00 | 1d? → 1h | 0d → 4.38d | none → 73 |  |
| 75 | Firma contrato regalos madrina | 2009-06-02 → 2009-06-02 11:00 | 2009-06-02 → 2009-06-02 11:00 |  | 1d → 4.38d | none → 74 |  |
| 76 | Entrega regalos madrina | 2009-06-02 → 2009-06-02 11:00 | 2009-06-02 → 2009-06-11 11:00 (+9d) | 1d? → 7d | 0d → 4.38d | none → 75 |  |
| 77 | **Regalo padrino** | 2009-06-02 → 2009-06-02 09:00 | 2009-06-02 → 2009-06-11 11:00 (+9d) | 1d? → 7.25d | 0d → 4.38d |  |  |
| 78 | Concertar cita previa | 2009-06-02 → 2009-06-02 09:00 | 2009-06-02 → 2009-06-02 10:00 | 1d? → 1h | 0d → 4.38d |  |  |
| 79 | Selección regalo | 2009-06-02 → 2009-06-02 10:00 | 2009-06-02 → 2009-06-02 11:00 | 1d? → 1h | 0d → 4.38d | none → 78 |  |
| 80 | Firma contrato regalo padrino | 2009-06-02 → 2009-06-02 11:00 | 2009-06-02 → 2009-06-02 11:00 |  | 1d → 4.38d | none → 79 |  |
| 81 | Entrega regalos padrino | 2009-06-02 → 2009-06-02 11:00 | 2009-06-02 → 2009-06-11 11:00 (+9d) | 1d? → 7d | 0d → 4.38d | none → 80 |  |
| 82 | Pago y Cierre contrato papelería y regalos | 2009-06-02 → 2009-06-17 13:00 (+15d) | 2009-06-02 → 2009-06-17 13:00 (+15d) |  | 1d → 0.12d | none → 71, 76, 81 | was named Cierre contrato papelería |
| 83 | **Orquesta y música** | 2009-06-02 → 2009-06-02 09:00 | 2009-06-02 → 2009-06-04 16:00 (+2d) | 1d? → 2.62d | 0d → 9d |  |  |
| 96 | **Transporte** | 2009-06-02 → 2009-06-02 09:00 | 2009-06-02 → 2009-06-02 17:00 | 1d? → 0.75d | 0d → 10.88d |  |  |
| 111 | **Trámites administrativos** | 2009-06-02 → 2009-06-02 09:00 | 2009-06-02 → 2009-06-16 10:00 (+14d) | 1d? → 10.12d | 0d → 1.5d |  |  |
| 135 | **Noche de bodas** | 2009-06-02 → 2009-06-02 09:00 | 2009-06-02 → 2009-06-03 12:00 (+1d) | 1d? → 1.38d? | 0d → 10.25d |  |  |
| 142 | **Organización banquete** | 2009-06-02 → 2009-06-02 09:00 | 2009-06-02 → 2009-06-02 19:00 |  | 0d → 10.62d |  |  |

## Version 3 (saved 2009-06-04)

Last finish 2009-06-17 → 2009-08-17 (+61d).

Removed: 23 Cierre contrato vestuario; 32 Pago de alianzas; 42 Pago de peluquería; 50 Pago servicio fotográfico; 61 Pago servicio floristería

Changed:

| ID | Task | Start | Finish | Duration | Total float | Predecessors | Other |
| --- | --- | --- | --- | --- | --- | --- | --- |
| 1 | **Vestuario** |  | 2009-06-17 12:00 → 2009-07-17 09:00 (+30d) | 11.38d → 33d | 0d → 22.12d |  |  |
| 22 | Pago y cierre de vestuario | 2009-06-17 12:00 → 2009-07-17 09:00 (+30d) | 2009-06-17 12:00 → 2009-07-17 09:00 (+30d) |  | 0.25d → 22.12d |  | was named Pago de vestuario; constraint none → start no earlier than 2009-07-17 09:00 |
| 23 | **Anillos** |  | 2009-06-11 16:00 → 2009-07-17 09:00 (+36d) | 7.62d → 33d | 4d → 22.12d |  |  |
| 31 | Pago y Cierre contrato alianzas | 2009-06-11 16:00 → 2009-07-17 09:00 (+36d) | 2009-06-11 16:00 → 2009-07-17 09:00 (+36d) |  | 4d → 22.12d | Pago de alianzas → 30 | was named Cierre contrato alianzas; constraint none → start no earlier than 2009-07-17 09:00 |
| 32 | **Peinado** |  | 2009-06-03 12:00 → 2009-07-25 11:00 (+52d) | 1.38d → 39.25d | 10.25d → 15.88d |  |  |
| 39 | Servicio de peluquería | 2009-06-03 10:00 → 2009-07-25 09:00 (+52d) | 2009-06-03 12:00 → 2009-07-25 11:00 (+52d) |  | 10.25d → 15.88d |  | constraint none → start no earlier than 2009-07-25 09:00 |
| 40 | Pago y Cierre contrato peluquería | 2009-06-03 12:00 → 2009-07-25 11:00 (+52d) | 2009-06-03 12:00 → 2009-07-25 11:00 (+52d) |  | 10.25d → 15.88d | Pago de peluquería → 39 | was named Cierre contrato peluquería |
| 41 | **Fotografía** |  | 2009-06-17 16:00 → 2009-08-17 10:00 (+61d) | 11.62d → 55.12d |  |  |  |
| 46 | Realización reportaje fotográfico | 2009-06-02 09:00 → 2009-07-25 09:00 (+53d) | 2009-06-02 13:00 → 2009-07-25 19:00 (+53d) | 4h → 8h | 11.12d → 15d | none → 44 | constraint none → start no earlier than 2009-07-25 09:00 |
| 47 | Entrega reportaje fotográfico | 2009-06-17 16:00 → 2009-08-17 09:00 (+61d) | 2009-06-17 16:00 → 2009-08-17 10:00 (+61d) | 0d → 1h |  | Pago servicio fotográfico → 46, 45 | constraint none → start no earlier than 2009-08-15 09:00 |
| 48 | Pago y Cierre contrato fotógrafo | 2009-06-17 16:00 → 2009-08-17 10:00 (+61d) | 2009-06-17 16:00 → 2009-08-17 10:00 (+61d) |  |  |  | was named Cierre contrato fotógrafo |
| 49 | **Flores y decoración** |  | 2009-06-02 19:00 → 2009-07-28 09:00 (+56d) | 1d → 41d | 10.62d → 14.12d |  |  |
| 55 | Instalación decoración iglesia | 2009-06-02 16:00 → 2009-07-25 09:00 (+53d) | 2009-06-02 19:00 → 2009-07-25 19:00 (+53d) | 3h → 8h | 10.62d → 15.12d |  | constraint none → start no earlier than 2009-07-25 09:00 |
| 56 | Entrega ramo novia | 2009-06-02 19:00 → 2009-07-25 09:00 (+53d) | 2009-06-02 19:00 → 2009-07-25 09:00 (+53d) |  | 10.62d → 16.12d | 55 → 54 | constraint none → start no earlier than 2009-07-25 09:00 |
| 57 | Pago y Cierre contrato floristería | 2009-06-02 19:00 → 2009-07-28 09:00 (+56d) | 2009-06-02 19:00 → 2009-07-28 09:00 (+56d) |  | 10.62d → 14.12d | Pago servicio floristería → 56, 55 | was named Cierre contrato floristería; constraint none → start no earlier than 2009-07-28 09:00 |
| 58 | **Papelería y regalos** |  | 2009-06-17 13:00 → 2009-07-28 09:00 (+41d) | 11.5d → 41d | 0.12d → 2.5d |  |  |
| 77 | Pago y Cierre contrato papelería y regalos | 2009-06-17 13:00 → 2009-07-28 09:00 (+41d) | 2009-06-17 13:00 → 2009-07-28 09:00 (+41d) |  | 0.12d → 14.12d |  | constraint none → start no earlier than 2009-07-28 09:00 |
| 78 | **Orquesta y música** |  | 2009-06-04 16:00 → 2009-07-31 09:00 (+57d) | 2.62d → 44d | 9d → 11.12d |  |  |
| 79 | **Música ceremonia** |  | 2009-06-03 11:00 → 2009-07-28 09:00 (+55d) | 1.25d → 41d | 10.38d → 14.12d |  |  |
| 83 | Actuación día boda | 2009-06-03 10:00 → 2009-07-25 09:00 (+52d) | 2009-06-03 11:00 → 2009-07-25 19:00 (+52d) | 1h → 8h | 10.38d → 15.12d |  | constraint none → start no earlier than 2009-07-25 09:00 |
| 84 | Pago y Cierre contrato grupo | 2009-06-03 11:00 → 2009-07-28 09:00 (+55d) | 2009-06-03 11:00 → 2009-07-28 09:00 (+55d) |  | 10.38d → 14.12d |  | constraint none → start no earlier than 2009-07-28 09:00 |
| 85 | **Música banquete** |  | 2009-06-04 16:00 → 2009-07-31 09:00 (+57d) | 2.62d → 44d | 9d → 11.12d |  |  |
| 89 | Actuación día boda | 2009-06-04 10:00 → 2009-07-25 09:00 (+51d) | 2009-06-04 16:00 → 2009-07-25 19:00 (+51d) | 4h → 8h | 9d → 15.12d |  | constraint none → start no earlier than 2009-07-25 09:00 |
| 90 | Pago y Cierre contrato música | 2009-06-04 16:00 → 2009-07-31 09:00 (+57d) | 2009-06-04 16:00 → 2009-07-31 09:00 (+57d) |  | 9d → 11.12d |  | constraint none → start no earlier than 2009-07-31 09:00 |
| 91 | **Transporte** |  | 2009-06-02 17:00 → 2009-07-31 09:00 (+59d) | 0.75d → 44d | 10.88d → 11.12d |  |  |
| 92 | **Transporte novios** |  | 2009-06-02 11:00 → 2009-07-31 09:00 (+59d) | 0.25d → 44d | 11.38d → 11.12d |  |  |
| 94 | Selección del tipo de transporte | 2009-06-02 09:00 → 2009-06-02 10:00 | 2009-06-02 11:00 → 2009-06-02 12:00 |  | 11.38d → 53.5d | none → 93 |  |
| 95 | Firma contrato | 2009-06-02 09:00 → 2009-06-02 12:00 | 2009-06-02 09:00 → 2009-06-02 12:00 |  | 11.62d → 53.5d | none → 94 |  |
| 96 | Desplazamiento de los novios iglesia | 2009-06-02 09:00 → 2009-07-25 09:00 (+53d) | 2009-06-02 10:00 → 2009-07-25 19:00 (+53d) | 1h → 8h | 11.5d → 14.88d | none → 95 | constraint none → start no earlier than 2009-07-25 09:00 |
| 97 | Desplazamiento novios hotel noche bodas | 2009-06-02 09:00 → 2009-07-27 09:00 (+55d) | 2009-06-02 11:00 → 2009-07-27 11:00 (+55d) |  | 11.38d → 14.88d | none → 96 |  |
| 98 | Pago y Cierre del contrato | 2009-06-02 09:00 → 2009-07-31 09:00 (+59d) | 2009-06-02 09:00 → 2009-07-31 09:00 (+59d) |  | 11.62d → 11.12d | none → 97 | was named Cierre del contrato; constraint none → start no earlier than 2009-07-31 09:00 |
| 99 | **Transporte invitados** |  | 2009-06-02 17:00 → 2009-07-31 09:00 (+59d) | 0.75d → 44d | 10.88d → 11.12d |  |  |
| 101 | Selección del tipo de vehículo | 2009-06-02 09:00 → 2009-06-02 10:00 | 2009-06-02 10:00 → 2009-06-02 11:00 |  | 11.5d → 53.75d | none → 100 |  |
| 102 | Determinación servicios a prestar | 2009-06-02 09:00 → 2009-06-02 11:00 | 2009-06-02 10:00 → 2009-06-02 12:00 |  | 11.5d → 53.75d | none → 101 |  |
| 103 | Firma del contrato | 2009-06-02 09:00 → 2009-06-02 12:00 | 2009-06-02 09:00 → 2009-06-02 12:00 |  | 11.62d → 53.75d | none → 102 |  |
| 104 | Servicio de transporte | 2009-06-02 09:00 → 2009-07-25 09:00 (+53d) | 2009-06-02 17:00 → 2009-07-25 19:00 (+53d) | 6h → 8h | 10.88d → 15.12d | none → 103 | constraint none → start no earlier than 2009-07-25 09:00 |
| 105 | Pago y Cierre de contrato | 2009-06-02 09:00 → 2009-07-31 09:00 (+59d) | 2009-06-02 09:00 → 2009-07-31 09:00 (+59d) |  | 11.62d → 11.12d | none → 104 | was named Cierre de contrato; constraint none → start no earlier than 2009-07-31 09:00 |
| 106 | **Trámites administrativos** |  | 2009-06-16 10:00 → 2009-07-27 19:00 (+41d) | 10.12d → 41d | 1.5d → 14.12d |  |  |
| 107 | **Iglesia** |  | 2009-06-16 10:00 → 2009-07-27 19:00 (+41d) | 10.12d → 41d | 1.5d → 14.12d |  |  |
| 113 | Entrega certificados | 2009-06-09 12:00 → 2009-06-16 10:00 (+7d) | 2009-06-09 13:00 → 2009-06-16 11:00 (+7d) |  | 6.12d → 18.75d | 112 → 112, 111 |  |
| 114 | Limpieza iglesia | 2009-06-02 11:00 → 2009-07-24 09:00 (+52d) | 2009-06-02 13:00 → 2009-07-24 19:00 (+52d) | 2h → 8h | 10.62d → 14.88d |  | constraint none → start no earlier than 2009-07-24 09:00 |
| 115 | Celebración ceremonia | 2009-06-02 15:00 → 2009-07-25 09:00 (+53d) | 2009-06-02 17:00 → 2009-07-25 11:00 (+53d) |  | 10.62d → 14.88d |  |  |
| 116 | Recogida y limpieza iglesia | 2009-06-02 17:00 → 2009-07-27 09:00 (+55d) | 2009-06-02 19:00 → 2009-07-27 19:00 (+55d) | 2h → 8h | 10.62d → 14.12d |  | constraint none → start no earlier than 2009-07-26 09:00 |
| 117 | Iglesia recogida | 2009-06-02 19:00 → 2009-07-27 19:00 (+55d) | 2009-06-02 19:00 → 2009-07-27 19:00 (+55d) |  | 10.62d → 14.12d |  |  |
| 118 | **Recinto banquete** |  | 2009-06-08 16:00 → 2009-07-27 16:00 (+49d) | 4.62d → 40.62d | 7d → 14.5d |  |  |
| 125 | Instalación carpa | 2009-06-04 12:00 → 2009-07-24 09:00 (+50d) | 2009-06-04 19:00 → 2009-07-24 19:00 (+50d) | 5h → 8h | 7d → 14.5d |  | constraint none → start no earlier than 2009-07-24 09:00 |
| 126 | Celebración evento | 2009-06-05 09:00 → 2009-07-25 09:00 (+50d) | 2009-06-05 19:00 → 2009-07-25 19:00 (+50d) |  | 7d → 14.5d |  |  |
| 127 | Retirada carpa | 2009-06-08 09:00 → 2009-07-27 09:00 (+49d) | 2009-06-08 16:00 → 2009-07-27 16:00 (+49d) |  | 7d → 14.5d |  |  |
| 128 | Cierre contrato ayuntamiento | 2009-06-08 16:00 → 2009-07-27 16:00 (+49d) | 2009-06-08 16:00 → 2009-07-27 16:00 (+49d) |  | 7d → 14.5d |  |  |
| 129 | Cierre contrato proveedor carpa | 2009-06-08 16:00 → 2009-07-27 16:00 (+49d) | 2009-06-08 16:00 → 2009-07-27 16:00 (+49d) |  | 7d → 14.5d | 128 → 127 |  |
| 130 | **Organización banquete** |  | 2009-06-02 19:00 → 2009-07-31 09:00 (+59d) | 1d? → 44d | 10.62d → 11.12d |  |  |
| 131 | Concerta cita previa restaurador |  | 2009-06-02 19:00 → 2009-06-02 10:00 | 1d? → 1h | 10.62d → 29.5d |  |  |
| 132 | Selección menú boda | 2009-06-02 09:00 → 2009-06-02 10:00 | 2009-06-02 19:00 → 2009-06-04 10:00 (+2d) | 1d? → 2d | 10.62d → 29.5d | none → 131 |  |
| 133 | Prueba menú boda | 2009-06-02 09:00 → 2009-06-04 10:00 (+2d) | 2009-06-02 19:00 → 2009-06-04 13:00 (+2d) | 1d? → 3h | 10.62d → 29.5d | none → 132 |  |
| 134 | Firma contrato restaurante | 2009-06-02 09:00 → 2009-06-04 13:00 (+2d) | 2009-06-02 09:00 → 2009-06-04 13:00 (+2d) |  | 11.62d → 29.5d | none → 133 |  |
| 135 | Selección servicio catering |  | 2009-06-02 19:00 → 2009-06-02 10:00 | 1d? → 1h | 10.62d → 31.88d |  |  |
| 136 | Firma contrato catering | 2009-06-02 09:00 → 2009-06-02 10:00 | 2009-06-02 09:00 → 2009-06-02 10:00 |  | 11.62d → 31.88d | none → 135 |  |
| 137 | Servicio restaurante boda | 2009-06-02 09:00 → 2009-07-25 09:00 (+53d) | 2009-06-02 19:00 → 2009-07-25 19:00 (+53d) | 1d? → 8h | 10.62d → 15.12d | none → 134 | constraint none → start no earlier than 2009-07-25 09:00 |
| 138 | Servicio catering boda | 2009-06-02 09:00 → 2009-07-25 09:00 (+53d) | 2009-06-02 19:00 → 2009-07-25 19:00 (+53d) | 1d? → 8h | 10.62d → 15.12d | none → 136 | constraint none → start no earlier than 2009-07-25 09:00 |
| 139 | Pago y Cierre contrato restaurante | 2009-06-02 09:00 → 2009-07-31 09:00 (+59d) | 2009-06-02 09:00 → 2009-07-31 09:00 (+59d) |  | 11.62d → 11.12d | none → 137 | was named Cierre contrato restaurante; constraint none → start no earlier than 2009-07-31 09:00 |
| 140 | Pago y Cierre contrato catering | 2009-06-02 09:00 → 2009-07-31 09:00 (+59d) | 2009-06-02 09:00 → 2009-07-31 09:00 (+59d) |  | 11.62d → 11.12d | none → 138 | was named Cierre contrato catering; constraint none → start no earlier than 2009-07-31 09:00 |
| 141 | **Noche de bodas** |  | 2009-06-03 12:00 → 2009-07-31 09:00 (+58d) | 1.38d? → 44d | 10.25d → 11.12d |  |  |
| 146 | Noche de bodas hotel | 2009-06-02 12:00 → 2009-07-24 09:00 (+52d) | 2009-06-03 12:00 → 2009-07-26 19:00 (+53d) | 1d? → 2d | 10.25d → 15.12d |  | constraint none → finish no earlier than 2009-07-26 19:00 |
| 147 | Cierre contrato hotel | 2009-06-03 12:00 → 2009-07-31 09:00 (+58d) | 2009-06-03 12:00 → 2009-07-31 09:00 (+58d) |  | 10.25d → 11.12d |  | constraint none → start no earlier than 2009-07-31 09:00 |

## Version 4 (saved 2009-06-08)

Last finish 2009-08-17 → 2009-08-15 (-2d).

Added:

| ID | Task | Duration | Start | Finish | Predecessors | Constraint | Resources |
| --- | --- | --- | --- | --- | --- | --- | --- |
| 105 | Servicio transporte vuelta 1 | 3h | 2009-07-25 10:00 | 2009-07-25 13:00 | 104 | start no earlier than 2009-07-25 09:00 | Alquiler vehículo invitados |
| 106 | Servicio transporte vuelta 2 | 3h | 2009-07-25 15:00 | 2009-07-25 18:00 | 105 | start no earlier than 2009-07-25 09:00 | Alquiler vehículo invitados |
| 150 | **Reuniones de seguimiento** | 51.12d | 2009-06-02 09:00 | 2009-08-11 10:00 |  |  |  |
| 151 | Reuniones de seguimiento 1 | 1h | 2009-06-02 09:00 | 2009-06-02 10:00 |  | start no earlier than 2009-06-02 09:00 | Organizador; Novia; Novio |
| 152 | Reuniones de seguimiento 2 | 1h | 2009-06-09 09:00 | 2009-06-09 10:00 |  | start no earlier than 2009-06-09 09:00 | Organizador; Novia; Novio |
| 153 | Reuniones de seguimiento 3 | 1h | 2009-06-16 09:00 | 2009-06-16 10:00 |  | start no earlier than 2009-06-16 09:00 | Organizador; Novia; Novio |
| 154 | Reuniones de seguimiento 4 | 1h | 2009-06-23 09:00 | 2009-06-23 10:00 |  | start no earlier than 2009-06-23 09:00 | Organizador; Novia; Novio |
| 155 | Reuniones de seguimiento 5 | 1h | 2009-06-30 09:00 | 2009-06-30 10:00 |  | start no earlier than 2009-06-30 09:00 | Organizador; Novia; Novio |
| 156 | Reuniones de seguimiento 6 | 1h | 2009-07-07 09:00 | 2009-07-07 10:00 |  | start no earlier than 2009-07-07 09:00 | Organizador; Novia; Novio |
| 157 | Reuniones de seguimiento 7 | 1h | 2009-07-14 09:00 | 2009-07-14 10:00 |  | start no earlier than 2009-07-14 09:00 | Organizador; Novia; Novio |
| 158 | Reuniones de seguimiento 8 | 1h | 2009-07-21 09:00 | 2009-07-21 10:00 |  | start no earlier than 2009-07-21 09:00 | Organizador; Novia; Novio |
| 159 | Reuniones de seguimiento 9 | 1h | 2009-07-28 09:00 | 2009-07-28 10:00 |  | start no earlier than 2009-07-28 09:00 | Organizador; Novia; Novio |
| 160 | Reuniones de seguimiento 10 | 1h | 2009-08-04 09:00 | 2009-08-04 10:00 |  | start no earlier than 2009-08-04 09:00 | Organizador; Novia; Novio |
| 161 | Reuniones de seguimiento 11 | 1h | 2009-08-11 09:00 | 2009-08-11 10:00 |  | start no earlier than 2009-08-11 09:00 | Organizador; Novia; Novio |

Changed:

| ID | Task | Start | Finish | Duration | Total float | Other |
| --- | --- | --- | --- | --- | --- | --- |
| 1 | **Vestuario** | 2009-06-02 09:00 → 2009-06-02 10:00 | 2009-07-17 09:00 → 2009-07-17 19:00 | 33d → 33.88d | 22.12d → 15.75d | baseline start none → 2009-06-02 10:00; baseline finish none → 2009-07-17 19:00 |
| 2 | **Vestuario del novio** | 2009-06-02 09:00 → 2009-06-02 16:00 | 2009-06-12 11:00 → 2009-06-20 10:00 (+8d) | 8.25d → 13.38d | 25.75d → 18.25d | baseline start none → 2009-06-02 16:00; baseline finish none → 2009-06-20 10:00 |
| 3 | Concertar cita previa | 2009-06-02 09:00 → 2009-06-02 16:00 | 2009-06-02 10:00 → 2009-06-02 17:00 |  | 25.75d → 18.25d | resources none → Organizador; baseline start none → 2009-06-02 16:00; baseline finish none → 2009-06-02 17:00 |
| 4 | Selección de posibilidades | 2009-06-02 10:00 → 2009-06-08 19:00 (+6d) | 2009-06-02 13:00 → 2009-06-09 19:00 (+7d) |  | 25.75d → 19d | resources none → Novio; baseline start none → 2009-06-08 19:00; baseline finish none → 2009-06-09 19:00 |
| 5 | Elección traje definitivo | 2009-06-02 15:00 → 2009-06-09 19:00 (+7d) | 2009-06-02 18:00 → 2009-06-10 19:00 (+8d) |  | 25.75d → 19d | resources none → Novio; baseline start none → 2009-06-09 19:00; baseline finish none → 2009-06-10 19:00 |
| 6 | Selección de complementos | 2009-06-02 18:00 → 2009-06-10 19:00 (+8d) | 2009-06-02 19:00 → 2009-06-10 20:00 (+8d) |  | 25.75d → 19d | resources none → Novio; baseline start none → 2009-06-10 19:00; baseline finish none → 2009-06-10 20:00 |
| 7 | Elección definitiva de complementos | 2009-06-03 09:00 → 2009-06-10 20:00 (+7d) | 2009-06-03 10:00 → 2009-06-10 21:00 (+7d) |  | 25.75d → 19d | resources none → Novio; baseline start none → 2009-06-10 20:00; baseline finish none → 2009-06-10 21:00 |
| 8 | Firma de contrato modista | 2009-06-03 10:00 → 2009-06-10 21:00 (+7d) | 2009-06-03 10:00 → 2009-06-10 21:00 (+7d) |  | 25.75d → 19d | resources none → Organizador; baseline start none → 2009-06-10 21:00; baseline finish none → 2009-06-10 21:00 |
| 9 | Realización de arreglos | 2009-06-03 10:00 → 2009-06-11 09:00 (+8d) | 2009-06-12 10:00 → 2009-06-19 19:00 (+7d) |  | 25.75d → 19d | baseline start none → 2009-06-11 09:00; baseline finish none → 2009-06-19 19:00 |
| 10 | Prueba de arreglos | 2009-06-12 10:00 → 2009-06-20 09:00 (+8d) | 2009-06-12 11:00 → 2009-06-20 10:00 (+8d) |  | 25.75d → 19.88d | resources none → Novio; baseline start none → 2009-06-20 09:00; baseline finish none → 2009-06-20 10:00 |
| 11 | Entrega del traje | 2009-06-12 11:00 → 2009-06-20 10:00 (+8d) | 2009-06-12 11:00 → 2009-06-20 10:00 (+8d) |  | 25.75d → 20d | resources none → Novio; Organizador; Traje novio; baseline start none → 2009-06-20 10:00; baseline finish none → 2009-06-20 10:00 |
| 12 | **Vestuario de la novia** | 2009-06-02 09:00 → 2009-06-02 10:00 | 2009-06-17 12:00 → 2009-06-25 20:00 (+8d) | 11.38d → 17.88d | 22.62d → 15.75d | baseline start none → 2009-06-02 10:00; baseline finish none → 2009-06-25 20:00 |
| 13 | Concertar cita previa | 2009-06-02 09:00 → 2009-06-02 10:00 | 2009-06-02 10:00 → 2009-06-02 11:00 |  | 22.62d → 15.75d | resources none → Organizador; baseline start none → 2009-06-02 10:00; baseline finish none → 2009-06-02 11:00 |
| 14 | Selección de posibilidades | 2009-06-02 10:00 → 2009-06-08 19:00 (+6d) | 2009-06-02 16:00 → 2009-06-09 20:00 (+7d) |  | 22.62d → 15d | resources none → Novia; baseline start none → 2009-06-08 19:00; baseline finish none → 2009-06-09 20:00 |
| 15 | Elección traje definitivo | 2009-06-02 16:00 → 2009-06-09 20:00 (+7d) | 2009-06-02 19:00 → 2009-06-10 20:00 (+8d) |  | 22.62d → 15d | resources none → Novia; baseline start none → 2009-06-09 20:00; baseline finish none → 2009-06-10 20:00 |
| 16 | Selección de complementos | 2009-06-03 09:00 → 2009-06-10 20:00 (+7d) | 2009-06-03 10:00 → 2009-06-10 21:00 (+7d) |  | 22.62d → 15.88d | resources none → Novia; baseline start none → 2009-06-10 20:00; baseline finish none → 2009-06-10 21:00 |
| 17 | Elección definitiva de complementos | 2009-06-03 10:00 → 2009-06-11 19:00 (+8d) | 2009-06-03 11:00 → 2009-06-11 20:00 (+8d) |  | 22.62d → 15d | resources none → Novia; baseline start none → 2009-06-11 19:00; baseline finish none → 2009-06-11 20:00 |
| 18 | Firma de contrato modista | 2009-06-03 11:00 → 2009-06-11 20:00 (+8d) | 2009-06-03 11:00 → 2009-06-11 20:00 (+8d) |  | 22.62d → 15.88d | resources none → Organizador; baseline start none → 2009-06-11 20:00; baseline finish none → 2009-06-11 20:00 |
| 19 | Realización de arreglos | 2009-06-03 11:00 → 2009-06-12 09:00 (+9d) | 2009-06-17 11:00 → 2009-06-25 19:00 (+8d) |  | 22.62d → 15.88d | baseline start none → 2009-06-12 09:00; baseline finish none → 2009-06-25 19:00 |
| 20 | Prueba de arregos | 2009-06-17 11:00 → 2009-06-25 19:00 (+8d) | 2009-06-17 12:00 → 2009-06-25 20:00 (+8d) |  | 22.62d → 15.88d | resources none → Novia; baseline start none → 2009-06-25 19:00; baseline finish none → 2009-06-25 20:00 |
| 21 | Entrega del traje | 2009-06-17 12:00 → 2009-06-25 20:00 (+8d) | 2009-06-17 12:00 → 2009-06-25 20:00 (+8d) |  | 22.62d → 16d | resources none → Novia; Organizador; Traje novia; baseline start none → 2009-06-25 20:00; baseline finish none → 2009-06-25 20:00 |
| 22 | Pago y cierre de vestuario |  | 2009-07-17 09:00 → 2009-07-17 19:00 |  | 22.12d → 21d | resources none → Organizador; Traje novia; Traje novio; baseline start none → 2009-07-17 09:00; baseline finish none → 2009-07-17 19:00 |
| 23 | **Anillos** | 2009-06-02 09:00 → 2009-06-02 17:00 | 2009-07-17 09:00 → 2009-07-17 19:00 | 33d → 33.25d | 22.12d → 4.12d | baseline start none → 2009-06-02 17:00; baseline finish none → 2009-07-17 19:00 |
| 24 | Concertar cita previa | 2009-06-02 09:00 → 2009-06-02 17:00 | 2009-06-02 10:00 → 2009-06-02 18:00 |  | 26.38d → 4.12d | resources none → Organizador; baseline start none → 2009-06-02 17:00; baseline finish none → 2009-06-02 18:00 |
| 25 | Selección de posiblidades | 2009-06-02 10:00 → 2009-06-11 19:00 (+9d) | 2009-06-02 12:00 → 2009-06-12 19:00 (+10d) | 2h → 3h | 26.38d → 4d | resources none → Novia; Novio; baseline start none → 2009-06-11 19:00; baseline finish none → 2009-06-12 19:00 |
| 26 | Elección modelo definitivo | 2009-06-02 12:00 → 2009-06-12 19:00 (+10d) | 2009-06-02 13:00 → 2009-06-18 20:00 (+16d) | 1h → 2h | 26.38d → 4d | resources none → Novio; Novia; baseline start none → 2009-06-12 19:00; baseline finish none → 2009-06-18 20:00 |
| 27 | Firma de contrato joyería | 2009-06-02 13:00 → 2009-06-18 20:00 (+16d) | 2009-06-02 13:00 → 2009-06-18 20:00 (+16d) |  | 26.38d → 4d | resources none → Organizador; baseline start none → 2009-06-18 20:00; baseline finish none → 2009-06-18 20:00 |
| 28 | Arreglos y grabados | 2009-06-02 15:00 → 2009-06-19 09:00 (+17d) | 2009-06-11 13:00 → 2009-06-29 19:00 (+18d) |  | 26.38d → 4d | baseline start none → 2009-06-19 09:00; baseline finish none → 2009-06-29 19:00 |
| 29 | Prueba de arregos | 2009-06-11 15:00 → 2009-06-29 19:00 (+18d) | 2009-06-11 16:00 → 2009-07-10 21:00 (+29d) | 1h → 2h | 26.38d → 4d | resources none → Novio; Novia; Alianzas; baseline start none → 2009-06-29 19:00; baseline finish none → 2009-07-10 21:00 |
| 30 | Entrega de alianzas | 2009-06-11 16:00 → 2009-07-10 21:00 (+29d) | 2009-06-11 16:00 → 2009-07-10 21:00 (+29d) |  | 26.38d → 5d | resources none → Novia; Novio; Alianzas; baseline start none → 2009-07-10 21:00; baseline finish none → 2009-07-10 21:00 |
| 31 | Pago y Cierre contrato alianzas |  | 2009-07-17 09:00 → 2009-07-17 19:00 |  | 22.12d → 21d | resources none → Organizador; Alianzas; baseline start none → 2009-07-17 09:00; baseline finish none → 2009-07-17 19:00 |
| 32 | **Peinado y maquillaje** | 2009-06-02 09:00 → 2009-07-10 18:00 (+38d) | 2009-07-25 11:00 → 2009-07-29 19:20 (+4d) | 39.25d → 14.12d | 15.88d → 10d | was named Peinado; baseline start none → 2009-07-10 18:00; baseline finish none → 2009-07-29 19:20 |
| 33 | Concertar cita previa | 2009-06-02 09:00 → 2009-07-10 18:00 (+38d) | 2009-06-02 10:00 → 2009-07-10 19:00 (+38d) |  | 53.62d → 10d | resources none → Organizador; baseline start none → 2009-07-10 18:00; baseline finish none → 2009-07-10 19:00 |
| 34 | Selección de posiblidades | 2009-06-02 10:00 → 2009-07-11 09:00 (+39d) | 2009-06-02 11:00 → 2009-07-11 10:00 (+39d) |  | 53.62d → 10.38d | resources none → Novia; baseline start none → 2009-07-11 09:00; baseline finish none → 2009-07-11 10:00 |
| 35 | Prueba de posiblidades | 2009-06-02 11:00 → 2009-07-22 20:00 (+50d) | 2009-06-02 17:00 → 2009-07-23 21:00 (+51d) |  | 53.62d → 12d | resources none → Novia; baseline start none → 2009-07-22 20:00; baseline finish none → 2009-07-23 21:00 |
| 36 | Selección de peinado definitivo | 2009-06-02 17:00 → 2009-07-24 19:00 (+52d) | 2009-06-02 18:00 → 2009-07-24 20:00 (+52d) |  | 53.62d → 11d | resources none → Novia; baseline start none → 2009-07-24 19:00; baseline finish none → 2009-07-24 20:00 |
| 37 | Firma de contrato peinado | 2009-06-02 18:00 → 2009-07-24 20:00 (+52d) | 2009-06-02 18:00 → 2009-07-24 20:00 (+52d) |  | 53.62d → 11d | resources none → Organizador; baseline start none → 2009-07-24 20:00; baseline finish none → 2009-07-24 20:00 |
| 38 | Servicio pel/maq fotos estudio | 2009-06-02 18:00 → 2009-07-25 09:00 (+53d) | 2009-06-03 10:00 → 2009-07-25 11:00 (+52d) |  | 53.62d → 11.75d | was named Servicio peluquería fotos estudio; resources none → Peluquería/Maquillaje; Novia; baseline start none → 2009-07-25 09:00; baseline finish none → 2009-07-25 11:00 |
| 39 | Servicio de peluquería/maquillaje | 2009-07-25 09:00 → 2009-07-28 20:20 (+3d) | 2009-07-25 11:00 → 2009-07-29 19:20 (+4d) |  | 15.88d → 12d | was named Servicio de peluquería; resources none → Peluquería/Maquillaje; Novia; baseline start none → 2009-07-28 20:20; baseline finish none → 2009-07-29 19:20 |
| 40 | Pago y Cierre contrato peluquería/maq | 2009-07-25 11:00 → 2009-07-29 19:20 (+4d) | 2009-07-25 11:00 → 2009-07-29 19:20 (+4d) |  | 15.88d → 12d | was named Pago y Cierre contrato peluquería; resources none → Organizador; Peluquería/Maquillaje; baseline start none → 2009-07-29 19:20; baseline finish none → 2009-07-29 19:20 |
| 41 | **Fotografía** | 2009-06-02 09:00 → 2009-07-13 10:00 (+41d) | 2009-08-17 10:00 → 2009-08-15 10:00 (-2d) | 55.12d → 25.88d |  | baseline start none → 2009-07-13 10:00; baseline finish none → 2009-08-15 10:00 |
| 42 | Concertar cita previa | 2009-06-02 09:00 → 2009-07-13 10:00 (+41d) | 2009-06-02 10:00 → 2009-07-13 11:00 (+41d) |  | 53.75d → 16.75d | resources none → Organizador; baseline start none → 2009-07-13 10:00; baseline finish none → 2009-07-13 11:00 |
| 43 | Selección de album | 2009-06-02 10:00 → 2009-07-21 19:00 (+49d) | 2009-06-02 11:00 → 2009-07-21 21:00 (+49d) | 1h → 2h | 53.75d → 16d | resources none → Novio; Novia; baseline start none → 2009-07-21 19:00; baseline finish none → 2009-07-21 21:00 |
| 44 | Firma contrato fotógrafo | 2009-06-02 11:00 → 2009-07-21 21:00 (+49d) | 2009-06-02 11:00 → 2009-07-21 21:00 (+49d) |  | 53.75d → 17d | resources none → Organizador; baseline start none → 2009-07-21 21:00; baseline finish none → 2009-07-21 21:00 |
| 45 | Realización fotos estudio | 2009-06-17 12:00 → 2009-07-25 11:00 (+38d) | 2009-06-17 16:00 → 2009-07-28 20:20 (+41d) | 2h → 4h | 43.38d → 13d | resources none → Novio; Novia; baseline start none → 2009-07-25 11:00; baseline finish none → 2009-07-28 20:20 |
| 46 | Realización reportaje fotográfico |  | 2009-07-25 19:00 → 2009-07-28 18:20 (+3d) | 8h → 8.67h | 15d → 13.08d | resources none → Novio; Novia; Reportaje fotográfico; baseline start none → 2009-07-25 09:00; baseline finish none → 2009-07-28 18:20 |
| 47 | Entrega reportaje completo | 2009-08-17 09:00 → 2009-08-15 09:00 (-2d) | 2009-08-17 10:00 → 2009-08-15 10:00 (-2d) |  |  | was named Entrega reportaje fotográfico; resources none → Novio; Novia; Album fotográfico; baseline start none → 2009-08-15 09:00; baseline finish none → 2009-08-15 10:00 |
| 48 | Pago y Cierre contrato fotógrafo | 2009-08-17 10:00 → 2009-08-15 10:00 (-2d) | 2009-08-17 10:00 → 2009-08-15 10:00 (-2d) |  |  | resources none → Organizador; Album fotográfico; Reportaje fotográfico; baseline start none → 2009-08-15 10:00; baseline finish none → 2009-08-15 10:00 |
| 49 | **Flores y decoración** | 2009-06-02 09:00 → 2009-07-13 11:00 (+41d) |  | 41d → 11.75d | 14.12d → 14d | baseline start none → 2009-07-13 11:00; baseline finish none → 2009-07-28 09:00 |
| 50 | Concertar cita previa | 2009-06-02 09:00 → 2009-07-13 11:00 (+41d) | 2009-06-02 10:00 → 2009-07-13 12:00 (+41d) |  | 53.5d → 15.62d | resources none → Organizador; baseline start none → 2009-07-13 11:00; baseline finish none → 2009-07-13 12:00 |
| 51 | Selección del tipo de decoración | 2009-06-02 10:00 → 2009-07-21 20:00 (+49d) | 2009-06-02 12:00 → 2009-07-22 20:00 (+50d) | 2h → 3h | 53.5d → 15d | resources none → Novio; Novia; baseline start none → 2009-07-21 20:00; baseline finish none → 2009-07-22 20:00 |
| 52 | Selección tipo plantas | 2009-06-02 12:00 → 2009-07-22 20:00 (+50d) | 2009-06-02 13:00 → 2009-07-24 19:00 (+52d) | 1h → 2h | 53.5d → 15d | resources none → Novio; Novia; baseline start none → 2009-07-22 20:00; baseline finish none → 2009-07-24 19:00 |
| 53 | Selección ramo novia | 2009-06-02 15:00 → 2009-07-24 19:00 (+52d) | 2009-06-02 16:00 → 2009-07-24 21:00 (+52d) | 1h → 2h | 53.5d → 15d | resources none → Novio; Novia; baseline start none → 2009-07-24 19:00; baseline finish none → 2009-07-24 21:00 |
| 54 | Firma contrato floristería | 2009-06-02 16:00 → 2009-07-24 21:00 (+52d) | 2009-06-02 16:00 → 2009-07-24 21:00 (+52d) |  | 53.5d → 15d | resources none → Novio; Novia; baseline start none → 2009-07-24 21:00; baseline finish none → 2009-07-24 21:00 |
| 55 | Instalación decoración iglesia |  |  |  | 15.12d → 15d | resources none → Instalación decoración floral [1%]; baseline start none → 2009-07-25 09:00; baseline finish none → 2009-07-25 19:00 |
| 56 | Entrega ramo novia |  |  |  | 16.12d → 16d | resources none → Ramo novia; Novia; baseline start none → 2009-07-25 09:00; baseline finish none → 2009-07-25 09:00 |
| 57 | Pago y Cierre contrato floristería |  |  |  | 14.12d → 14d | resources none → Organizador; Flores elegidas; baseline start none → 2009-07-28 09:00; baseline finish none → 2009-07-28 09:00 |
| 58 | **Papelería y regalos** | 2009-06-02 09:00 → 2009-06-02 19:00 |  | 41d → 40d | 2.5d → 1.88d | baseline start none → 2009-06-02 19:00; baseline finish none → 2009-07-28 09:00 |
| 59 | **Invitaciones** | 2009-06-02 09:00 → 2009-06-02 19:00 | 2009-06-17 13:00 → 2009-06-18 19:00 (+1d) | 11.5d → 12d | 2.5d → 1d | baseline start none → 2009-06-02 19:00; baseline finish none → 2009-06-18 19:00 |
| 60 | Elaboración lista invitados | 2009-06-02 09:00 → 2009-06-02 19:00 | 2009-06-03 19:00 → 2009-06-08 19:00 (+5d) |  | 2.5d → 1d | resources none → Novio; Novia; baseline start none → 2009-06-02 19:00; baseline finish none → 2009-06-08 19:00 |
| 61 | Elaboración lista bodas | 2009-06-04 09:00 → 2009-06-09 09:00 (+5d) | 2009-06-05 19:00 → 2009-06-10 19:00 (+5d) |  | 2.5d → 1.62d | baseline start none → 2009-06-09 09:00; baseline finish none → 2009-06-10 19:00 |
| 62 | Concertar cita previa | 2009-06-08 09:00 → 2009-06-11 09:00 (+3d) | 2009-06-08 10:00 → 2009-06-11 10:00 (+3d) |  | 2.5d → 1.62d | resources none → Organizador; baseline start none → 2009-06-11 09:00; baseline finish none → 2009-06-11 10:00 |
| 63 | Selección tipo invitación | 2009-06-08 10:00 → 2009-06-11 10:00 (+3d) | 2009-06-08 12:00 → 2009-06-11 12:00 (+3d) |  | 2.5d → 1.62d | baseline start none → 2009-06-11 10:00; baseline finish none → 2009-06-11 12:00 |
| 64 | Selección texto invitación | 2009-06-08 12:00 → 2009-06-11 18:00 (+3d) | 2009-06-08 13:00 → 2009-06-11 19:00 (+3d) |  | 2.5d → 1d | resources none → Novio; Novia; baseline start none → 2009-06-11 18:00; baseline finish none → 2009-06-11 19:00 |
| 65 | Firma contrato papelería | 2009-06-08 13:00 → 2009-06-11 19:00 (+3d) | 2009-06-08 13:00 → 2009-06-11 19:00 (+3d) |  | 2.5d → 1d | resources none → Organizador; baseline start none → 2009-06-11 19:00; baseline finish none → 2009-06-11 19:00 |
| 66 | Envío invitaciones | 2009-06-08 15:00 → 2009-06-12 09:00 (+4d) | 2009-06-17 13:00 → 2009-06-18 19:00 (+1d) | 7d → 5d | 2.5d → 1d | resources none → Invitaciones boda; Envio Invitaciones; baseline start none → 2009-06-12 09:00; baseline finish none → 2009-06-18 19:00 |
| 67 | **Regalo madrina** | 2009-06-02 09:00 → 2009-06-03 09:00 (+1d) | 2009-06-11 11:00 → 2009-07-01 16:00 (+20d) | 7.25d → 20.62d | 31.75d → 17.38d | baseline start none → 2009-06-03 09:00; baseline finish none → 2009-07-01 16:00 |
| 68 | Concertar cita previa | 2009-06-02 09:00 → 2009-06-03 09:00 (+1d) | 2009-06-02 10:00 → 2009-06-03 10:00 (+1d) |  | 31.75d → 17.88d | resources none → Organizador; baseline start none → 2009-06-03 09:00; baseline finish none → 2009-06-03 10:00 |
| 69 | Selección regalo | 2009-06-02 10:00 → 2009-06-19 19:00 (+17d) | 2009-06-02 11:00 → 2009-06-19 21:00 (+17d) | 1h → 2h | 31.75d → 17d | resources none → Novio; Novia; baseline start none → 2009-06-19 19:00; baseline finish none → 2009-06-19 21:00 |
| 70 | Firma contrato regalos madrina | 2009-06-02 11:00 → 2009-06-19 21:00 (+17d) | 2009-06-02 11:00 → 2009-06-19 21:00 (+17d) |  | 31.75d → 17.5d | resources none → Organizador; baseline start none → 2009-06-19 21:00; baseline finish none → 2009-06-19 21:00 |

| ID | Task | Start | Finish | Duration | Total float | Predecessors | Other |
| --- | --- | --- | --- | --- | --- | --- | --- |
| 71 | Entrega regalos madrina | 2009-06-02 11:00 → 2009-06-22 12:00 (+20d) | 2009-06-11 11:00 → 2009-07-01 16:00 (+20d) |  | 31.75d → 17.38d |  | resources none → Organizador; Regalos madrina; baseline start none → 2009-06-22 12:00; baseline finish none → 2009-07-01 16:00 |
| 72 | **Regalo padrino** | 2009-06-02 09:00 → 2009-06-03 10:00 (+1d) | 2009-06-11 11:00 → 2009-07-10 17:00 (+29d) | 7.25d → 27.62d | 31.75d → 10.25d |  | baseline start none → 2009-06-03 10:00; baseline finish none → 2009-07-10 17:00 |
| 73 | Concertar cita previa | 2009-06-02 09:00 → 2009-06-03 10:00 (+1d) | 2009-06-02 10:00 → 2009-06-03 11:00 (+1d) |  | 31.75d → 10.75d |  | resources none → Organizador; baseline start none → 2009-06-03 10:00; baseline finish none → 2009-06-03 11:00 |
| 74 | Selección regalo | 2009-06-02 10:00 → 2009-06-19 20:00 (+17d) | 2009-06-02 11:00 → 2009-06-20 10:00 (+18d) | 1h → 2h | 31.75d → 10d |  | resources none → Novio; Novia; baseline start none → 2009-06-19 20:00; baseline finish none → 2009-06-20 10:00 |
| 75 | Firma contrato regalo padrino | 2009-06-02 11:00 → 2009-06-20 10:00 (+18d) | 2009-06-02 11:00 → 2009-06-20 10:00 (+18d) |  | 31.75d → 10.25d |  | resources none → Organizador; baseline start none → 2009-06-20 10:00; baseline finish none → 2009-06-20 10:00 |
| 76 | Entrega regalos padrino | 2009-06-02 11:00 → 2009-07-01 16:00 (+29d) | 2009-06-11 11:00 → 2009-07-10 17:00 (+29d) |  | 31.75d → 10.25d |  | resources none → Organizador; Regalos padrino; baseline start none → 2009-07-01 16:00; baseline finish none → 2009-07-10 17:00 |
| 77 | Pago y Cierre contrato papelería y regalos |  |  |  | 14.12d → 14d |  | resources none → Organizador; baseline start none → 2009-07-28 09:00; baseline finish none → 2009-07-28 09:00 |
| 78 | **Orquesta y música** | 2009-06-02 09:00 → 2009-07-10 17:00 (+38d) |  | 44d → 15.25d | 11.12d → 11d |  | baseline start none → 2009-07-10 17:00; baseline finish none → 2009-07-31 09:00 |
| 79 | **Música ceremonia** | 2009-06-02 09:00 → 2009-07-13 09:00 (+41d) |  | 41d → 12d | 14.12d → 14d |  | baseline start none → 2009-07-13 09:00; baseline finish none → 2009-07-28 09:00 |
| 80 | Concertar cita previa | 2009-06-02 09:00 → 2009-07-13 09:00 (+41d) | 2009-06-02 10:00 → 2009-07-13 10:00 (+41d) |  | 53d → 20.62d |  | resources none → Organizador; baseline start none → 2009-07-13 09:00; baseline finish none → 2009-07-13 10:00 |
| 81 | Selección repertorio | 2009-06-02 10:00 → 2009-07-17 19:00 (+45d) | 2009-06-03 10:00 → 2009-07-20 21:00 (+47d) | 1d → 1.12d | 53d → 17.88d |  | resources none → Novia; Novio; baseline start none → 2009-07-17 19:00; baseline finish none → 2009-07-20 21:00 |
| 82 | Firma contrato música ceremonia | 2009-06-03 10:00 → 2009-07-20 21:00 (+47d) | 2009-06-03 10:00 → 2009-07-20 21:00 (+47d) |  | 53d → 19d |  | resources none → Organizador; baseline start none → 2009-07-20 21:00; baseline finish none → 2009-07-20 21:00 |
| 83 | Actuación día boda |  |  |  | 15.12d → 15d |  | resources none → Música ceremonia; baseline start none → 2009-07-25 09:00; baseline finish none → 2009-07-25 19:00 |
| 84 | Pago y Cierre contrato grupo |  |  |  | 14.12d → 14d |  | resources none → Organizador; baseline start none → 2009-07-28 09:00; baseline finish none → 2009-07-28 09:00 |
| 85 | **Música banquete** | 2009-06-02 09:00 → 2009-07-10 17:00 (+38d) |  | 44d → 15.25d | 11.12d → 11d |  | baseline start none → 2009-07-10 17:00; baseline finish none → 2009-07-31 09:00 |
| 86 | Concertar cita previa | 2009-06-02 09:00 → 2009-07-10 17:00 (+38d) | 2009-06-02 10:00 → 2009-07-10 18:00 (+38d) |  | 52d → 20.12d |  | resources none → Organizador; baseline start none → 2009-07-10 17:00; baseline finish none → 2009-07-10 18:00 |
| 87 | Selección tipo música | 2009-06-02 10:00 → 2009-07-11 09:00 (+39d) | 2009-06-04 10:00 → 2009-07-17 20:00 (+43d) | 2d → 2.12d | 52d → 20d |  | resources none → Novio; Novia; baseline start none → 2009-07-11 09:00; baseline finish none → 2009-07-17 20:00 |
| 88 | Firma contrato música banquete | 2009-06-04 10:00 → 2009-07-17 20:00 (+43d) | 2009-06-04 10:00 → 2009-07-17 20:00 (+43d) |  | 52d → 20.25d |  | resources none → Organizador; baseline start none → 2009-07-17 20:00; baseline finish none → 2009-07-17 20:00 |
| 89 | Actuación día boda |  | 2009-07-25 19:00 → 2009-07-25 17:00 | 8h → 6h | 15.12d → 15.25d |  | resources none → Música banquete; baseline start none → 2009-07-25 09:00; baseline finish none → 2009-07-25 17:00 |
| 90 | Pago y Cierre contrato música |  |  |  | 11.12d → 11d |  | resources none → Organizador; baseline start none → 2009-07-31 09:00; baseline finish none → 2009-07-31 09:00 |
| 91 | **Transporte** | 2009-06-02 09:00 → 2009-07-13 12:00 (+41d) |  | 44d → 14.62d | 11.12d → 11d |  | baseline start none → 2009-07-13 12:00; baseline finish none → 2009-07-31 09:00 |
| 92 | **Transporte novios** | 2009-06-02 09:00 → 2009-07-13 12:00 (+41d) |  | 44d → 14.62d | 11.12d → 11d |  | baseline start none → 2009-07-13 12:00; baseline finish none → 2009-07-31 09:00 |
| 93 | Concertar cita previa | 2009-06-02 09:00 → 2009-07-13 12:00 (+41d) | 2009-06-02 10:00 → 2009-07-13 13:00 (+41d) |  | 53.5d → 18.12d |  | resources none → Organizador; baseline start none → 2009-07-13 12:00; baseline finish none → 2009-07-13 13:00 |
| 94 | Selección del tipo de transporte | 2009-06-02 10:00 → 2009-07-20 20:00 (+48d) | 2009-06-02 12:00 → 2009-07-21 20:00 (+49d) | 2h → 3h | 53.5d → 17d |  | resources none → Novio; Novia; baseline start none → 2009-07-20 20:00; baseline finish none → 2009-07-21 20:00 |
| 95 | Firma contrato | 2009-06-02 12:00 → 2009-07-21 20:00 (+49d) | 2009-06-02 12:00 → 2009-07-21 20:00 (+49d) |  | 53.5d → 17.75d |  | resources none → Organizador; baseline start none → 2009-07-21 20:00; baseline finish none → 2009-07-21 20:00 |
| 96 | Desplazamiento de los novios iglesia |  |  |  | 14.88d → 14.75d |  | resources none → Alquiler vehículo novios; baseline start none → 2009-07-25 09:00; baseline finish none → 2009-07-25 19:00 |
| 97 | Desplazamiento novios hotel noche bodas |  |  |  | 14.88d → 14.75d |  | resources none → Alquiler vehículo novios; baseline start none → 2009-07-27 09:00; baseline finish none → 2009-07-27 11:00 |
| 98 | Pago y Cierre del contrato |  |  |  | 11.12d → 11d |  | resources none → Organizador; baseline start none → 2009-07-31 09:00; baseline finish none → 2009-07-31 09:00 |
| 99 | **Transporte invitados** | 2009-06-02 09:00 → 2009-07-13 15:00 (+41d) |  | 44d → 14.5d | 11.12d → 11d |  | baseline start none → 2009-07-13 15:00; baseline finish none → 2009-07-31 09:00 |
| 100 | Concertar cita previa | 2009-06-02 09:00 → 2009-07-13 15:00 (+41d) | 2009-06-02 10:00 → 2009-07-13 16:00 (+41d) |  | 53.75d → 24.25d |  | resources none → Organizador; baseline start none → 2009-07-13 15:00; baseline finish none → 2009-07-13 16:00 |
| 101 | Selección del tipo de vehículo | 2009-06-02 10:00 → 2009-07-13 16:00 (+41d) | 2009-06-02 11:00 → 2009-07-13 19:00 (+41d) | 1h → 2h | 53.75d → 24d |  | resources none → Novia; Novio; Organizador; baseline start none → 2009-07-13 16:00; baseline finish none → 2009-07-13 19:00 |
| 102 | Determinación servicios a prestar | 2009-06-02 11:00 → 2009-07-14 10:00 (+42d) | 2009-06-02 12:00 → 2009-07-14 11:00 (+42d) |  | 53.75d → 23.88d |  | resources none → Organizador; baseline start none → 2009-07-14 10:00; baseline finish none → 2009-07-14 11:00 |
| 103 | Firma del contrato | 2009-06-02 12:00 → 2009-07-14 11:00 (+42d) | 2009-06-02 12:00 → 2009-07-14 11:00 (+42d) |  | 53.75d → 23.88d |  | resources none → Organizador; baseline start none → 2009-07-14 11:00; baseline finish none → 2009-07-14 11:00 |
| 104 | Servicio de transporte ida |  | 2009-07-25 19:00 → 2009-07-25 10:00 | 8h → 1h |  |  | was named Servicio de transporte; resources none → Alquiler vehículo invitados; baseline start none → 2009-07-25 09:00; baseline finish none → 2009-07-25 10:00 |
| 107 | Pago y Cierre de contrato |  |  |  | 11.12d → 11d | 104 → 106 | resources none → Organizador; baseline start none → 2009-07-31 09:00; baseline finish none → 2009-07-31 09:00 |
| 108 | **Trámites administrativos** | 2009-06-02 09:00 → 2009-06-02 11:00 |  | 41d → 40.75d | 14.12d → 14d |  | baseline start none → 2009-06-02 11:00; baseline finish none → 2009-07-27 19:00 |
| 109 | **Iglesia** | 2009-06-02 09:00 → 2009-06-02 11:00 |  | 41d → 40.75d | 14.12d → 14d |  | baseline start none → 2009-06-02 11:00; baseline finish none → 2009-07-27 19:00 |
| 110 | Concertar cita previa párroco | 2009-06-02 09:00 → 2009-06-02 11:00 | 2009-06-02 10:00 → 2009-06-02 12:00 |  | 18.75d → 21.5d |  | resources none → Organizador; baseline start none → 2009-06-02 11:00; baseline finish none → 2009-06-02 12:00 |
| 111 | Reserva fecha boda | 2009-06-02 10:00 → 2009-06-02 12:00 | 2009-06-02 11:00 → 2009-06-02 13:00 |  | 23.5d → 21.5d |  | resources none → Organizador; baseline start none → 2009-06-02 12:00; baseline finish none → 2009-06-02 13:00 |
| 112 | Selección fechas cursos prematrimoniales | 2009-06-02 11:00 → 2009-06-02 15:00 | 2009-06-02 12:00 → 2009-06-02 19:00 | 1h → 2h | 23.5d → 21.5d |  | resources none → Novio; Novia; Organizador; baseline start none → 2009-06-02 15:00; baseline finish none → 2009-06-02 19:00 |
| 113 | Obtención certificados bautismo | 2009-06-02 10:00 → 2009-06-03 12:00 (+1d) | 2009-06-16 10:00 → 2009-06-17 17:00 (+1d) |  | 18.75d → 22.12d |  | resources none → Organizador; baseline start none → 2009-06-03 12:00; baseline finish none → 2009-06-17 17:00 |
| 114 | Realización cursos prematrimoniales | 2009-06-02 12:00 → 2009-06-26 18:00 (+24d) | 2009-06-09 12:00 → 2009-07-10 21:00 (+31d) | 5d → 5.12d | 23.5d → 4d |  | constraint none → start no earlier than 2009-06-26 09:00; resources none → Novio; Novia; baseline start none → 2009-06-26 18:00; baseline finish none → 2009-07-10 21:00 |
| 115 | Entrega certificados | 2009-06-16 10:00 → 2009-07-13 09:00 (+27d) | 2009-06-16 11:00 → 2009-07-13 10:00 (+27d) |  | 18.75d → 4.88d |  | baseline start none → 2009-07-13 09:00; baseline finish none → 2009-07-13 10:00 |
| 116 | Limpieza iglesia |  |  |  | 14.88d → 14.75d |  | resources none → Servicio limpieza; baseline start none → 2009-07-24 09:00; baseline finish none → 2009-07-24 19:00 |
| 117 | Celebración ceremonia |  |  |  | 14.88d → 14.75d |  | resources none → Ceremonia; baseline start none → 2009-07-25 09:00; baseline finish none → 2009-07-25 11:00 |
| 118 | Recogida y limpieza iglesia |  |  |  | 14.12d → 14d |  | resources none → Servicio limpieza; baseline start none → 2009-07-27 09:00; baseline finish none → 2009-07-27 19:00 |
| 119 | Iglesia recogida |  |  |  | 14.12d → 14d |  | baseline start none → 2009-07-27 19:00; baseline finish none → 2009-07-27 19:00 |
| 120 | **Recinto banquete** | 2009-06-02 09:00 → 2009-06-17 17:00 (+15d) |  | 40.62d → 28.88d | 14.5d → 14.38d |  | baseline start none → 2009-06-17 17:00; baseline finish none → 2009-07-27 16:00 |
| 121 | Cita previa ayuntamiento | 2009-06-02 09:00 → 2009-06-17 17:00 (+15d) | 2009-06-02 10:00 → 2009-06-17 18:00 (+15d) |  | 34.62d → 22.75d |  | resources none → Organizador; baseline start none → 2009-06-17 17:00; baseline finish none → 2009-06-17 18:00 |
| 122 | Obtención permiso celebración evento | 2009-06-02 10:00 → 2009-06-17 18:00 (+15d) | 2009-06-04 10:00 → 2009-06-19 18:00 (+15d) |  | 34.62d → 22.75d |  | resources none → Organizador; Licencia ayuntamiento; baseline start none → 2009-06-17 18:00; baseline finish none → 2009-06-19 18:00 |
| 123 | Firma contrato uso recinto | 2009-06-04 10:00 → 2009-06-19 18:00 (+15d) | 2009-06-04 10:00 → 2009-06-19 18:00 (+15d) |  | 34.62d → 22.75d |  | resources none → Organizador; baseline start none → 2009-06-19 18:00; baseline finish none → 2009-06-19 18:00 |
| 124 | Cita previa proveedor carpa | 2009-06-04 10:00 → 2009-06-19 18:00 (+15d) | 2009-06-04 11:00 → 2009-06-19 19:00 (+15d) |  | 34.62d → 22.75d |  | resources none → Organizador; baseline start none → 2009-06-19 18:00; baseline finish none → 2009-06-19 19:00 |
| 125 | Selección carpa | 2009-06-04 11:00 → 2009-06-22 10:00 (+18d) | 2009-06-04 12:00 → 2009-06-22 11:00 (+18d) |  | 34.62d → 22.75d |  | resources none → Organizador; baseline start none → 2009-06-22 10:00; baseline finish none → 2009-06-22 11:00 |
| 126 | Firma contrato proveedor carpa | 2009-06-04 12:00 → 2009-06-22 11:00 (+18d) | 2009-06-04 12:00 → 2009-06-22 11:00 (+18d) |  | 34.62d → 22.75d |  | resources none → Organizador; baseline start none → 2009-06-22 11:00; baseline finish none → 2009-06-22 11:00 |
| 127 | Instalación carpa |  |  |  | 14.5d → 14.38d |  | resources none → Montaje carpa; baseline start none → 2009-07-24 09:00; baseline finish none → 2009-07-24 19:00 |
| 128 | Celebración evento |  |  |  | 14.5d → 14.38d |  | resources none → Alquiler carpa; baseline start none → 2009-07-25 09:00; baseline finish none → 2009-07-25 19:00 |
| 129 | Retirada carpa |  |  |  | 14.5d → 14.38d |  | resources none → Montaje carpa; baseline start none → 2009-07-27 09:00; baseline finish none → 2009-07-27 16:00 |
| 130 | Cierre contrato ayuntamiento |  |  |  | 14.5d → 14.38d |  | resources none → Organizador; baseline start none → 2009-07-27 16:00; baseline finish none → 2009-07-27 16:00 |
| 131 | Cierre contrato proveedor carpa |  |  |  | 14.5d → 14.38d |  | resources none → Organizador; baseline start none → 2009-07-27 16:00; baseline finish none → 2009-07-27 16:00 |
| 132 | **Organización banquete** | 2009-06-02 09:00 → 2009-06-02 18:00 |  | 44d → 43.12d | 11.12d → 11d |  | baseline start none → 2009-06-02 18:00; baseline finish none → 2009-07-31 09:00 |
| 133 | Concerta cita previa restaurador | 2009-06-02 09:00 → 2009-06-02 18:00 | 2009-06-02 10:00 → 2009-06-02 19:00 |  | 29.5d → 18d |  | resources none → Organizador; baseline start none → 2009-06-02 18:00; baseline finish none → 2009-06-02 19:00 |
| 134 | Selección menú boda | 2009-06-02 10:00 → 2009-06-12 18:00 (+10d) | 2009-06-04 10:00 → 2009-06-18 19:00 (+14d) | 2d → 2.12d | 29.5d → 17d |  | resources none → Novia; Novio; baseline start none → 2009-06-12 18:00; baseline finish none → 2009-06-18 19:00 |
| 135 | Prueba menú boda | 2009-06-04 10:00 → 2009-06-18 19:00 (+14d) | 2009-06-04 13:00 → 2009-06-19 20:00 (+15d) | 3h → 4h | 29.5d → 17.88d |  | resources none → Novio; Novia; baseline start none → 2009-06-18 19:00; baseline finish none → 2009-06-19 20:00 |
| 136 | Firma contrato restaurante | 2009-06-04 13:00 → 2009-06-19 20:00 (+15d) | 2009-06-04 13:00 → 2009-06-19 20:00 (+15d) |  | 29.5d → 18d |  | resources none → Organizador; baseline start none → 2009-06-19 20:00; baseline finish none → 2009-06-19 20:00 |
| 137 | Selección servicio catering | 2009-06-02 09:00 → 2009-06-03 11:00 (+1d) | 2009-06-02 10:00 → 2009-06-03 12:00 (+1d) |  | 31.88d → 30.62d |  | resources none → Organizador; baseline start none → 2009-06-03 11:00; baseline finish none → 2009-06-03 12:00 |
| 138 | Firma contrato catering | 2009-06-02 10:00 → 2009-06-03 12:00 (+1d) | 2009-06-02 10:00 → 2009-06-03 12:00 (+1d) |  | 31.88d → 30.62d |  | resources none → Organizador; baseline start none → 2009-06-03 12:00; baseline finish none → 2009-06-03 12:00 |
| 139 | Servicio restaurante boda |  |  |  | 15.12d → 15d |  | resources none → Menu elegido [10000%]; baseline start none → 2009-07-25 09:00; baseline finish none → 2009-07-25 19:00 |
| 140 | Servicio catering boda |  |  |  | 15.12d → 15d |  | resources none → Servicio Catering; baseline start none → 2009-07-25 09:00; baseline finish none → 2009-07-25 19:00 |
| 141 | Pago y Cierre contrato restaurante |  |  |  | 11.12d → 11d |  | resources none → Organizador; baseline start none → 2009-07-31 09:00; baseline finish none → 2009-07-31 09:00 |
| 142 | Pago y Cierre contrato catering |  |  |  | 11.12d → 11d |  | resources none → Organizador; baseline start none → 2009-07-31 09:00; baseline finish none → 2009-07-31 09:00 |

| ID | Task | Start | Finish | Duration | Total float | Other |
| --- | --- | --- | --- | --- | --- | --- |
| 143 | **Noche de bodas** | 2009-06-02 09:00 → 2009-06-20 10:00 (+18d) |  | 44d → 30d | 11.12d → 11d | baseline start none → 2009-06-20 10:00; baseline finish none → 2009-07-31 09:00 |
| 144 | Selección destino noche bodas | 2009-06-02 09:00 → 2009-06-20 10:00 (+18d) | 2009-06-02 10:00 → 2009-06-20 11:00 (+18d) |  | 36.62d → 22d | resources none → Novio; Novia; baseline start none → 2009-06-20 10:00; baseline finish none → 2009-06-20 11:00 |
| 145 | Selección hotel | 2009-06-02 10:00 → 2009-06-20 11:00 (+18d) | 2009-06-02 11:00 → 2009-06-22 10:00 (+20d) | 1h → 2h | 36.62d → 22d | resources none → Novio; Novia; Organizador; baseline start none → 2009-06-20 11:00; baseline finish none → 2009-06-22 10:00 |
| 146 | Reserva hotel | 2009-06-02 11:00 → 2009-06-22 11:00 (+20d) | 2009-06-02 12:00 → 2009-06-22 12:00 (+20d) |  | 36.62d → 22.62d | resources none → Organizador; baseline start none → 2009-06-22 11:00; baseline finish none → 2009-06-22 12:00 |
| 147 | Firma contrato hotel | 2009-06-02 12:00 → 2009-06-22 12:00 (+20d) | 2009-06-02 12:00 → 2009-06-22 12:00 (+20d) |  | 36.62d → 22.62d | resources none → Organizador; baseline start none → 2009-06-22 12:00; baseline finish none → 2009-06-22 12:00 |
| 148 | Noche de bodas hotel |  |  |  | 15.12d → 15d | resources none → Reserva hotel; baseline start none → 2009-07-24 09:00; baseline finish none → 2009-07-26 19:00 |
| 149 | Cierre contrato hotel |  |  |  | 11.12d → 11d | resources none → Organizador; baseline start none → 2009-07-31 09:00; baseline finish none → 2009-07-31 09:00 |
