# Proyecto de las oficinas centrales

How a schedule from MS Project changed from version to version. A marks actual dates.

## Version 1 (saved 2006-01-24, file master4.mpp)

| ID | WBS | Task | Duration | Start | Finish | Predecessors | Total float |
| --- | --- | --- | --- | --- | --- | --- | --- |
| 1 | 1 | **Reubicación oficinas centrales** | 81.88d | 1998-08-10 | 1998-12-03 |  | 0d |
| 2 | 1.1 | **Planificación** | 35d | 1998-08-10 | 1998-09-29 |  | 0d |
| 3 |  | Escribir propuesta | 3d | 1998-08-10 | 1998-08-12 |  | 0d |
| 4 |  | Contratar arquitecto | 2d | 1998-08-11 | 1998-08-12 | 3FF | 0.25d |
| 5 |  | Localizar nueva ubicación | 1w | 1998-08-13 | 1998-08-19 | 4 | 0.25d |
| 6 |  | Presentar propuesta | 2d | 1998-08-20 | 1998-08-21 | 5 | 0.25d |
| 7 |  | Aprobación de la directiva | 0d | 1998-08-21 | 1998-08-21 | 6 | 0.25d |
| 8 |  | Negociar nuevo alquiler | 4d | 1998-08-24 | 1998-08-27 | 7 | 0.25d |
| 9 |  | Terminar dibujos | 2w | 1998-08-26 | 1998-09-10 | 8FS-2d | 0.25d |
| 10 |  | Seleccionar subcontratados | 1.5w | 1998-09-08 | 1998-09-17 | 9FS-2d | 0.25d |
| 11 |  | Contratar empresa de mudanzas | 3d | 1998-09-15 | 1998-09-17 | 10FF | 0.25d |
| 12 |  | Enviar dibujos | 1.5w | 1998-09-18 | 1998-09-29 | 11 | 0.25d |
| 13 |  | Permisos recibidos | 0d | 1998-09-29 | 1998-09-29 | 12 | 0.25d |
| 14 | 1.2 | **Remodelación** | 37.5d | 1998-09-29 | 1998-11-19 | 2 | 0d |
| 15 |  | Demolición del espacio existente | 3d | 1998-09-29 | 1998-10-02 |  | 0.25d |
| 16 |  | Levantar tabiques | 4d | 1998-10-02 | 1998-10-08 | 15 | 0.25d |
| 17 |  | Instalación eléctrica | 6d | 1998-10-08 | 1998-10-16 | 16 | 0.25d |
| 18 |  | Instalación de líneas de voz y datos | 3d | 1998-10-09 | 1998-10-14 | 17SS+1d | 2.25d |
| 19 |  | Terminar paredes | 2w | 1998-10-16 | 1998-10-30 | 17, 18 | 0.25d |
| 20 |  | Instalar puertas y ventanas | 3d | 1998-10-28 | 1998-11-02 | 19FS-2d | 4.25d |
| 21 |  | Pintar | 4d | 1998-10-28 | 1998-11-03 | 19FS-2d | 0.25d |
| 22 |  | Colocar moqueta: oficinas | 3d | 1998-11-03 | 1998-11-06 | 21 | 0.25d |
| 23 |  | Colocar linóleo: sala del servidor | 3d | 1998-11-03 | 1998-11-06 | 22SS | 0.25d |
| 24 |  | Ultimas reparaciones | 1w | 1998-11-06 | 1998-11-13 | 20, 22, 23 | 0.25d |
| 25 |  | Probar sistemas | 2d | 1998-11-13 | 1998-11-17 | 24 | 1.25d |
| 26 |  | Revisión de acabado | 3d | 1998-11-13 | 1998-11-18 | 24, 25FF | 0.25d |
| 27 |  | Limpieza final | 2d | 1998-11-18 | 1998-11-19 | 26 | 0d |
| 28 |  | Remodelación terminada | 0d | 1998-11-19 | 1998-11-19 | 27 | 0d |
| 29 | 1.3 | **Traslado** | 9.38d | 1998-11-20 | 1998-12-03 | 14 | 0d |
| 30 | 1.3.1 | **Oficinas** | 6.5d | 1998-11-20 | 1998-11-30 |  | 0d |
| 31 |  | Desconectar computadoras/equipos | 2d | 1998-11-20 | 1998-11-23 |  | 0d |
| 32 |  | Desmontar mobiliario | 2d | 1998-11-23 | 1998-11-24 | 31FS-1d | 2.88d |
| 33 |  | Trasladar mobiliario/equipo/cajas | 4h | 1998-11-25 | 1998-11-25 | 32 | 2.88d |
| 34 |  | Montar mobiliario | 2d | 1998-11-25 | 1998-11-27 | 33 | 2.88d |
| 35 |  | Conectar computadoras/equipos | 2d | 1998-11-26 | 1998-11-30 | 34FS-1d | 2.88d |
| 36 |  | Oficinas terminadas | 0d | 1998-11-30 | 1998-11-30 | 35 | 2.88d |
| 37 | 1.3.2 | **Sala del servidor** | 7.38d | 1998-11-24 | 1998-12-03 | 31 | 0d |
| 38 |  | Hacer copia de seguridad del servidor | 15h | 1998-11-24 | 1998-11-25 |  | 0d |
| 39 |  | Desconectar servidor | 2d | 1998-11-25 | 1998-11-27 | 38 | 0d |
| 40 |  | Trasladar servidor | 4h | 1998-11-27 | 1998-11-30 | 39 | 0d |
| 41 |  | Conectar servidor | 2d | 1998-11-30 | 1998-12-02 | 40 | 0d |
| 42 |  | Probar servidor | 1d | 1998-12-02 | 1998-12-03 | 41 | 0d |
| 43 |  | Sala del servidor terminada | 0d | 1998-12-03 | 1998-12-03 | 42 | 0d |
| 44 |  | Traslado terminado | 0d | 1998-12-03 | 1998-12-03 | 29, 36 | 0d |

## Version 2 (saved 2006-01-24, file master7.mpp)

Last finish 1998-12-03 → 1998-12-02 (-1d).

Changed:

| ID | Task | Start | Finish | Duration | Total float | Predecessors | Other |
| --- | --- | --- | --- | --- | --- | --- | --- |
| 1 | **Reubicación oficinas centrales** |  | 1998-12-03 → 1998-12-02 (-1d) | 81.88d → 80.88d |  |  | baseline start none → 1998-08-10; baseline finish none → 1998-12-02 |
| 2 | **Planificación** |  | 1998-09-29 → 1998-09-28 (-1d) | 35d → 34d |  |  | baseline start none → 1998-08-10; baseline finish none → 1998-09-28 |
| 3 | Escribir propuesta |  |  |  |  |  | baseline start none → 1998-08-10; baseline finish none → 1998-08-12 |
| 4 | Contratar arquitecto | 1998-08-11 → 1998-08-13 (+2d) | 1998-08-12 → 1998-08-14 (+2d) |  | 0.25d → 0d | 3FF → 3 | baseline start none → 1998-08-13; baseline finish none → 1998-08-14 |
| 5 | Localizar nueva ubicación | 1998-08-13 → 1998-08-17 (+4d) | 1998-08-19 → 1998-08-21 (+2d) |  | 0.25d → 0d |  | baseline start none → 1998-08-17; baseline finish none → 1998-08-21 |
| 6 | Presentar propuesta | 1998-08-20 → 1998-08-24 (+4d) | 1998-08-21 → 1998-08-25 (+4d) |  | 0.25d → 0d |  | resources jefe de operaciones; sala de conferencias; arquitecto → jefe de operaciones; sala de conferencias; arquitecto; presidente; vicepresidente; baseline start none → 1998-08-24; baseline finish none → 1998-08-25 |
| 7 | Aprobación de la directiva | 1998-08-21 → 1998-08-25 (+4d) | 1998-08-21 → 1998-08-25 (+4d) |  | 0.25d → 0d |  | baseline start none → 1998-08-25; baseline finish none → 1998-08-25 |
| 8 | Negociar nuevo alquiler | 1998-08-24 → 1998-08-26 (+2d) | 1998-08-27 → 1998-08-31 (+4d) |  | 0.25d → 0d |  | constraint none → finish no later than 1998-09-01; baseline start none → 1998-08-26; baseline finish none → 1998-08-31 |
| 9 | Terminar dibujos | 1998-08-26 → 1998-08-28 (+2d) | 1998-09-10 → 1998-09-03 (-7d) | 2w → 1w | 0.25d → 0d |  | resources arquitecto → arquitecto [200%]; baseline start none → 1998-08-28; baseline finish none → 1998-09-03 |
| 10 | Seleccionar subcontratados | 1998-09-08 → 1998-09-04 (-4d) | 1998-09-17 → 1998-09-16 (-1d) |  | 0.25d → 0d | 9FS-2d → 9 | baseline start none → 1998-09-04; baseline finish none → 1998-09-16 |
| 11 | Contratar empresa de mudanzas | 1998-09-15 → 1998-09-11 (-4d) | 1998-09-17 → 1998-09-16 (-1d) | 3d → 4d | 0.25d → 0d |  | resources jefe de operaciones [50%] → jefe de operaciones [75%]; baseline start none → 1998-09-11; baseline finish none → 1998-09-16 |
| 12 | Enviar dibujos | 1998-09-18 → 1998-09-17 (-1d) | 1998-09-29 → 1998-09-28 (-1d) |  | 0.25d → 0d |  | resources arquitecto → arquitecto; auxiliar administrativo [50%]; baseline start none → 1998-09-17; baseline finish none → 1998-09-28 |
| 13 | Permisos recibidos | 1998-09-29 → 1998-09-28 (-1d) | 1998-09-29 → 1998-09-28 (-1d) |  | 0.25d → 0d |  | baseline start none → 1998-09-28; baseline finish none → 1998-09-28 |
| 14 | **Remodelación** | 1998-09-29 → 1998-09-28 (-1d) | 1998-11-19 → 1998-11-20 (+1d) | 37.5d → 39.5d |  |  | baseline start none → 1998-09-28; baseline finish none → 1998-11-20 |
| 15 | Demolición del espacio existente | 1998-09-29 → 1998-09-28 (-1d) | 1998-10-02 → 1998-10-01 (-1d) |  | 0.25d → 0d |  | constraint none → start no earlier than 1998-09-21; baseline start none → 1998-09-28; baseline finish none → 1998-10-01 |
| 16 | Levantar tabiques | 1998-10-02 → 1998-10-01 (-1d) | 1998-10-08 → 1998-10-06 (-2d) | 4d → 3.5d | 0.25d → 0d |  | resources empresa constructora → empresa constructora [150%]; baseline start none → 1998-10-01; baseline finish none → 1998-10-06 |
| 17 | Instalación eléctrica | 1998-10-08 → 1998-10-07 (-1d) | 1998-10-16 → 1998-10-14 (-2d) |  | 0.25d → 0d |  | baseline start none → 1998-10-07; baseline finish none → 1998-10-14 |
| 18 | Instalación de líneas de voz y datos | 1998-10-09 → 1998-10-16 (+7d) | 1998-10-14 → 1998-10-20 (+6d) |  | 2.25d → 0d | 17SS+1d → 17FS+1d | baseline start none → 1998-10-16; baseline finish none → 1998-10-20 |
| 19 | Terminar paredes | 1998-10-16 → 1998-10-21 (+5d) | 1998-10-30 → 1998-10-27 (-3d) | 2w → 1w | 0.25d → 0d | 17, 18 → 18 | resources pintor → pintor; empresa constructora; baseline start none → 1998-10-21; baseline finish none → 1998-10-27 |
| 20 | Instalar puertas y ventanas | 1998-10-28 → 1998-10-26 (-2d) | 1998-11-02 → 1998-10-28 (-5d) |  | 4.25d → 0d |  | baseline start none → 1998-10-26; baseline finish none → 1998-10-28 |
| 21 | Pintar | 1998-10-28 → 1998-10-29 (+1d) |  |  | 0.25d → 0d | 19FS-2d → 20 | baseline start none → 1998-10-29; baseline finish none → 1998-11-03 |
| 22 | Colocar moqueta: oficinas | 1998-11-03 → 1998-11-04 (+1d) |  |  | 0.25d → 0d |  | baseline start none → 1998-11-04; baseline finish none → 1998-11-06 |
| 23 | Colocar linóleo: sala del servidor | 1998-11-03 → 1998-11-04 (+1d) |  |  | 0.25d → 0d |  | baseline start none → 1998-11-04; baseline finish none → 1998-11-06 |
| 24 | Ultimas reparaciones | 1998-11-06 → 1998-11-09 (+3d) |  |  | 0.25d → 0d | 20, 22, 23 → 22, 23 | resources carpintero → carpintero [50%]; electricista [50%]; baseline start none → 1998-11-09; baseline finish none → 1998-11-13 |
| 25 | Probar sistemas | 1998-11-13 → 1998-11-16 (+3d) |  |  | 1.25d → 1d |  | baseline start none → 1998-11-16; baseline finish none → 1998-11-17 |
| 26 | Revisión de acabado | 1998-11-13 → 1998-11-16 (+3d) |  |  | 0.25d → 0d |  | baseline start none → 1998-11-16; baseline finish none → 1998-11-18 |
| 27 | Limpieza final |  | 1998-11-19 → 1998-11-20 (+1d) |  |  |  | baseline start none → 1998-11-18; baseline finish none → 1998-11-20 |
| 28 | Remodelación terminada | 1998-11-19 → 1998-11-20 (+1d) | 1998-11-19 → 1998-11-20 (+1d) |  | 0d → 7.38d |  | baseline start none → 1998-11-20; baseline finish none → 1998-11-20 |
| 29 | **Traslado** | 1998-11-20 → 1998-11-19 (-1d) | 1998-12-03 → 1998-12-02 (-1d) |  |  | 14 → 27SS | baseline start none → 1998-11-19; baseline finish none → 1998-12-02 |
| 30 | **Oficinas** | 1998-11-20 → 1998-11-19 (-1d) | 1998-11-30 → 1998-11-26 (-4d) | 6.5d → 6d |  |  | baseline start none → 1998-11-19; baseline finish none → 1998-11-26 |
| 31 | Desconectar computadoras/equipos | 1998-11-20 → 1998-11-19 (-1d) | 1998-11-23 → 1998-11-20 (-3d) |  |  |  | baseline start none → 1998-11-19; baseline finish none → 1998-11-20 |
| 32 | Desmontar mobiliario | 1998-11-23 → 1998-11-20 (-3d) | 1998-11-24 → 1998-11-23 (-1d) |  | 2.88d → 3.25d |  | baseline start none → 1998-11-20; baseline finish none → 1998-11-23 |
| 33 | Trasladar mobiliario/equipo/cajas | 1998-11-25 → 1998-11-24 (-1d) | 1998-11-25 → 1998-11-24 (-1d) |  | 2.88d → 3.25d |  | resources ordenanza → ordenanza; camión; baseline start none → 1998-11-24; baseline finish none → 1998-11-24 |
| 34 | Montar mobiliario | 1998-11-25 → 1998-11-24 (-1d) | 1998-11-27 → 1998-11-26 (-1d) |  | 2.88d → 3.25d |  | baseline start none → 1998-11-24; baseline finish none → 1998-11-26 |
| 35 | Conectar computadoras/equipos | 1998-11-26 → 1998-11-25 (-1d) | 1998-11-30 → 1998-11-26 (-4d) |  | 2.88d → 3d |  | resources técnico informático 1 [200%] → técnico informático 2; baseline start none → 1998-11-25; baseline finish none → 1998-11-26 |
| 36 | Oficinas terminadas | 1998-11-30 → 1998-11-26 (-4d) | 1998-11-30 → 1998-11-26 (-4d) |  | 2.88d → 3.38d |  | baseline start none → 1998-11-26; baseline finish none → 1998-11-26 |
| 37 | **Sala del servidor** | 1998-11-24 → 1998-11-23 (-1d) | 1998-12-03 → 1998-12-02 (-1d) |  |  |  | baseline start none → 1998-11-23; baseline finish none → 1998-12-02 |
| 38 | Hacer copia de seguridad del servidor | 1998-11-24 → 1998-11-23 (-1d) | 1998-11-25 → 1998-11-24 (-1d) |  |  |  | baseline start none → 1998-11-23; baseline finish none → 1998-11-24 |
| 39 | Desconectar servidor | 1998-11-25 → 1998-11-24 (-1d) | 1998-11-27 → 1998-11-26 (-1d) |  |  |  | baseline start none → 1998-11-24; baseline finish none → 1998-11-26 |
| 40 | Trasladar servidor | 1998-11-27 → 1998-11-26 (-1d) | 1998-11-30 → 1998-11-27 (-3d) |  |  |  | resources ordenanza → ordenanza; camión; baseline start none → 1998-11-26; baseline finish none → 1998-11-27 |
| 41 | Conectar servidor | 1998-11-30 → 1998-11-27 (-3d) | 1998-12-02 → 1998-12-01 (-1d) |  |  |  | baseline start none → 1998-11-27; baseline finish none → 1998-12-01 |
| 42 | Probar servidor | 1998-12-02 → 1998-12-01 (-1d) | 1998-12-03 → 1998-12-02 (-1d) |  |  |  | baseline start none → 1998-12-01; baseline finish none → 1998-12-02 |
| 43 | Sala del servidor terminada | 1998-12-03 → 1998-12-02 (-1d) | 1998-12-03 → 1998-12-02 (-1d) |  |  |  | baseline start none → 1998-12-02; baseline finish none → 1998-12-02 |
| 44 | Traslado terminado | 1998-12-03 → 1998-12-02 (-1d) | 1998-12-03 → 1998-12-02 (-1d) |  |  |  | baseline start none → 1998-12-02; baseline finish none → 1998-12-02 |

## Version 3 (data date 1998-10-08, saved 2006-01-24, file master8.mpp)

Last finish stays 1998-12-02. Complete tasks 0 → 25.

Changed:

| ID | Task | Start | Finish | Duration | Complete | Total float |
| --- | --- | --- | --- | --- | --- | --- |
| 1 | **Reubicación oficinas centrales** | 1998-08-10 A |  | 80.88d → 81.38d | 0% → 87% |  |
| 2 | **Planificación** | 1998-08-10 A | 1998-09-28 → 1998-09-24 A (-4d) | 34d → 32d | 0% → 100% | 0d → none |
| 3 | Escribir propuesta | 1998-08-10 A | 1998-08-12 → 1998-08-11 A (-1d) | 3d → 2d | 0% → 100% | 0d → none |
| 4 | Contratar arquitecto | 1998-08-13 → 1998-08-12 A (-1d) | 1998-08-14 → 1998-08-13 A (-1d) |  | 0% → 100% | 0d → none |
| 5 | Localizar nueva ubicación | 1998-08-17 → 1998-08-14 A (-3d) | 1998-08-21 → 1998-08-20 A (-1d) |  | 0% → 100% | 0d → none |
| 6 | Presentar propuesta | 1998-08-24 → 1998-08-21 A (-3d) | 1998-08-25 → 1998-08-24 A (-1d) |  | 0% → 100% | 0d → none |
| 7 | Aprobación de la directiva | 1998-08-25 → 1998-08-24 A (-1d) | 1998-08-25 → 1998-08-24 A (-1d) |  | 0% → 100% | 0d → none |
| 8 | Negociar nuevo alquiler | 1998-08-26 → 1998-08-25 A (-1d) | 1998-08-31 → 1998-08-27 A (-4d) | 4d → 3d | 0% → 100% | 0d → none |
| 9 | Terminar dibujos | 1998-08-28 → 1998-08-26 A (-2d) | 1998-09-03 → 1998-09-01 A (-2d) |  | 0% → 100% | 0d → none |
| 10 | Seleccionar subcontratados | 1998-09-04 → 1998-09-02 A (-2d) | 1998-09-16 → 1998-09-14 A (-2d) |  | 0% → 100% | 0d → none |
| 11 | Contratar empresa de mudanzas | 1998-09-11 → 1998-09-09 A (-2d) | 1998-09-16 → 1998-09-14 A (-2d) |  | 0% → 100% | 0d → none |
| 12 | Enviar dibujos | 1998-09-17 → 1998-09-15 A (-2d) | 1998-09-28 → 1998-09-24 A (-4d) |  | 0% → 100% | 0d → none |
| 13 | Permisos recibidos | 1998-09-28 → 1998-09-24 A (-4d) | 1998-09-28 → 1998-09-24 A (-4d) |  | 0% → 100% | 0d → none |
| 14 | **Remodelación** | 1998-09-28 → 1998-09-24 A (-4d) | 1998-11-20 A | 39.5d → 41.33d | 0% → 100% | 0d → none |
| 15 | Demolición del espacio existente | 1998-09-28 → 1998-09-24 A (-4d) | 1998-10-01 → 1998-09-29 A (-2d) |  | 0% → 100% | 0d → none |
| 16 | Levantar tabiques | 1998-10-01 → 1998-09-29 A (-2d) | 1998-10-06 → 1998-10-02 A (-4d) | 3.5d → 3.33d | 0% → 100% | 0d → none |
| 17 | Instalación eléctrica | 1998-10-07 → 1998-10-02 A (-5d) | 1998-10-14 A |  | 0% → 100% | 0d → none |
| 18 | Instalación de líneas de voz y datos | 1998-10-16 → 1998-10-15 A (-1d) | 1998-10-20 A |  | 0% → 100% | 0d → none |
| 19 | Terminar paredes | 1998-10-21 → 1998-10-20 A (-1d) | 1998-10-27 A |  | 0% → 100% | 0d → none |
| 20 | Instalar puertas y ventanas | 1998-10-26 → 1998-10-23 A (-3d) | 1998-10-28 A |  | 0% → 100% | 0d → none |
| 21 | Pintar | 1998-10-29 → 1998-10-28 A (-1d) | 1998-11-03 A |  | 0% → 100% | 0d → none |
| 22 | Colocar moqueta: oficinas | 1998-11-04 → 1998-11-03 A (-1d) | 1998-11-06 A |  | 0% → 100% | 0d → none |
| 23 | Colocar linóleo: sala del servidor | 1998-11-04 → 1998-11-03 A (-1d) | 1998-11-06 A |  | 0% → 100% | 0d → none |
| 24 | Ultimas reparaciones | 1998-11-09 → 1998-11-06 A (-3d) | 1998-11-13 A |  | 0% → 100% | 0d → none |
| 25 | Probar sistemas | 1998-11-16 → 1998-11-13 A (-3d) | 1998-11-17 A |  | 0% → 100% | 1d → none |
| 26 | Revisión de acabado | 1998-11-16 → 1998-11-13 A (-3d) | 1998-11-18 A |  | 0% → 100% | 0d → none |
| 27 | Limpieza final | 1998-11-18 A | 1998-11-20 A |  | 0% → 100% | 0d → none |
| 28 | Remodelación terminada | 1998-11-20 A | 1998-11-20 A |  | 0% → 100% | 7.38d → none |
| 29 | **Traslado** | 1998-11-19 → 1998-11-18 A (-1d) |  | 9.38d → 10.04d | 0% → 18% |  |
| 30 | **Oficinas** | 1998-11-19 → 1998-11-18 A (-1d) | 1998-11-26 → 1998-11-27 (+1d) | 6d → 7.17d | 0% → 28% | 0d → 2.88d |
| 31 | Desconectar computadoras/equipos | 1998-11-19 → 1998-11-18 A (-1d) |  |  | 0% → 50% | 0d → 0.7d |
| 32 | Desmontar mobiliario | 1998-11-20 → 1998-11-23 A (+3d) | 1998-11-23 → 1998-11-24 (+1d) |  | 0% → 50% | 3.25d → 2.38d |
| 33 | Trasladar mobiliario/equipo/cajas | 1998-11-24 A | 1998-11-24 → 1998-11-25 (+1d) | 4h → 8h | 0% → 50% | 3.25d → 2.38d |
| 34 | Montar mobiliario | 1998-11-24 → 1998-11-25 (+1d) | 1998-11-26 → 1998-11-27 (+1d) |  |  | 3.25d → 2.38d |
| 35 | Conectar computadoras/equipos | 1998-11-25 → 1998-11-26 (+1d) | 1998-11-26 → 1998-11-27 (+1d) |  |  | 3d → 2.12d |
| 36 | Oficinas terminadas | 1998-11-26 → 1998-11-27 (+1d) | 1998-11-26 → 1998-11-27 (+1d) |  |  | 3.38d → 2.88d |
| 37 | **Sala del servidor** | 1998-11-23 A |  | 7.38d → 7.88d | 0% → 7% |  |
| 38 | Hacer copia de seguridad del servidor | 1998-11-23 A | 1998-11-24 → 1998-11-25 (+1d) |  | 0% → 27% |  |
| 39 | Desconectar servidor | 1998-11-24 → 1998-11-25 (+1d) | 1998-11-26 → 1998-11-27 (+1d) |  |  |  |
| 40 | Trasladar servidor | 1998-11-26 → 1998-11-27 (+1d) |  |  |  |  |
