How a schedule from MS Project changed from version to version. A marks actual dates.

## Version 1 (saved 2009-06-03)

| ID | WBS | Task | Duration | Start | Finish | Predecessors | Total float | Constraint |
| --- | --- | --- | --- | --- | --- | --- | --- | --- |
| 1 | 1 | **Vestuario** | 33d | 2009-06-02 09:00 | 2009-07-17 09:00 |  | 0d |  |
| 2 | 1.1 | **Vestuario del novio** | 8.25d | 2009-06-02 09:00 | 2009-06-12 11:00 |  | 24.5d |  |
| 3 |  | Concertar cita previa | 1h | 2009-06-02 09:00 | 2009-06-02 10:00 |  | 24.5d |  |
| 4 |  | Selección de posibilidades | 3h | 2009-06-02 10:00 | 2009-06-02 13:00 | 3 | 24.5d |  |
| 5 |  | Elección traje definitivo | 3h | 2009-06-02 15:00 | 2009-06-02 18:00 | 4 | 24.5d |  |
| 6 |  | Selección de complementos | 1h | 2009-06-02 18:00 | 2009-06-02 19:00 | 5 | 24.5d |  |
| 7 |  | Elección definitiva de complementos | 1h | 2009-06-03 09:00 | 2009-06-03 10:00 | 6 | 24.5d |  |
| 8 |  | Firma de contrato modista | 0d | 2009-06-03 10:00 | 2009-06-03 10:00 | 7 | 24.5d |  |
| 9 |  | Realización de arreglos | 7d | 2009-06-03 10:00 | 2009-06-12 10:00 | 8 | 24.5d |  |
| 10 |  | Prueba de arreglos | 1h | 2009-06-12 10:00 | 2009-06-12 11:00 | 9 | 24.5d |  |
| 11 |  | Entrega del traje | 0d | 2009-06-12 11:00 | 2009-06-12 11:00 | 10 | 24.5d |  |
| 12 | 1.2 | **Vestuario de la novia** | 11.38d | 2009-06-02 09:00 | 2009-06-17 12:00 |  | 21.38d |  |
| 13 |  | Concertar cita previa | 1h | 2009-06-02 09:00 | 2009-06-02 10:00 |  | 21.38d |  |
| 14 |  | Selección de posibilidades | 4h | 2009-06-02 10:00 | 2009-06-02 16:00 | 13 | 21.38d |  |
| 15 |  | Elección traje definitivo | 3h | 2009-06-02 16:00 | 2009-06-02 19:00 | 14 | 21.38d |  |
| 16 |  | Selección de complementos | 1h | 2009-06-03 09:00 | 2009-06-03 10:00 | 15 | 21.38d |  |
| 17 |  | Elección definitiva de complementos | 1h | 2009-06-03 10:00 | 2009-06-03 11:00 | 16 | 21.38d |  |
| 18 |  | Firma de contrato modista | 0d | 2009-06-03 11:00 | 2009-06-03 11:00 | 17 | 21.38d |  |
| 19 |  | Realización de arreglos | 10d | 2009-06-03 11:00 | 2009-06-17 11:00 | 18 | 21.38d |  |
| 20 |  | Prueba de arregos | 1h | 2009-06-17 11:00 | 2009-06-17 12:00 | 19 | 21.38d |  |
| 21 |  | Entrega del traje | 0d | 2009-06-17 12:00 | 2009-06-17 12:00 | 20 | 21.38d |  |
| 22 |  | Pago de vestuario | 0d | 2009-07-17 09:00 | 2009-07-17 09:00 | 11, 21 | 0d | start no earlier than 2009-07-17 09:00 |
| 23 |  | Cierre contrato vestuario | 0d | 2009-07-17 09:00 | 2009-07-17 09:00 | 22 | 0d |  |
| 24 | 2 | **Anillos** | 33d? | 2009-06-02 09:00 | 2009-07-17 09:00 |  | 0d |  |
| 25 |  | Concertar cita previa | 1h | 2009-06-02 09:00 | 2009-06-02 10:00 |  | 25.38d |  |
| 26 |  | Selección de posiblidades | 2h | 2009-06-02 10:00 | 2009-06-02 12:00 | 25 | 25.38d |  |
| 27 |  | Elección modelo definitivo | 1h | 2009-06-02 12:00 | 2009-06-02 13:00 | 26 | 25.38d |  |
| 28 |  | Firma de contrato joyería | 0d | 2009-06-02 13:00 | 2009-06-02 13:00 | 27 | 25.38d |  |
| 29 |  | Arreglos y grabados | 7d | 2009-06-02 15:00 | 2009-06-11 13:00 | 28 | 25.38d |  |
| 30 |  | Prueba de arregos | 1h | 2009-06-11 15:00 | 2009-06-11 16:00 | 29 | 25.38d |  |
| 31 |  | Entrega de alianzas | 0d | 2009-06-11 16:00 | 2009-06-11 16:00 | 30 | 25.38d |  |
| 32 |  | Pago de alianzas | 0d? | 2009-07-17 09:00 | 2009-07-17 09:00 | 31 | 0d | start no earlier than 2009-07-17 09:00 |
| 33 |  | Cierre contrato alianzas | 0d | 2009-07-17 09:00 | 2009-07-17 09:00 | 32 | 0d |  |
| 34 | 3 | **Peinado** | 1.38d | 2009-06-02 09:00 | 2009-06-03 12:00 |  | 31.62d |  |
| 35 |  | Concertar cita previa | 1h | 2009-06-02 09:00 | 2009-06-02 10:00 |  | 31.62d |  |
| 36 |  | Selección de posiblidades | 1h | 2009-06-02 10:00 | 2009-06-02 11:00 | 35 | 31.62d |  |
| 37 |  | Prueba de posiblidades | 4h | 2009-06-02 11:00 | 2009-06-02 17:00 | 36 | 31.62d |  |
| 38 |  | Selección de peinado definitivo | 1h | 2009-06-02 17:00 | 2009-06-02 18:00 | 37 | 31.62d |  |
| 39 |  | Firma de contrato peinado | 0d | 2009-06-02 18:00 | 2009-06-02 18:00 | 38 | 31.62d |  |
| 40 |  | Servicio peluquería fotos estudio | 2h | 2009-06-02 18:00 | 2009-06-03 10:00 | 39 | 31.62d |  |
| 41 |  | Servicio de peluquería | 2h | 2009-06-03 10:00 | 2009-06-03 12:00 | 40 | 31.62d |  |
| 42 |  | Pago de peluquería | 0d | 2009-06-03 12:00 | 2009-06-03 12:00 | 41 | 31.62d |  |
| 43 |  | Cierre contrato peluquería | 0d | 2009-06-03 12:00 | 2009-06-03 12:00 | 42 | 31.62d |  |
| 44 | 4 | **Fotografía** | 11.62d | 2009-06-02 09:00 | 2009-06-17 16:00 |  | 21.38d |  |
| 45 |  | Concertar cita previa | 1h | 2009-06-02 09:00 | 2009-06-02 10:00 |  | 32.5d |  |
| 46 |  | Selección de album | 1h | 2009-06-02 10:00 | 2009-06-02 11:00 | 45 | 32.5d |  |
| 47 |  | Firma contrato fotógrafo | 0d | 2009-06-02 11:00 | 2009-06-02 11:00 | 46 | 32.5d |  |
| 48 |  | Realización fotos estudio | 2h | 2009-06-17 12:00 | 2009-06-17 16:00 | 47, 21, 11, 40 | 21.38d |  |
| 49 |  | Realización reportaje fotográfico | 4h | 2009-06-02 09:00 | 2009-06-02 13:00 |  | 32.5d |  |
| 50 |  | Pago servicio fotográfico | 0d | 2009-06-17 16:00 | 2009-06-17 16:00 | 48, 49 | 21.38d |  |
| 51 |  | Entrega reportaje fotográfico | 0d | 2009-06-17 16:00 | 2009-06-17 16:00 | 50 | 21.38d |  |
| 52 |  | Cierre contrato fotógrafo | 0d | 2009-06-17 16:00 | 2009-06-17 16:00 | 51 | 21.38d |  |
| 53 | 5 | **Flores y decoración** | 1d | 2009-06-02 09:00 | 2009-06-02 19:00 |  | 32d |  |
| 54 |  | Concertar cita previa | 1h | 2009-06-02 09:00 | 2009-06-02 10:00 |  | 32d |  |
| 55 |  | Selección del tipo de decoración | 2h | 2009-06-02 10:00 | 2009-06-02 12:00 | 54 | 32d |  |
| 56 |  | Selección tipo plantas | 1h | 2009-06-02 12:00 | 2009-06-02 13:00 | 55 | 32d |  |
| 57 |  | Selección ramo novia | 1h | 2009-06-02 15:00 | 2009-06-02 16:00 | 56 | 32d |  |
| 58 |  | Firma contrato floristería | 0d | 2009-06-02 16:00 | 2009-06-02 16:00 | 57 | 32d |  |
| 59 |  | Instalación decoración iglesia | 3h | 2009-06-02 16:00 | 2009-06-02 19:00 | 58, 119 | 32d |  |
| 60 |  | Entrega ramo novia | 0d | 2009-06-02 19:00 | 2009-06-02 19:00 | 59 | 32d |  |
| 61 |  | Pago servicio floristería | 0d | 2009-06-02 19:00 | 2009-06-02 19:00 | 60 | 32d |  |
| 62 |  | Cierre contrato floristería | 0d | 2009-06-02 19:00 | 2009-06-02 19:00 | 61 | 32d |  |
| 63 | 6 | **Papelería y regalos** | 11.5d | 2009-06-02 09:00 | 2009-06-17 13:00 |  | 21.5d |  |
| 64 | 6.1 | **Invitaciones** | 11.5d | 2009-06-02 09:00 | 2009-06-17 13:00 |  | 21.5d |  |
| 65 |  | Elaboración lista invitados | 2d | 2009-06-02 09:00 | 2009-06-03 19:00 |  | 21.5d |  |
| 66 |  | Elaboración lista bodas | 2d | 2009-06-04 09:00 | 2009-06-05 19:00 | 65 | 21.5d |  |
| 67 |  | Concertar cita previa | 1h | 2009-06-08 09:00 | 2009-06-08 10:00 | 66 | 21.5d |  |
| 68 |  | Selección tipo invitación | 2h | 2009-06-08 10:00 | 2009-06-08 12:00 | 67 | 21.5d |  |
| 69 |  | Selección texto invitación | 1h | 2009-06-08 12:00 | 2009-06-08 13:00 | 68 | 21.5d |  |
| 70 |  | Firma contrato papelería | 0d | 2009-06-08 13:00 | 2009-06-08 13:00 | 69 | 21.5d |  |

| ID | WBS | Task | Duration | Start | Finish | Predecessors | Total float |
| --- | --- | --- | --- | --- | --- | --- | --- |
| 71 |  | Envío invitaciones | 7d | 2009-06-08 15:00 | 2009-06-17 13:00 | 70 | 21.5d |
| 72 | 6.2 | **Regalo madrina** | 7.25d | 2009-06-02 09:00 | 2009-06-11 11:00 |  | 25.75d |
| 73 |  | Concertar cita previa | 1h | 2009-06-02 09:00 | 2009-06-02 10:00 |  | 25.75d |
| 74 |  | Selección regalo | 1h | 2009-06-02 10:00 | 2009-06-02 11:00 | 73 | 25.75d |
| 75 |  | Firma contrato regalos madrina | 0d | 2009-06-02 11:00 | 2009-06-02 11:00 | 74 | 25.75d |
| 76 |  | Entrega regalos madrina | 7d | 2009-06-02 11:00 | 2009-06-11 11:00 | 75 | 25.75d |
| 77 | 6.3 | **Regalo padrino** | 7.25d | 2009-06-02 09:00 | 2009-06-11 11:00 |  | 25.75d |
| 78 |  | Concertar cita previa | 1h | 2009-06-02 09:00 | 2009-06-02 10:00 |  | 25.75d |
| 79 |  | Selección regalo | 1h | 2009-06-02 10:00 | 2009-06-02 11:00 | 78 | 25.75d |
| 80 |  | Firma contrato regalo padrino | 0d | 2009-06-02 11:00 | 2009-06-02 11:00 | 79 | 25.75d |
| 81 |  | Entrega regalos padrino | 7d | 2009-06-02 11:00 | 2009-06-11 11:00 | 80 | 25.75d |
| 82 |  | Pago y Cierre contrato papelería y regalos | 0d | 2009-06-17 13:00 | 2009-06-17 13:00 | 71, 76, 81 | 21.5d |
| 83 | 7 | **Orquesta y música** | 2.62d | 2009-06-02 09:00 | 2009-06-04 16:00 |  | 30.38d |
| 84 | 7.1 | **Música ceremonia** | 1.25d | 2009-06-02 09:00 | 2009-06-03 11:00 |  | 31.75d |
| 85 |  | Concertar cita previa | 1h | 2009-06-02 09:00 | 2009-06-02 10:00 |  | 31.75d |
| 86 |  | Selección repertorio | 1d | 2009-06-02 10:00 | 2009-06-03 10:00 | 85 | 31.75d |
| 87 |  | Firma contrato música ceremonia | 0d | 2009-06-03 10:00 | 2009-06-03 10:00 | 86 | 31.75d |
| 88 |  | Actuación día boda | 1h | 2009-06-03 10:00 | 2009-06-03 11:00 | 87 | 31.75d |
| 89 |  | Pago y Cierre contrato grupo | 0d | 2009-06-03 11:00 | 2009-06-03 11:00 | 88 | 31.75d |
| 90 | 7.2 | **Música banquete** | 2.62d | 2009-06-02 09:00 | 2009-06-04 16:00 |  | 30.38d |
| 91 |  | Concertar cita previa | 1h | 2009-06-02 09:00 | 2009-06-02 10:00 |  | 30.38d |
| 92 |  | Selección tipo música | 2d | 2009-06-02 10:00 | 2009-06-04 10:00 | 91 | 30.38d |
| 93 |  | Firma contrato música banquete | 0d | 2009-06-04 10:00 | 2009-06-04 10:00 | 92 | 30.38d |
| 94 |  | Actuación día boda | 4h | 2009-06-04 10:00 | 2009-06-04 16:00 | 93 | 30.38d |
| 95 |  | Pago y Cierre contrato música | 0d | 2009-06-04 16:00 | 2009-06-04 16:00 | 94 | 30.38d |
| 96 | 8 | **Transporte** | 0.75d | 2009-06-02 09:00 | 2009-06-02 17:00 |  | 32.25d |
| 97 | 8.1 | **Transporte novios** | 0.25d | 2009-06-02 09:00 | 2009-06-02 11:00 |  | 32.75d |
| 98 |  | Concertar cita previa | 1h | 2009-06-02 09:00 | 2009-06-02 10:00 |  | 32.88d |
| 99 |  | Selección del tipo de transporte | 2h | 2009-06-02 09:00 | 2009-06-02 11:00 |  | 32.75d |
| 100 |  | Firma contrato | 0d | 2009-06-02 09:00 | 2009-06-02 09:00 |  | 33d |
| 101 |  | Desplazamiento de los novios iglesia | 1h | 2009-06-02 09:00 | 2009-06-02 10:00 |  | 32.88d |
| 102 |  | Desplazamiento novios hotel noche bodas | 2h | 2009-06-02 09:00 | 2009-06-02 11:00 |  | 32.75d |
| 103 |  | Cierre del contrato | 0d | 2009-06-02 09:00 | 2009-06-02 09:00 |  | 33d |
| 104 | 8.2 | **Transporte invitados** | 0.75d | 2009-06-02 09:00 | 2009-06-02 17:00 |  | 32.25d |
| 105 |  | Concertar cita previa | 1h | 2009-06-02 09:00 | 2009-06-02 10:00 |  | 32.88d |
| 106 |  | Selección del tipo de vehículo | 1h | 2009-06-02 09:00 | 2009-06-02 10:00 |  | 32.88d |
| 107 |  | Determinación servicios a prestar | 1h | 2009-06-02 09:00 | 2009-06-02 10:00 |  | 32.88d |
| 108 |  | Firma del contrato | 0d | 2009-06-02 09:00 | 2009-06-02 09:00 |  | 33d |
| 109 |  | Servicio de transporte | 6h | 2009-06-02 09:00 | 2009-06-02 17:00 |  | 32.25d |
| 110 |  | Cierre de contrato | 0d | 2009-06-02 09:00 | 2009-06-02 09:00 |  | 33d |
| 111 | 9 | **Trámites administrativos** | 10.12d | 2009-06-02 09:00 | 2009-06-16 10:00 |  | 22.88d |
| 112 | 9.1 | **Iglesia** | 10.12d | 2009-06-02 09:00 | 2009-06-16 10:00 |  | 22.88d |
| 113 |  | Concertar cita previa párroco | 1h | 2009-06-02 09:00 | 2009-06-02 10:00 |  | 22.88d |
| 114 |  | Reserva fecha boda | 1h | 2009-06-02 10:00 | 2009-06-02 11:00 | 113 | 27.5d |
| 115 |  | Selección fechas cursos prematrimoniales | 1h | 2009-06-02 11:00 | 2009-06-02 12:00 | 114 | 27.5d |
| 116 |  | Obtención certificados bautismo | 10d | 2009-06-02 10:00 | 2009-06-16 10:00 | 113 | 22.88d |
| 117 |  | Realización cursos prematrimoniales | 5d | 2009-06-02 12:00 | 2009-06-09 12:00 | 115 | 27.5d |
| 118 |  | Entrega certificados | 1h | 2009-06-09 12:00 | 2009-06-09 13:00 | 117 | 27.5d |
| 119 |  | Limpieza iglesia | 2h | 2009-06-02 11:00 | 2009-06-02 13:00 | 114 | 32d |
| 120 |  | Celebración ceremonia | 2h | 2009-06-02 15:00 | 2009-06-02 17:00 | 119 | 32d |
| 121 |  | Recogida y limpieza iglesia | 2h | 2009-06-02 17:00 | 2009-06-02 19:00 | 120 | 32d |
| 122 |  | Iglesia recogida | 0d | 2009-06-02 19:00 | 2009-06-02 19:00 | 121 | 32d |
| 123 | 9.2 | **Recinto banquete** | 4.62d | 2009-06-02 09:00 | 2009-06-08 16:00 |  | 28.38d |
| 124 |  | Cita previa ayuntamiento | 1h | 2009-06-02 09:00 | 2009-06-02 10:00 |  | 28.38d |
| 125 |  | Obtención permiso celebración evento | 2d | 2009-06-02 10:00 | 2009-06-04 10:00 | 124 | 28.38d |
| 126 |  | Firma contrato uso recinto | 0d | 2009-06-04 10:00 | 2009-06-04 10:00 | 125 | 28.38d |
| 127 |  | Cita previa proveedor carpa | 1h | 2009-06-04 10:00 | 2009-06-04 11:00 | 126 | 28.38d |
| 128 |  | Selección carpa | 1h | 2009-06-04 11:00 | 2009-06-04 12:00 | 127 | 28.38d |
| 129 |  | Firma contrato proveedor carpa | 0d | 2009-06-04 12:00 | 2009-06-04 12:00 | 128 | 28.38d |
| 130 |  | Instalación carpa | 5h | 2009-06-04 12:00 | 2009-06-04 19:00 | 129 | 28.38d |
| 131 |  | Celebración evento | 8h | 2009-06-05 09:00 | 2009-06-05 19:00 | 130 | 28.38d |
| 132 |  | Retirada carpa | 5h | 2009-06-08 09:00 | 2009-06-08 16:00 | 131 | 28.38d |
| 133 |  | Cierre contrato ayuntamiento | 0d | 2009-06-08 16:00 | 2009-06-08 16:00 | 132 | 28.38d |
| 134 |  | Cierre contrato proveedor carpa | 0d | 2009-06-08 16:00 | 2009-06-08 16:00 | 133 | 28.38d |
| 135 | 10 | **Noche de bodas** | 1.38d | 2009-06-02 09:00 | 2009-06-03 12:00 |  | 31.62d |
| 136 |  | Selección destino noche bodas | 1h | 2009-06-02 09:00 | 2009-06-02 10:00 |  | 31.62d |
| 137 |  | Selección hotel | 1h | 2009-06-02 10:00 | 2009-06-02 11:00 | 136 | 31.62d |
| 138 |  | Reserva hotel | 1h | 2009-06-02 11:00 | 2009-06-02 12:00 | 137 | 31.62d |
| 139 |  | Firma contrato hotel | 0d | 2009-06-02 12:00 | 2009-06-02 12:00 | 138 | 31.62d |
| 140 |  | Noche de bodas hotel | 1d | 2009-06-02 12:00 | 2009-06-03 12:00 | 139 | 31.62d |

| ID | WBS | Task | Duration | Start | Finish | Predecessors | Total float |
| --- | --- | --- | --- | --- | --- | --- | --- |
| 141 |  | Cierre contrato hotel | 0d | 2009-06-03 12:00 | 2009-06-03 12:00 | 140 | 31.62d |
| 142 | 11 | **Organización banquete** | 3.5d? | 2009-06-02 09:00 | 2009-06-05 13:00 |  | 29.5d |
| 143 |  | Concerta cita previa restaurador | 1h | 2009-06-02 09:00 | 2009-06-02 10:00 |  | 29.5d |
| 144 |  | Selección menú boda | 2d | 2009-06-02 10:00 | 2009-06-04 10:00 | 143 | 29.5d |
| 145 |  | Prueba menú boda | 3h | 2009-06-04 10:00 | 2009-06-04 13:00 | 144 | 29.5d |
| 146 |  | Firma contrato restaurante | 0d | 2009-06-04 13:00 | 2009-06-04 13:00 | 145 | 29.5d |
| 147 |  | Selección servicio catering | 1h | 2009-06-02 09:00 | 2009-06-02 10:00 |  | 32.12d |
| 148 |  | Firma contrato catering | 0d | 2009-06-02 10:00 | 2009-06-02 10:00 | 147 | 32.12d |
| 149 |  | Servicio restaurante boda | 1d? | 2009-06-04 15:00 | 2009-06-05 13:00 | 146 | 29.5d |
| 150 |  | Servicio catering boda | 6h | 2009-06-02 10:00 | 2009-06-02 18:00 | 148 | 32.12d |
| 151 |  | Cierre contrato restaurante | 0d | 2009-06-05 13:00 | 2009-06-05 13:00 | 149 | 29.5d |
| 152 |  | Cierre contrato catering | 0d | 2009-06-02 18:00 | 2009-06-02 18:00 | 150 | 32.12d |

## Version 2 (saved 2009-06-04)

Last finish 2009-07-17 → 2009-08-17 (+31d).

Added:

| ID | Task | Duration | Start | Finish | Predecessors |
| --- | --- | --- | --- | --- | --- |
| 105 | Servicio transporte vuelta 1 | 3h | 2009-07-25 10:00 | 2009-07-25 13:00 | 104 |
| 106 | Servicio transporte vuelta 2 | 3h | 2009-07-25 15:00 | 2009-07-25 18:00 | 105 |

Removed: 23 Cierre contrato vestuario; 32 Pago de alianzas; 42 Pago de peluquería; 50 Pago servicio fotográfico; 61 Pago servicio floristería

Changed:

| ID | Task | Start | Finish | Duration | Total float | Predecessors | Other |
| --- | --- | --- | --- | --- | --- | --- | --- |
| 22 | Pago y cierre de vestuario |  |  |  | 0d → 22.12d |  | was named Pago de vestuario |
| 23 | **Anillos** |  |  | 33d? → 33d | 0d → 22.12d |  |  |
| 31 | Pago y Cierre contrato alianzas |  |  |  | 0d → 22.12d | Pago de alianzas → 30 | was named Cierre contrato alianzas; constraint none → start no earlier than 2009-07-17 09:00 |
| 32 | **Peinado y maquillaje** |  | 2009-06-03 12:00 → 2009-07-25 11:00 (+52d) | 1.38d → 39.25d | 31.62d → 15.88d |  | was named Peinado |
| 38 | Servicio pel/maq fotos estudio |  |  |  | 31.62d → 53.62d |  | was named Servicio peluquería fotos estudio |
| 39 | Servicio de peluquería/maquillaje | 2009-06-03 10:00 → 2009-07-25 09:00 (+52d) | 2009-06-03 12:00 → 2009-07-25 11:00 (+52d) |  | 31.62d → 15.88d |  | was named Servicio de peluquería; constraint none → start no earlier than 2009-07-25 09:00 |
| 40 | Pago y Cierre contrato peluquería/maq | 2009-06-03 12:00 → 2009-07-25 11:00 (+52d) | 2009-06-03 12:00 → 2009-07-25 11:00 (+52d) |  | 31.62d → 15.88d | Pago de peluquería → 39 | was named Cierre contrato peluquería |
| 41 | **Fotografía** |  | 2009-06-17 16:00 → 2009-08-17 10:00 (+61d) | 11.62d → 55.12d | 21.38d → 0d |  |  |
| 46 | Realización reportaje fotográfico | 2009-06-02 09:00 → 2009-07-25 09:00 (+53d) | 2009-06-02 13:00 → 2009-07-25 19:00 (+53d) | 4h → 8h | 32.5d → 15d | none → 44 | constraint none → start no earlier than 2009-07-25 09:00 |
| 47 | Entrega reportaje completo | 2009-06-17 16:00 → 2009-08-17 09:00 (+61d) | 2009-06-17 16:00 → 2009-08-17 10:00 (+61d) | 0d → 1h | 21.38d → 0d | Pago servicio fotográfico → 46, 45 | was named Entrega reportaje fotográfico; constraint none → start no earlier than 2009-08-15 09:00 |
| 48 | Pago y Cierre contrato fotógrafo | 2009-06-17 16:00 → 2009-08-17 10:00 (+61d) | 2009-06-17 16:00 → 2009-08-17 10:00 (+61d) |  | 21.38d → 0d |  | was named Cierre contrato fotógrafo |
| 49 | **Flores y decoración** |  | 2009-06-02 19:00 → 2009-07-28 09:00 (+56d) | 1d → 41d | 32d → 14.12d |  |  |
| 55 | Instalación decoración iglesia | 2009-06-02 16:00 → 2009-07-25 09:00 (+53d) | 2009-06-02 19:00 → 2009-07-25 19:00 (+53d) | 3h → 8h | 32d → 15.12d |  | constraint none → start no earlier than 2009-07-25 09:00 |
| 56 | Entrega ramo novia | 2009-06-02 19:00 → 2009-07-25 09:00 (+53d) | 2009-06-02 19:00 → 2009-07-25 09:00 (+53d) |  | 32d → 16.12d | 55 → 54 | constraint none → start no earlier than 2009-07-25 09:00 |
| 57 | Pago y Cierre contrato floristería | 2009-06-02 19:00 → 2009-07-28 09:00 (+56d) | 2009-06-02 19:00 → 2009-07-28 09:00 (+56d) |  | 32d → 14.12d | Pago servicio floristería → 56, 55 | was named Cierre contrato floristería; constraint none → start no earlier than 2009-07-28 09:00 |
| 58 | **Papelería y regalos** |  | 2009-06-17 13:00 → 2009-07-28 09:00 (+41d) | 11.5d → 41d | 21.5d → 2.5d |  |  |
| 77 | Pago y Cierre contrato papelería y regalos | 2009-06-17 13:00 → 2009-07-28 09:00 (+41d) | 2009-06-17 13:00 → 2009-07-28 09:00 (+41d) |  | 21.5d → 14.12d |  | constraint none → start no earlier than 2009-07-28 09:00 |
| 78 | **Orquesta y música** |  | 2009-06-04 16:00 → 2009-07-31 09:00 (+57d) | 2.62d → 44d | 30.38d → 11.12d |  |  |
| 79 | **Música ceremonia** |  | 2009-06-03 11:00 → 2009-07-28 09:00 (+55d) | 1.25d → 41d | 31.75d → 14.12d |  |  |
| 83 | Actuación día boda | 2009-06-03 10:00 → 2009-07-25 09:00 (+52d) | 2009-06-03 11:00 → 2009-07-25 19:00 (+52d) | 1h → 8h | 31.75d → 15.12d |  | constraint none → start no earlier than 2009-07-25 09:00 |
| 84 | Pago y Cierre contrato grupo | 2009-06-03 11:00 → 2009-07-28 09:00 (+55d) | 2009-06-03 11:00 → 2009-07-28 09:00 (+55d) |  | 31.75d → 14.12d |  | constraint none → start no earlier than 2009-07-28 09:00 |
| 85 | **Música banquete** |  | 2009-06-04 16:00 → 2009-07-31 09:00 (+57d) | 2.62d → 44d | 30.38d → 11.12d |  |  |
| 89 | Actuación día boda | 2009-06-04 10:00 → 2009-07-25 09:00 (+51d) | 2009-06-04 16:00 → 2009-07-25 17:00 (+51d) | 4h → 6h | 30.38d → 15.38d |  | constraint none → start no earlier than 2009-07-25 09:00 |
| 90 | Pago y Cierre contrato música | 2009-06-04 16:00 → 2009-07-31 09:00 (+57d) | 2009-06-04 16:00 → 2009-07-31 09:00 (+57d) |  | 30.38d → 11.12d |  | constraint none → start no earlier than 2009-07-31 09:00 |
| 91 | **Transporte** |  | 2009-06-02 17:00 → 2009-07-31 09:00 (+59d) | 0.75d → 44d | 32.25d → 11.12d |  |  |
| 92 | **Transporte novios** |  | 2009-06-02 11:00 → 2009-07-31 09:00 (+59d) | 0.25d → 44d | 32.75d → 11.12d |  |  |
| 94 | Selección del tipo de transporte | 2009-06-02 09:00 → 2009-06-02 10:00 | 2009-06-02 11:00 → 2009-06-02 12:00 |  | 32.75d → 53.5d | none → 93 |  |
| 95 | Firma contrato | 2009-06-02 09:00 → 2009-06-02 12:00 | 2009-06-02 09:00 → 2009-06-02 12:00 |  | 33d → 53.5d | none → 94 |  |
| 96 | Desplazamiento de los novios iglesia | 2009-06-02 09:00 → 2009-07-25 09:00 (+53d) | 2009-06-02 10:00 → 2009-07-25 19:00 (+53d) | 1h → 8h | 32.88d → 14.88d | none → 95 | constraint none → start no earlier than 2009-07-25 09:00 |
| 97 | Desplazamiento novios hotel noche bodas | 2009-06-02 09:00 → 2009-07-27 09:00 (+55d) | 2009-06-02 11:00 → 2009-07-27 11:00 (+55d) |  | 32.75d → 14.88d | none → 96 |  |
| 98 | Pago y Cierre del contrato | 2009-06-02 09:00 → 2009-07-31 09:00 (+59d) | 2009-06-02 09:00 → 2009-07-31 09:00 (+59d) |  | 33d → 11.12d | none → 97 | was named Cierre del contrato; constraint none → start no earlier than 2009-07-31 09:00 |
| 99 | **Transporte invitados** |  | 2009-06-02 17:00 → 2009-07-31 09:00 (+59d) | 0.75d → 44d | 32.25d → 11.12d |  |  |
| 101 | Selección del tipo de vehículo | 2009-06-02 09:00 → 2009-06-02 10:00 | 2009-06-02 10:00 → 2009-06-02 11:00 |  | 32.88d → 53.88d | none → 100 |  |
| 102 | Determinación servicios a prestar | 2009-06-02 09:00 → 2009-06-02 11:00 | 2009-06-02 10:00 → 2009-06-02 12:00 |  | 32.88d → 53.88d | none → 101 |  |
| 103 | Firma del contrato | 2009-06-02 09:00 → 2009-06-02 12:00 | 2009-06-02 09:00 → 2009-06-02 12:00 |  | 33d → 53.88d | none → 102 |  |
| 104 | Servicio de transporte ida | 2009-06-02 09:00 → 2009-07-25 09:00 (+53d) | 2009-06-02 17:00 → 2009-07-25 10:00 (+53d) | 6h → 1h | 32.25d → 15.25d | none → 103 | was named Servicio de transporte; constraint none → start no earlier than 2009-07-25 09:00 |
| 107 | Pago y Cierre de contrato | 2009-06-02 09:00 → 2009-07-31 09:00 (+59d) | 2009-06-02 09:00 → 2009-07-31 09:00 (+59d) |  | 33d → 11.12d | none → 106, 104 | was named Cierre de contrato; constraint none → start no earlier than 2009-07-31 09:00 |
| 108 | **Trámites administrativos** |  | 2009-06-16 10:00 → 2009-07-27 19:00 (+41d) | 10.12d → 41d | 22.88d → 14.12d |  |  |
| 109 | **Iglesia** |  | 2009-06-16 10:00 → 2009-07-27 19:00 (+41d) | 10.12d → 41d | 22.88d → 14.12d |  |  |
| 115 | Entrega certificados | 2009-06-09 12:00 → 2009-06-16 10:00 (+7d) | 2009-06-09 13:00 → 2009-06-16 11:00 (+7d) |  | 27.5d → 18.75d | 114 → 114, 113 |  |
| 116 | Limpieza iglesia | 2009-06-02 11:00 → 2009-07-24 09:00 (+52d) | 2009-06-02 13:00 → 2009-07-24 19:00 (+52d) | 2h → 8h | 32d → 14.88d |  | constraint none → start no earlier than 2009-07-24 09:00 |
| 117 | Celebración ceremonia | 2009-06-02 15:00 → 2009-07-25 09:00 (+53d) | 2009-06-02 17:00 → 2009-07-25 11:00 (+53d) |  | 32d → 14.88d |  |  |
| 118 | Recogida y limpieza iglesia | 2009-06-02 17:00 → 2009-07-27 09:00 (+55d) | 2009-06-02 19:00 → 2009-07-27 19:00 (+55d) | 2h → 8h | 32d → 14.12d |  | constraint none → start no earlier than 2009-07-26 09:00 |
| 119 | Iglesia recogida | 2009-06-02 19:00 → 2009-07-27 19:00 (+55d) | 2009-06-02 19:00 → 2009-07-27 19:00 (+55d) |  | 32d → 14.12d |  |  |
| 120 | **Recinto banquete** |  | 2009-06-08 16:00 → 2009-07-27 16:00 (+49d) | 4.62d → 40.62d | 28.38d → 14.5d |  |  |
| 127 | Instalación carpa | 2009-06-04 12:00 → 2009-07-24 09:00 (+50d) | 2009-06-04 19:00 → 2009-07-24 19:00 (+50d) | 5h → 8h | 28.38d → 14.5d |  | constraint none → start no earlier than 2009-07-24 09:00 |
| 128 | Celebración evento | 2009-06-05 09:00 → 2009-07-25 09:00 (+50d) | 2009-06-05 19:00 → 2009-07-25 19:00 (+50d) |  | 28.38d → 14.5d |  |  |
| 129 | Retirada carpa | 2009-06-08 09:00 → 2009-07-27 09:00 (+49d) | 2009-06-08 16:00 → 2009-07-27 16:00 (+49d) |  | 28.38d → 14.5d |  |  |
| 130 | Cierre contrato ayuntamiento | 2009-06-08 16:00 → 2009-07-27 16:00 (+49d) | 2009-06-08 16:00 → 2009-07-27 16:00 (+49d) |  | 28.38d → 14.5d |  |  |
| 131 | Cierre contrato proveedor carpa | 2009-06-08 16:00 → 2009-07-27 16:00 (+49d) | 2009-06-08 16:00 → 2009-07-27 16:00 (+49d) |  | 28.38d → 14.5d | 130 → 129 |  |
| 132 | **Organización banquete** |  | 2009-06-05 13:00 → 2009-07-31 09:00 (+56d) | 3.5d? → 44d | 29.5d → 11.12d |  |  |
| 139 | Servicio restaurante boda | 2009-06-04 15:00 → 2009-07-25 09:00 (+51d) | 2009-06-05 13:00 → 2009-07-25 19:00 (+50d) | 1d? → 8h | 29.5d → 15.12d |  | constraint none → start no earlier than 2009-07-25 09:00 |
| 140 | Servicio catering boda | 2009-06-02 10:00 → 2009-07-25 09:00 (+53d) | 2009-06-02 18:00 → 2009-07-25 19:00 (+53d) | 6h → 8h | 32.12d → 15.12d |  | constraint none → start no earlier than 2009-07-25 09:00 |
| 141 | Pago y Cierre contrato restaurante | 2009-06-05 13:00 → 2009-07-31 09:00 (+56d) | 2009-06-05 13:00 → 2009-07-31 09:00 (+56d) |  | 29.5d → 11.12d |  | was named Cierre contrato restaurante; constraint none → start no earlier than 2009-07-31 09:00 |
| 142 | Pago y Cierre contrato catering | 2009-06-02 18:00 → 2009-07-31 09:00 (+59d) | 2009-06-02 18:00 → 2009-07-31 09:00 (+59d) |  | 32.12d → 11.12d |  | was named Cierre contrato catering; constraint none → start no earlier than 2009-07-31 09:00 |
| 143 | **Noche de bodas** |  | 2009-06-03 12:00 → 2009-07-31 09:00 (+58d) | 1.38d → 44d | 31.62d → 11.12d |  |  |
| 148 | Noche de bodas hotel | 2009-06-02 12:00 → 2009-07-24 09:00 (+52d) | 2009-06-03 12:00 → 2009-07-26 19:00 (+53d) | 1d → 2d | 31.62d → 15.12d |  | constraint none → finish no earlier than 2009-07-26 19:00 |
| 149 | Cierre contrato hotel | 2009-06-03 12:00 → 2009-07-31 09:00 (+58d) | 2009-06-03 12:00 → 2009-07-31 09:00 (+58d) |  | 31.62d → 11.12d |  | constraint none → start no earlier than 2009-07-31 09:00 |

## Version 3 (saved 2009-06-05)

Last finish 2009-08-17 → 2009-08-15 (-2d).

Changed:

| ID | Task | Start | Finish | Duration | Total float | Other |
| --- | --- | --- | --- | --- | --- | --- |
| 1 | **Vestuario** |  | 2009-07-17 09:00 → 2009-07-17 19:00 | 33d → 34d | 22.12d → 15.88d |  |
| 2 | **Vestuario del novio** | 2009-06-02 09:00 → 2009-06-02 15:00 | 2009-06-12 11:00 → 2009-06-20 10:00 (+8d) | 8.25d → 13.5d | 25.75d → 18.38d |  |
| 3 | Concertar cita previa | 2009-06-02 09:00 → 2009-06-02 15:00 | 2009-06-02 10:00 → 2009-06-02 16:00 |  | 25.75d → 18.38d | resources none → Organizador |
| 4 | Selección de posibilidades | 2009-06-02 10:00 → 2009-06-08 19:00 (+6d) | 2009-06-02 13:00 → 2009-06-09 19:00 (+7d) |  | 25.75d → 19d | resources none → Novio |
| 5 | Elección traje definitivo | 2009-06-02 15:00 → 2009-06-09 19:00 (+7d) | 2009-06-02 18:00 → 2009-06-10 19:00 (+8d) |  | 25.75d → 19d | resources none → Novio |
| 6 | Selección de complementos | 2009-06-02 18:00 → 2009-06-10 19:00 (+8d) | 2009-06-02 19:00 → 2009-06-10 20:00 (+8d) |  | 25.75d → 19d | resources none → Novio |
| 7 | Elección definitiva de complementos | 2009-06-03 09:00 → 2009-06-10 20:00 (+7d) | 2009-06-03 10:00 → 2009-06-10 21:00 (+7d) |  | 25.75d → 19d | resources none → Novio |
| 8 | Firma de contrato modista | 2009-06-03 10:00 → 2009-06-10 21:00 (+7d) | 2009-06-03 10:00 → 2009-06-10 21:00 (+7d) |  | 25.75d → 19d | resources none → Organizador |
| 9 | Realización de arreglos | 2009-06-03 10:00 → 2009-06-11 09:00 (+8d) | 2009-06-12 10:00 → 2009-06-19 19:00 (+7d) |  | 25.75d → 19d |  |
| 10 | Prueba de arreglos | 2009-06-12 10:00 → 2009-06-20 09:00 (+8d) | 2009-06-12 11:00 → 2009-06-20 10:00 (+8d) |  | 25.75d → 19.88d | resources none → Novio |
| 11 | Entrega del traje | 2009-06-12 11:00 → 2009-06-20 10:00 (+8d) | 2009-06-12 11:00 → 2009-06-20 10:00 (+8d) |  | 25.75d → 20d | resources none → Novio; Organizador; Traje novio |
| 12 | **Vestuario de la novia** |  | 2009-06-17 12:00 → 2009-06-25 20:00 (+8d) | 11.38d → 18d | 22.62d → 15.88d |  |
| 13 | Concertar cita previa |  |  |  | 22.62d → 15.88d | resources none → Organizador |
| 14 | Selección de posibilidades | 2009-06-02 10:00 → 2009-06-08 19:00 (+6d) | 2009-06-02 16:00 → 2009-06-09 20:00 (+7d) |  | 22.62d → 15d | resources none → Novia |
| 15 | Elección traje definitivo | 2009-06-02 16:00 → 2009-06-09 20:00 (+7d) | 2009-06-02 19:00 → 2009-06-10 20:00 (+8d) |  | 22.62d → 15d | resources none → Novia |
| 16 | Selección de complementos | 2009-06-03 09:00 → 2009-06-10 20:00 (+7d) | 2009-06-03 10:00 → 2009-06-10 21:00 (+7d) |  | 22.62d → 15.88d | resources none → Novia |
| 17 | Elección definitiva de complementos | 2009-06-03 10:00 → 2009-06-11 19:00 (+8d) | 2009-06-03 11:00 → 2009-06-11 20:00 (+8d) |  | 22.62d → 15d | resources none → Novia |
| 18 | Firma de contrato modista | 2009-06-03 11:00 → 2009-06-11 20:00 (+8d) | 2009-06-03 11:00 → 2009-06-11 20:00 (+8d) |  | 22.62d → 15.88d | resources none → Organizador |
| 19 | Realización de arreglos | 2009-06-03 11:00 → 2009-06-12 09:00 (+9d) | 2009-06-17 11:00 → 2009-06-25 19:00 (+8d) |  | 22.62d → 15.88d |  |
| 20 | Prueba de arregos | 2009-06-17 11:00 → 2009-06-25 19:00 (+8d) | 2009-06-17 12:00 → 2009-06-25 20:00 (+8d) |  | 22.62d → 15.88d | resources none → Novia |
| 21 | Entrega del traje | 2009-06-17 12:00 → 2009-06-25 20:00 (+8d) | 2009-06-17 12:00 → 2009-06-25 20:00 (+8d) |  | 22.62d → 16d | resources none → Novia; Organizador; Traje novia |
| 22 | Pago y cierre de vestuario |  | 2009-07-17 09:00 → 2009-07-17 19:00 |  | 22.12d → 21d | resources none → Organizador; Traje novia; Traje novio |
| 23 | **Anillos** | 2009-06-02 09:00 → 2009-06-02 16:00 | 2009-07-17 09:00 → 2009-07-17 19:00 | 33d → 33.38d | 22.12d → 4.25d |  |
| 24 | Concertar cita previa | 2009-06-02 09:00 → 2009-06-02 16:00 | 2009-06-02 10:00 → 2009-06-02 17:00 |  | 26.38d → 4.25d | resources none → Organizador |
| 25 | Selección de posiblidades | 2009-06-02 10:00 → 2009-06-11 19:00 (+9d) | 2009-06-02 12:00 → 2009-06-12 19:00 (+10d) | 2h → 3h | 26.38d → 4d | resources none → Novia; Novio |
| 26 | Elección modelo definitivo | 2009-06-02 12:00 → 2009-06-12 19:00 (+10d) | 2009-06-02 13:00 → 2009-06-18 20:00 (+16d) | 1h → 2h | 26.38d → 4d | resources none → Novio; Novia |
| 27 | Firma de contrato joyería | 2009-06-02 13:00 → 2009-06-18 20:00 (+16d) | 2009-06-02 13:00 → 2009-06-18 20:00 (+16d) |  | 26.38d → 4d | resources none → Organizador |
| 28 | Arreglos y grabados | 2009-06-02 15:00 → 2009-06-19 09:00 (+17d) | 2009-06-11 13:00 → 2009-06-29 19:00 (+18d) |  | 26.38d → 4d |  |
| 29 | Prueba de arregos | 2009-06-11 15:00 → 2009-06-29 19:00 (+18d) | 2009-06-11 16:00 → 2009-07-11 12:00 (+30d) | 1h → 2h | 26.38d → 4d | resources none → Novio; Novia; Alianzas |
| 30 | Entrega de alianzas | 2009-06-11 16:00 → 2009-07-11 12:00 (+30d) | 2009-06-11 16:00 → 2009-07-11 12:00 (+30d) |  | 26.38d → 5d | resources none → Novia; Novio; Alianzas |
| 31 | Pago y Cierre contrato alianzas |  | 2009-07-17 09:00 → 2009-07-17 19:00 |  | 22.12d → 21d | resources none → Organizador; Alianzas |
| 32 | **Peinado y maquillaje** | 2009-06-02 09:00 → 2009-06-19 18:00 (+17d) | 2009-07-25 11:00 → 2009-07-28 18:20 (+3d) | 39.25d → 28.04d | 15.88d → 13.08d |  |
| 33 | Concertar cita previa | 2009-06-02 09:00 → 2009-06-19 18:00 (+17d) | 2009-06-02 10:00 → 2009-06-19 19:00 (+17d) |  | 53.62d → 15d | resources none → Organizador |
| 34 | Selección de posiblidades | 2009-06-02 10:00 → 2009-06-20 12:00 (+18d) | 2009-06-02 11:00 → 2009-06-20 13:00 (+18d) |  | 53.62d → 16d | resources none → Novia |
| 35 | Prueba de posiblidades | 2009-06-02 11:00 → 2009-07-18 10:00 (+46d) | 2009-06-02 17:00 → 2009-07-20 19:00 (+48d) |  | 53.62d → 16d | resources none → Novia |
| 36 | Selección de peinado definitivo | 2009-06-02 17:00 → 2009-07-20 20:00 (+48d) | 2009-06-02 18:00 → 2009-07-20 21:00 (+48d) |  | 53.62d → 16.88d | resources none → Novia |
| 37 | Firma de contrato peinado | 2009-06-02 18:00 → 2009-07-20 21:00 (+48d) | 2009-06-02 18:00 → 2009-07-20 21:00 (+48d) |  | 53.62d → 17d | resources none → Organizador |
| 38 | Servicio pel/maq fotos estudio | 2009-06-02 18:00 → 2009-07-21 18:00 (+49d) | 2009-06-03 10:00 → 2009-07-21 20:00 (+48d) |  | 53.62d → 16d | resources none → Peluquería/Maquillaje; Novia |
| 39 | Servicio de peluquería/maquillaje | 2009-07-25 09:00 → 2009-07-27 19:20 (+2d) | 2009-07-25 11:00 → 2009-07-28 18:20 (+3d) |  | 15.88d → 13.08d | resources none → Peluquería/Maquillaje; Novia |
| 40 | Pago y Cierre contrato peluquería/maq | 2009-07-25 11:00 → 2009-07-28 18:20 (+3d) | 2009-07-25 11:00 → 2009-07-28 18:20 (+3d) |  | 15.88d → 13.08d | resources none → Organizador; Peluquería/Maquillaje |
| 41 | **Fotografía** | 2009-06-02 09:00 → 2009-07-10 12:00 (+38d) | 2009-08-17 10:00 → 2009-08-15 10:00 (-2d) | 55.12d → 26.62d |  |  |
| 42 | Concertar cita previa | 2009-06-02 09:00 → 2009-07-10 12:00 (+38d) | 2009-06-02 10:00 → 2009-07-10 13:00 (+38d) |  | 53.75d → 21.5d | resources none → Organizador |
| 43 | Selección de album | 2009-06-02 10:00 → 2009-07-13 20:00 (+41d) | 2009-06-02 11:00 → 2009-07-14 20:00 (+42d) | 1h → 2h | 53.75d → 22.96d | resources none → Novio; Novia |
| 44 | Firma contrato fotógrafo | 2009-06-02 11:00 → 2009-07-14 20:00 (+42d) | 2009-06-02 11:00 → 2009-07-14 20:00 (+42d) |  | 53.75d → 22.96d | resources none → Organizador |
| 45 | Realización fotos estudio | 2009-06-17 12:00 → 2009-07-21 20:00 (+34d) | 2009-06-17 16:00 → 2009-07-22 19:00 (+35d) |  | 43.38d → 18d | resources none → Novio; Novia |
| 46 | Realización reportaje fotográfico |  | 2009-07-25 19:00 → 2009-07-27 19:20 (+2d) | 8h → 6.67h | 15d → 14d | resources none → Novio; Novia; Reportaje fotográfico |
| 47 | Entrega reportaje completo | 2009-08-17 09:00 → 2009-08-15 09:00 (-2d) | 2009-08-17 10:00 → 2009-08-15 10:00 (-2d) |  |  | resources none → Novio; Novia; Album fotográfico |
| 48 | Pago y Cierre contrato fotógrafo | 2009-08-17 10:00 → 2009-08-15 10:00 (-2d) | 2009-08-17 10:00 → 2009-08-15 10:00 (-2d) |  |  | resources none → Organizador; Album fotográfico; Reportaje fotográfico |
| 49 | **Flores y decoración** | 2009-06-02 09:00 → 2009-07-10 15:00 (+38d) |  | 41d → 12.5d | 14.12d → 14d |  |
| 50 | Concertar cita previa | 2009-06-02 09:00 → 2009-07-10 15:00 (+38d) | 2009-06-02 10:00 → 2009-07-10 16:00 (+38d) |  | 53.5d → 17.38d | resources none → Organizador |
| 51 | Selección del tipo de decoración | 2009-06-02 10:00 → 2009-07-14 18:00 (+42d) | 2009-06-02 12:00 → 2009-07-15 19:00 (+43d) | 2h → 4h | 53.5d → 18d | resources none → Novio; Novia |
| 52 | Selección tipo plantas | 2009-06-02 12:00 → 2009-07-15 19:00 (+43d) | 2009-06-02 13:00 → 2009-07-18 10:00 (+46d) | 1h → 2h | 53.5d → 18d | resources none → Novio; Novia |
| 53 | Selección ramo novia | 2009-06-02 15:00 → 2009-07-18 10:00 (+46d) | 2009-06-02 16:00 → 2009-07-20 20:00 (+48d) | 1h → 2h | 53.5d → 19d | resources none → Novio; Novia |
| 54 | Firma contrato floristería | 2009-06-02 16:00 → 2009-07-20 20:00 (+48d) | 2009-06-02 16:00 → 2009-07-20 20:00 (+48d) |  | 53.5d → 19d | resources none → Novio; Novia |
| 55 | Instalación decoración iglesia |  |  |  | 15.12d → 15d | resources none → Instalación decoración floral [1%] |
| 56 | Entrega ramo novia |  |  |  | 16.12d → 16d | resources none → Ramo novia; Novia |
| 57 | Pago y Cierre contrato floristería |  |  |  | 14.12d → 14d | resources none → Organizador; Flores elegidas |
| 58 | **Papelería y regalos** | 2009-06-02 09:00 → 2009-06-02 18:00 |  | 41d → 40.12d | 2.5d → 0d |  |
| 59 | **Invitaciones** | 2009-06-02 09:00 → 2009-06-02 19:00 | 2009-06-17 13:00 → 2009-06-22 19:00 (+5d) | 11.5d → 14d | 2.5d → -1d |  |
| 60 | Elaboración lista invitados | 2009-06-02 09:00 → 2009-06-02 19:00 | 2009-06-03 19:00 → 2009-06-08 19:00 (+5d) |  | 2.5d → -1d | resources none → Novio; Novia |
| 61 | Elaboración lista bodas | 2009-06-04 09:00 → 2009-06-09 09:00 (+5d) | 2009-06-05 19:00 → 2009-06-10 19:00 (+5d) |  | 2.5d → -0.38d |  |
| 62 | Concertar cita previa | 2009-06-08 09:00 → 2009-06-11 09:00 (+3d) | 2009-06-08 10:00 → 2009-06-11 10:00 (+3d) |  | 2.5d → -0.38d | resources none → Organizador |
| 63 | Selección tipo invitación | 2009-06-08 10:00 → 2009-06-11 10:00 (+3d) | 2009-06-08 12:00 → 2009-06-11 12:00 (+3d) |  | 2.5d → -0.38d |  |
| 64 | Selección texto invitación | 2009-06-08 12:00 → 2009-06-11 18:00 (+3d) | 2009-06-08 13:00 → 2009-06-11 19:00 (+3d) |  | 2.5d → -1d | resources none → Novio; Novia |
| 65 | Firma contrato papelería | 2009-06-08 13:00 → 2009-06-11 19:00 (+3d) | 2009-06-08 13:00 → 2009-06-11 19:00 (+3d) |  | 2.5d → -1d | resources none → Organizador |
| 66 | Envío invitaciones | 2009-06-08 15:00 → 2009-06-12 09:00 (+4d) | 2009-06-17 13:00 → 2009-06-22 19:00 (+5d) |  | 2.5d → -1d | resources none → Invitaciones boda; Envio Invitaciones |
| 67 | **Regalo madrina** | 2009-06-02 09:00 → 2009-06-02 18:00 | 2009-06-11 11:00 → 2009-07-01 11:00 (+20d) | 7.25d → 20.38d | 31.75d → 17.75d |  |
| 68 | Concertar cita previa | 2009-06-02 09:00 → 2009-06-02 18:00 | 2009-06-02 10:00 → 2009-06-02 19:00 |  | 31.75d → 18d | resources none → Organizador |
| 69 | Selección regalo | 2009-06-02 10:00 → 2009-06-19 19:00 (+17d) | 2009-06-02 11:00 → 2009-06-19 21:00 (+17d) | 1h → 2h | 31.75d → 18d | resources none → Novio; Novia |
| 70 | Firma contrato regalos madrina | 2009-06-02 11:00 → 2009-06-19 21:00 (+17d) | 2009-06-02 11:00 → 2009-06-19 21:00 (+17d) |  | 31.75d → 18d | resources none → Organizador |

| ID | Task | Start | Finish | Duration | Total float | Predecessors | Other |
| --- | --- | --- | --- | --- | --- | --- | --- |
| 71 | Entrega regalos madrina | 2009-06-02 11:00 → 2009-06-22 11:00 (+20d) | 2009-06-11 11:00 → 2009-07-01 11:00 (+20d) |  | 31.75d → 17.75d |  | resources none → Organizador; Regalos madrina |
| 72 | **Regalo padrino** | 2009-06-02 09:00 → 2009-06-03 09:00 (+1d) | 2009-06-11 11:00 → 2009-07-10 11:00 (+29d) | 7.25d → 27.25d | 31.75d → 10.75d |  |  |
| 73 | Concertar cita previa | 2009-06-02 09:00 → 2009-06-03 09:00 (+1d) | 2009-06-02 10:00 → 2009-06-03 10:00 (+1d) |  | 31.75d → 12.88d |  | resources none → Organizador |
| 74 | Selección regalo | 2009-06-02 10:00 → 2009-06-19 20:00 (+17d) | 2009-06-02 11:00 → 2009-06-20 10:00 (+18d) | 1h → 2h | 31.75d → 11d |  | resources none → Novio; Novia |
| 75 | Firma contrato regalo padrino | 2009-06-02 11:00 → 2009-06-20 10:00 (+18d) | 2009-06-02 11:00 → 2009-06-20 10:00 (+18d) |  | 31.75d → 11d |  | resources none → Organizador |
| 76 | Entrega regalos padrino | 2009-06-02 11:00 → 2009-07-01 11:00 (+29d) | 2009-06-11 11:00 → 2009-07-10 11:00 (+29d) |  | 31.75d → 10.75d |  | resources none → Organizador; Regalos padrino |
| 77 | Pago y Cierre contrato papelería y regalos |  |  |  | 14.12d → 14d |  | resources none → Organizador |
| 78 | **Orquesta y música** | 2009-06-02 09:00 → 2009-06-19 17:00 (+17d) |  | 44d → 30.25d | 11.12d → 11d |  |  |
| 79 | **Música ceremonia** | 2009-06-02 09:00 → 2009-07-10 11:00 (+38d) |  | 41d → 12.75d | 14.12d → 14d |  |  |
| 80 | Concertar cita previa | 2009-06-02 09:00 → 2009-07-10 11:00 (+38d) | 2009-06-02 10:00 → 2009-07-10 12:00 (+38d) |  | 53d → 20.5d |  | resources none → Organizador |
| 81 | Selección repertorio | 2009-06-02 10:00 → 2009-07-14 20:00 (+42d) | 2009-06-03 10:00 → 2009-07-17 21:00 (+44d) | 1d → 1.25d | 53d → 20d |  | resources none → Novia; Novio |
| 82 | Firma contrato música ceremonia | 2009-06-03 10:00 → 2009-07-17 21:00 (+44d) | 2009-06-03 10:00 → 2009-07-17 21:00 (+44d) |  | 53d → 20d |  | resources none → Organizador |
| 83 | Actuación día boda |  |  |  | 15.12d → 15d |  | resources none → Música ceremonia |
| 84 | Pago y Cierre contrato grupo |  |  |  | 14.12d → 14d |  | resources none → Organizador |
| 85 | **Música banquete** | 2009-06-02 09:00 → 2009-06-19 17:00 (+17d) |  | 44d → 30.25d | 11.12d → 11d |  |  |
| 86 | Concertar cita previa | 2009-06-02 09:00 → 2009-06-19 17:00 (+17d) | 2009-06-02 10:00 → 2009-06-19 18:00 (+17d) |  | 52.25d → 23.12d |  | resources none → Organizador |
| 87 | Selección tipo música | 2009-06-02 10:00 → 2009-06-20 12:00 (+18d) | 2009-06-04 10:00 → 2009-07-11 13:00 (+37d) | 2d → 2.25d | 52.25d → 24d |  | resources none → Novio; Novia |
| 88 | Firma contrato música banquete | 2009-06-04 10:00 → 2009-07-11 13:00 (+37d) | 2009-06-04 10:00 → 2009-07-11 13:00 (+37d) |  | 52.25d → 25.25d |  | resources none → Organizador |
| 89 | Actuación día boda |  |  |  | 15.38d → 15.25d |  | resources none → Música banquete |
| 90 | Pago y Cierre contrato música |  |  |  | 11.12d → 11d |  | resources none → Organizador |
| 91 | **Transporte** | 2009-06-02 09:00 → 2009-07-10 16:00 (+38d) |  | 44d → 15.38d | 11.12d → 11d |  |  |
| 92 | **Transporte novios** | 2009-06-02 09:00 → 2009-07-10 16:00 (+38d) |  | 44d → 15.38d | 11.12d → 11d |  |  |
| 93 | Concertar cita previa | 2009-06-02 09:00 → 2009-07-10 16:00 (+38d) | 2009-06-02 10:00 → 2009-07-10 17:00 (+38d) |  | 53.5d → 21.25d |  | resources none → Organizador |
| 94 | Selección del tipo de transporte | 2009-06-02 10:00 → 2009-07-13 18:00 (+41d) | 2009-06-02 12:00 → 2009-07-14 19:00 (+42d) | 2h → 4h | 53.5d → 22d |  | resources none → Novio; Novia |
| 95 | Firma contrato | 2009-06-02 12:00 → 2009-07-14 19:00 (+42d) | 2009-06-02 12:00 → 2009-07-14 19:00 (+42d) |  | 53.5d → 22.75d |  | resources none → Organizador |
| 96 | Desplazamiento de los novios iglesia |  |  |  | 14.88d → 14.75d |  | resources none → Alquiler vehículo novios |
| 97 | Desplazamiento novios hotel noche bodas |  |  |  | 14.88d → 14.75d |  | resources none → Alquiler vehículo novios |
| 98 | Pago y Cierre del contrato |  |  |  | 11.12d → 11d |  | resources none → Organizador |
| 99 | **Transporte invitados** | 2009-06-02 09:00 → 2009-07-10 17:00 (+38d) |  | 44d → 15.25d | 11.12d → 11d |  |  |
| 100 | Concertar cita previa | 2009-06-02 09:00 → 2009-07-10 17:00 (+38d) | 2009-06-02 10:00 → 2009-07-10 18:00 (+38d) |  | 53.88d → 23d |  | resources none → Organizador |
| 101 | Selección del tipo de vehículo | 2009-06-02 10:00 → 2009-07-10 18:00 (+38d) | 2009-06-02 11:00 → 2009-07-13 20:00 (+41d) | 1h → 3h | 53.88d → 23d |  | resources none → Novia; Novio; Organizador |
| 102 | Determinación servicios a prestar | 2009-06-02 11:00 → 2009-07-14 09:00 (+42d) | 2009-06-02 12:00 → 2009-07-14 10:00 (+42d) |  | 53.88d → 24d |  | resources none → Organizador |
| 103 | Firma del contrato | 2009-06-02 12:00 → 2009-07-14 10:00 (+42d) | 2009-06-02 12:00 → 2009-07-14 10:00 (+42d) |  | 53.88d → 24d |  | resources none → Organizador |
| 104 | Servicio de transporte ida |  |  |  | 15.25d → 15.12d |  | resources none → Alquiler vehículo invitados |
| 105 | Servicio transporte vuelta 1 |  |  |  | 15.25d → 15.12d |  | constraint none → start no earlier than 2009-07-25 09:00; resources none → Alquiler vehículo invitados |
| 106 | Servicio transporte vuelta 2 |  |  |  | 15.25d → 15.12d |  | constraint none → start no earlier than 2009-07-25 09:00; resources none → Alquiler vehículo invitados |
| 107 | Pago y Cierre de contrato |  |  |  | 11.12d → 11d | 106, 104 → 106 | resources none → Organizador |
| 108 | **Trámites administrativos** | 2009-06-02 09:00 → 2009-06-02 10:00 |  | 41d → 40.88d | 14.12d → 14d |  |  |
| 109 | **Iglesia** | 2009-06-02 09:00 → 2009-06-02 10:00 |  | 41d → 40.88d | 14.12d → 14d |  |  |
| 110 | Concertar cita previa párroco | 2009-06-02 09:00 → 2009-06-02 10:00 | 2009-06-02 10:00 → 2009-06-02 11:00 |  | 18.75d → 20.5d |  | resources none → Organizador |
| 111 | Reserva fecha boda | 2009-06-02 10:00 → 2009-06-02 11:00 | 2009-06-02 11:00 → 2009-06-02 12:00 |  | 23.5d → 20.5d |  | resources none → Organizador |
| 112 | Selección fechas cursos prematrimoniales | 2009-06-02 11:00 → 2009-06-02 12:00 | 2009-06-02 12:00 → 2009-06-02 19:00 | 1h → 2h | 23.5d → 20d |  | resources none → Novio; Novia; Organizador |
| 113 | Obtención certificados bautismo | 2009-06-02 10:00 → 2009-06-03 11:00 (+1d) | 2009-06-16 10:00 → 2009-06-17 12:00 (+1d) |  | 18.75d → 22.5d |  | resources none → Organizador |
| 114 | Realización cursos prematrimoniales | 2009-06-02 12:00 → 2009-06-26 18:00 (+24d) | 2009-06-09 12:00 → 2009-07-13 19:00 (+34d) | 5d → 5.12d | 23.5d → 2.12d |  | constraint none → start no earlier than 2009-06-26 09:00; resources none → Novio; Novia |
| 115 | Entrega certificados | 2009-06-16 10:00 → 2009-07-14 09:00 (+28d) | 2009-06-16 11:00 → 2009-07-14 10:00 (+28d) |  | 18.75d → 3.88d |  |  |
| 116 | Limpieza iglesia |  |  |  | 14.88d → 14.75d |  | resources none → Servicio limpieza |
| 117 | Celebración ceremonia |  |  |  | 14.88d → 14.75d |  | resources none → Ceremonia |
| 118 | Recogida y limpieza iglesia |  |  |  | 14.12d → 14d |  | resources none → Servicio limpieza |
| 120 | **Recinto banquete** | 2009-06-02 09:00 → 2009-06-17 12:00 (+15d) |  | 40.62d → 29.25d | 14.5d → 14.38d |  |  |
| 121 | Cita previa ayuntamiento | 2009-06-02 09:00 → 2009-06-17 12:00 (+15d) | 2009-06-02 10:00 → 2009-06-17 13:00 (+15d) |  | 34.62d → 23.25d |  | resources none → Organizador |
| 122 | Obtención permiso celebración evento | 2009-06-02 10:00 → 2009-06-17 15:00 (+15d) | 2009-06-04 10:00 → 2009-06-19 13:00 (+15d) |  | 34.62d → 23.25d |  | resources none → Organizador; Licencia ayuntamiento |
| 123 | Firma contrato uso recinto | 2009-06-04 10:00 → 2009-06-19 13:00 (+15d) | 2009-06-04 10:00 → 2009-06-19 13:00 (+15d) |  | 34.62d → 23.25d |  | resources none → Organizador |
| 124 | Cita previa proveedor carpa | 2009-06-04 10:00 → 2009-06-19 15:00 (+15d) | 2009-06-04 11:00 → 2009-06-19 16:00 (+15d) |  | 34.62d → 23.25d |  | resources none → Organizador |
| 125 | Selección carpa | 2009-06-04 11:00 → 2009-06-19 16:00 (+15d) | 2009-06-04 12:00 → 2009-06-19 17:00 (+15d) |  | 34.62d → 23.25d |  | resources none → Organizador |
| 126 | Firma contrato proveedor carpa | 2009-06-04 12:00 → 2009-06-19 17:00 (+15d) | 2009-06-04 12:00 → 2009-06-19 17:00 (+15d) |  | 34.62d → 23.25d |  | resources none → Organizador |
| 127 | Instalación carpa |  |  |  | 14.5d → 14.38d |  | resources none → Montaje carpa |
| 128 | Celebración evento |  |  |  | 14.5d → 14.38d |  | resources none → Alquiler carpa |
| 129 | Retirada carpa |  |  |  | 14.5d → 14.38d |  | resources none → Montaje carpa |
| 130 | Cierre contrato ayuntamiento |  |  |  | 14.5d → 14.38d |  | resources none → Organizador |
| 131 | Cierre contrato proveedor carpa |  |  |  | 14.5d → 14.38d |  | resources none → Organizador |
| 132 | **Organización banquete** | 2009-06-02 09:00 → 2009-06-02 17:00 |  | 44d → 43.25d | 11.12d → 11d |  |  |
| 133 | Concerta cita previa restaurador | 2009-06-02 09:00 → 2009-06-02 17:00 | 2009-06-02 10:00 → 2009-06-02 18:00 |  | 29.5d → 18.12d |  | resources none → Organizador |
| 134 | Selección menú boda | 2009-06-02 10:00 → 2009-06-12 18:00 (+10d) | 2009-06-04 10:00 → 2009-06-18 19:00 (+14d) | 2d → 2.12d | 29.5d → 17d |  | resources none → Novia; Novio |
| 135 | Prueba menú boda | 2009-06-04 10:00 → 2009-06-18 19:00 (+14d) | 2009-06-04 13:00 → 2009-06-19 20:00 (+15d) | 3h → 4h | 29.5d → 17.88d |  | resources none → Novio; Novia |
| 136 | Firma contrato restaurante | 2009-06-04 13:00 → 2009-06-19 20:00 (+15d) | 2009-06-04 13:00 → 2009-06-19 20:00 (+15d) |  | 29.5d → 18d |  | resources none → Organizador |
| 137 | Selección servicio catering | 2009-06-02 09:00 → 2009-06-03 10:00 (+1d) | 2009-06-02 10:00 → 2009-06-03 11:00 (+1d) |  | 31.88d → 30.75d |  | resources none → Organizador |
| 138 | Firma contrato catering | 2009-06-02 10:00 → 2009-06-03 11:00 (+1d) | 2009-06-02 10:00 → 2009-06-03 11:00 (+1d) |  | 31.88d → 30.75d |  | resources none → Organizador |
| 139 | Servicio restaurante boda |  |  |  | 15.12d → 15d |  | resources none → Menu elegido [10000%] |
| 140 | Servicio catering boda |  |  |  | 15.12d → 15d |  | resources none → Servicio Catering |
| 141 | Pago y Cierre contrato restaurante |  |  |  | 11.12d → 11d |  | resources none → Organizador |

| ID | Task | Start | Finish | Duration | Total float | Other |
| --- | --- | --- | --- | --- | --- | --- |
| 142 | Pago y Cierre contrato catering |  |  |  | 11.12d → 11d | resources none → Organizador |
| 143 | **Noche de bodas** | 2009-06-02 09:00 → 2009-06-20 10:00 (+18d) |  | 44d → 30d | 11.12d → 11d |  |
| 144 | Selección destino noche bodas | 2009-06-02 09:00 → 2009-06-20 10:00 (+18d) | 2009-06-02 10:00 → 2009-06-20 11:00 (+18d) |  | 36.62d → 22d | resources none → Novio; Novia |
| 145 | Selección hotel | 2009-06-02 10:00 → 2009-06-20 11:00 (+18d) | 2009-06-02 11:00 → 2009-06-22 10:00 (+20d) | 1h → 2h | 36.62d → 22d | resources none → Novio; Novia; Organizador |
| 146 | Reserva hotel | 2009-06-02 11:00 → 2009-06-22 10:00 (+20d) | 2009-06-02 12:00 → 2009-06-22 11:00 (+20d) |  | 36.62d → 22.75d | resources none → Organizador |
| 147 | Firma contrato hotel | 2009-06-02 12:00 → 2009-06-22 11:00 (+20d) | 2009-06-02 12:00 → 2009-06-22 11:00 (+20d) |  | 36.62d → 22.75d | resources none → Organizador |
| 148 | Noche de bodas hotel |  |  |  | 15.12d → 15d | resources none → Reserva hotel |
| 149 | Cierre contrato hotel |  |  |  | 11.12d → 11d | resources none → Organizador |

## Version 4 (saved 2009-06-05)

Last finish stays 2009-08-15.

Added:

| ID | Task | Duration | Start | Finish | Constraint | Resources |
| --- | --- | --- | --- | --- | --- | --- |
| 150 | **Reuniones de seguimiento** | 51.12d | 2009-06-02 09:00 | 2009-08-11 10:00 |  |  |
| 151 | Reuniones de seguimiento 1 | 1h | 2009-06-02 09:00 | 2009-06-02 10:00 | start no earlier than 2009-06-02 09:00 | Organizador; Novia; Novio |
| 152 | Reuniones de seguimiento 2 | 1h | 2009-06-09 09:00 | 2009-06-09 10:00 | start no earlier than 2009-06-09 09:00 | Organizador; Novia; Novio |
| 153 | Reuniones de seguimiento 3 | 1h | 2009-06-16 09:00 | 2009-06-16 10:00 | start no earlier than 2009-06-16 09:00 | Organizador; Novia; Novio |
| 154 | Reuniones de seguimiento 4 | 1h | 2009-06-23 09:00 | 2009-06-23 10:00 | start no earlier than 2009-06-23 09:00 | Organizador; Novia; Novio |
| 155 | Reuniones de seguimiento 5 | 1h | 2009-06-30 09:00 | 2009-06-30 10:00 | start no earlier than 2009-06-30 09:00 | Organizador; Novia; Novio |
| 156 | Reuniones de seguimiento 6 | 1h | 2009-07-07 09:00 | 2009-07-07 10:00 | start no earlier than 2009-07-07 09:00 | Organizador; Novia; Novio |
| 157 | Reuniones de seguimiento 7 | 1h | 2009-07-14 09:00 | 2009-07-14 10:00 | start no earlier than 2009-07-14 09:00 | Organizador; Novia; Novio |
| 158 | Reuniones de seguimiento 8 | 1h | 2009-07-21 09:00 | 2009-07-21 10:00 | start no earlier than 2009-07-21 09:00 | Organizador; Novia; Novio |
| 159 | Reuniones de seguimiento 9 | 1h | 2009-07-28 09:00 | 2009-07-28 10:00 | start no earlier than 2009-07-28 09:00 | Organizador; Novia; Novio |
| 160 | Reuniones de seguimiento 10 | 1h | 2009-08-04 09:00 | 2009-08-04 10:00 | start no earlier than 2009-08-04 09:00 | Organizador; Novia; Novio |
| 161 | Reuniones de seguimiento 11 | 1h | 2009-08-11 09:00 | 2009-08-11 10:00 | start no earlier than 2009-08-11 09:00 | Organizador; Novia; Novio |

Changed:

| ID | Task | Start | Finish | Duration | Total float |
| --- | --- | --- | --- | --- | --- |
| 1 | **Vestuario** | 2009-06-02 09:00 → 2009-06-02 10:00 |  | 34d → 33.88d | 15.88d → 15.75d |
| 2 | **Vestuario del novio** | 2009-06-02 15:00 → 2009-06-02 16:00 |  | 13.5d → 13.38d | 18.38d → 18.25d |
| 3 | Concertar cita previa | 2009-06-02 15:00 → 2009-06-02 16:00 | 2009-06-02 16:00 → 2009-06-02 17:00 |  | 18.38d → 18.25d |
| 12 | **Vestuario de la novia** | 2009-06-02 09:00 → 2009-06-02 10:00 |  | 18d → 17.88d | 15.88d → 15.75d |
| 13 | Concertar cita previa | 2009-06-02 09:00 → 2009-06-02 10:00 | 2009-06-02 10:00 → 2009-06-02 11:00 |  | 15.88d → 15.75d |
| 23 | **Anillos** | 2009-06-02 16:00 → 2009-06-02 17:00 |  | 33.38d → 33.25d | 4.25d → 4.12d |
| 24 | Concertar cita previa | 2009-06-02 16:00 → 2009-06-02 17:00 | 2009-06-02 17:00 → 2009-06-02 18:00 |  | 4.25d → 4.12d |
| 29 | Prueba de arregos |  | 2009-07-11 12:00 → 2009-07-10 21:00 (-1d) |  |  |
| 30 | Entrega de alianzas | 2009-07-11 12:00 → 2009-07-10 21:00 (-1d) | 2009-07-11 12:00 → 2009-07-10 21:00 (-1d) |  |  |
| 32 | **Peinado y maquillaje** | 2009-06-19 18:00 → 2009-07-10 18:00 (+21d) | 2009-07-28 18:20 → 2009-07-29 19:20 (+1d) | 28.04d → 14.12d | 13.08d → 10d |
| 33 | Concertar cita previa | 2009-06-19 18:00 → 2009-07-10 18:00 (+21d) | 2009-06-19 19:00 → 2009-07-10 19:00 (+21d) |  | 15d → 10d |
| 34 | Selección de posiblidades | 2009-06-20 12:00 → 2009-07-11 09:00 (+21d) | 2009-06-20 13:00 → 2009-07-11 10:00 (+21d) |  | 16d → 10.38d |
| 35 | Prueba de posiblidades | 2009-07-18 10:00 → 2009-07-22 20:00 (+4d) | 2009-07-20 19:00 → 2009-07-23 21:00 (+3d) |  | 16d → 12d |
| 36 | Selección de peinado definitivo | 2009-07-20 20:00 → 2009-07-24 19:00 (+4d) | 2009-07-20 21:00 → 2009-07-24 20:00 (+4d) |  | 16.88d → 11d |
| 37 | Firma de contrato peinado | 2009-07-20 21:00 → 2009-07-24 20:00 (+4d) | 2009-07-20 21:00 → 2009-07-24 20:00 (+4d) |  | 17d → 11d |
| 38 | Servicio pel/maq fotos estudio | 2009-07-21 18:00 → 2009-07-25 09:00 (+4d) | 2009-07-21 20:00 → 2009-07-25 11:00 (+4d) |  | 16d → 11.75d |
| 39 | Servicio de peluquería/maquillaje | 2009-07-27 19:20 → 2009-07-28 20:20 (+1d) | 2009-07-28 18:20 → 2009-07-29 19:20 (+1d) |  | 13.08d → 12d |
| 40 | Pago y Cierre contrato peluquería/maq | 2009-07-28 18:20 → 2009-07-29 19:20 (+1d) | 2009-07-28 18:20 → 2009-07-29 19:20 (+1d) |  | 13.08d → 12d |
| 41 | **Fotografía** | 2009-07-10 12:00 → 2009-07-13 10:00 (+3d) |  | 26.62d → 25.88d |  |
| 42 | Concertar cita previa | 2009-07-10 12:00 → 2009-07-13 10:00 (+3d) | 2009-07-10 13:00 → 2009-07-13 11:00 (+3d) |  | 21.5d → 16.75d |
| 43 | Selección de album | 2009-07-13 20:00 → 2009-07-21 19:00 (+8d) | 2009-07-14 20:00 → 2009-07-21 21:00 (+7d) |  | 22.96d → 16d |
| 44 | Firma contrato fotógrafo | 2009-07-14 20:00 → 2009-07-21 21:00 (+7d) | 2009-07-14 20:00 → 2009-07-21 21:00 (+7d) |  | 22.96d → 17d |
| 45 | Realización fotos estudio | 2009-07-21 20:00 → 2009-07-25 11:00 (+4d) | 2009-07-22 19:00 → 2009-07-28 20:20 (+6d) | 2h → 4h | 18d → 13d |
| 46 | Realización reportaje fotográfico |  | 2009-07-27 19:20 → 2009-07-28 18:20 (+1d) | 6.67h → 8.67h | 14d → 13.08d |
| 49 | **Flores y decoración** | 2009-07-10 15:00 → 2009-07-13 11:00 (+3d) |  | 12.5d → 11.75d |  |
| 50 | Concertar cita previa | 2009-07-10 15:00 → 2009-07-13 11:00 (+3d) | 2009-07-10 16:00 → 2009-07-13 12:00 (+3d) |  | 17.38d → 15.62d |
| 51 | Selección del tipo de decoración | 2009-07-14 18:00 → 2009-07-21 20:00 (+7d) | 2009-07-15 19:00 → 2009-07-22 20:00 (+7d) | 4h → 3h | 18d → 15d |
| 52 | Selección tipo plantas | 2009-07-15 19:00 → 2009-07-22 20:00 (+7d) | 2009-07-18 10:00 → 2009-07-24 19:00 (+6d) |  | 18d → 15d |
| 53 | Selección ramo novia | 2009-07-18 10:00 → 2009-07-24 19:00 (+6d) | 2009-07-20 20:00 → 2009-07-24 21:00 (+4d) |  | 19d → 15d |
| 54 | Firma contrato floristería | 2009-07-20 20:00 → 2009-07-24 21:00 (+4d) | 2009-07-20 20:00 → 2009-07-24 21:00 (+4d) |  | 19d → 15d |
| 58 | **Papelería y regalos** | 2009-06-02 18:00 → 2009-06-02 19:00 |  | 40.12d → 40d | 0d → 1.88d |
| 59 | **Invitaciones** |  | 2009-06-22 19:00 → 2009-06-18 19:00 (-4d) | 14d → 12d | -1d → 1d |
| 66 | Envío invitaciones |  | 2009-06-22 19:00 → 2009-06-18 19:00 (-4d) | 7d → 5d | -1d → 1d |
| 67 | **Regalo madrina** | 2009-06-02 18:00 → 2009-06-03 09:00 (+1d) | 2009-07-01 11:00 → 2009-07-01 16:00 | 20.38d → 20.62d | 17.75d → 17.38d |
| 68 | Concertar cita previa | 2009-06-02 18:00 → 2009-06-03 09:00 (+1d) | 2009-06-02 19:00 → 2009-06-03 10:00 (+1d) |  | 18d → 17.88d |
| 71 | Entrega regalos madrina | 2009-06-22 11:00 → 2009-06-22 12:00 | 2009-07-01 11:00 → 2009-07-01 16:00 |  | 17.75d → 17.38d |
| 72 | **Regalo padrino** | 2009-06-03 09:00 → 2009-06-03 10:00 | 2009-07-10 11:00 → 2009-07-10 17:00 | 27.25d → 27.62d | 10.75d → 10.25d |
| 73 | Concertar cita previa | 2009-06-03 09:00 → 2009-06-03 10:00 | 2009-06-03 10:00 → 2009-06-03 11:00 |  | 12.88d → 10.75d |
| 76 | Entrega regalos padrino | 2009-07-01 11:00 → 2009-07-01 16:00 | 2009-07-10 11:00 → 2009-07-10 17:00 |  | 10.75d → 10.25d |
| 78 | **Orquesta y música** | 2009-06-19 17:00 → 2009-07-10 17:00 (+21d) |  | 30.25d → 15.25d |  |
| 79 | **Música ceremonia** | 2009-07-10 11:00 → 2009-07-13 09:00 (+3d) |  | 12.75d → 12d |  |
| 80 | Concertar cita previa | 2009-07-10 11:00 → 2009-07-13 09:00 (+3d) | 2009-07-10 12:00 → 2009-07-13 10:00 (+3d) |  | 20.5d → 20.62d |
| 81 | Selección repertorio | 2009-07-14 20:00 → 2009-07-17 19:00 (+3d) | 2009-07-17 21:00 → 2009-07-20 21:00 (+3d) | 1.25d → 1.12d | 20d → 17.88d |
| 82 | Firma contrato música ceremonia | 2009-07-17 21:00 → 2009-07-20 21:00 (+3d) | 2009-07-17 21:00 → 2009-07-20 21:00 (+3d) |  | 20d → 19d |
| 85 | **Música banquete** | 2009-06-19 17:00 → 2009-07-10 17:00 (+21d) |  | 30.25d → 15.25d |  |
| 86 | Concertar cita previa | 2009-06-19 17:00 → 2009-07-10 17:00 (+21d) | 2009-06-19 18:00 → 2009-07-10 18:00 (+21d) |  | 23.12d → 20.12d |
| 87 | Selección tipo música | 2009-06-20 12:00 → 2009-07-11 09:00 (+21d) | 2009-07-11 13:00 → 2009-07-17 20:00 (+6d) | 2.25d → 2.12d | 24d → 20d |
| 88 | Firma contrato música banquete | 2009-07-11 13:00 → 2009-07-17 20:00 (+6d) | 2009-07-11 13:00 → 2009-07-17 20:00 (+6d) |  | 25.25d → 20.25d |
| 91 | **Transporte** | 2009-07-10 16:00 → 2009-07-13 12:00 (+3d) |  | 15.38d → 14.62d |  |
| 92 | **Transporte novios** | 2009-07-10 16:00 → 2009-07-13 12:00 (+3d) |  | 15.38d → 14.62d |  |
| 93 | Concertar cita previa | 2009-07-10 16:00 → 2009-07-13 12:00 (+3d) | 2009-07-10 17:00 → 2009-07-13 13:00 (+3d) |  | 21.25d → 18.12d |
| 94 | Selección del tipo de transporte | 2009-07-13 18:00 → 2009-07-20 20:00 (+7d) | 2009-07-14 19:00 → 2009-07-21 20:00 (+7d) | 4h → 3h | 22d → 17d |
| 95 | Firma contrato | 2009-07-14 19:00 → 2009-07-21 20:00 (+7d) | 2009-07-14 19:00 → 2009-07-21 20:00 (+7d) |  | 22.75d → 17.75d |
| 99 | **Transporte invitados** | 2009-07-10 17:00 → 2009-07-13 15:00 (+3d) |  | 15.25d → 14.5d |  |
| 100 | Concertar cita previa | 2009-07-10 17:00 → 2009-07-13 15:00 (+3d) | 2009-07-10 18:00 → 2009-07-13 16:00 (+3d) |  | 23d → 24.25d |
| 101 | Selección del tipo de vehículo | 2009-07-10 18:00 → 2009-07-13 16:00 (+3d) | 2009-07-13 20:00 → 2009-07-13 19:00 | 3h → 2h | 23d → 24d |
| 102 | Determinación servicios a prestar | 2009-07-14 09:00 → 2009-07-14 10:00 | 2009-07-14 10:00 → 2009-07-14 11:00 |  | 24d → 23.88d |
| 103 | Firma del contrato | 2009-07-14 10:00 → 2009-07-14 11:00 | 2009-07-14 10:00 → 2009-07-14 11:00 |  | 24d → 23.88d |
| 108 | **Trámites administrativos** | 2009-06-02 10:00 → 2009-06-02 11:00 |  | 40.88d → 40.75d |  |
| 109 | **Iglesia** | 2009-06-02 10:00 → 2009-06-02 11:00 |  | 40.88d → 40.75d |  |
| 110 | Concertar cita previa párroco | 2009-06-02 10:00 → 2009-06-02 11:00 | 2009-06-02 11:00 → 2009-06-02 12:00 |  | 20.5d → 21.5d |
| 111 | Reserva fecha boda | 2009-06-02 11:00 → 2009-06-02 12:00 | 2009-06-02 12:00 → 2009-06-02 13:00 |  | 20.5d → 21.5d |
| 112 | Selección fechas cursos prematrimoniales | 2009-06-02 12:00 → 2009-06-02 15:00 |  |  | 20d → 21.5d |
| 113 | Obtención certificados bautismo | 2009-06-03 11:00 → 2009-06-03 12:00 | 2009-06-17 12:00 → 2009-06-17 17:00 |  | 22.5d → 22.12d |
| 114 | Realización cursos prematrimoniales |  | 2009-07-13 19:00 → 2009-07-10 21:00 (-3d) |  | 2.12d → 4d |
| 115 | Entrega certificados | 2009-07-14 09:00 → 2009-07-13 09:00 (-1d) | 2009-07-14 10:00 → 2009-07-13 10:00 (-1d) |  | 3.88d → 4.88d |
| 120 | **Recinto banquete** | 2009-06-17 12:00 → 2009-06-17 17:00 |  | 29.25d → 28.88d |  |
| 121 | Cita previa ayuntamiento | 2009-06-17 12:00 → 2009-06-17 17:00 | 2009-06-17 13:00 → 2009-06-17 18:00 |  | 23.25d → 22.75d |
| 122 | Obtención permiso celebración evento | 2009-06-17 15:00 → 2009-06-17 18:00 | 2009-06-19 13:00 → 2009-06-19 18:00 |  | 23.25d → 22.75d |
| 123 | Firma contrato uso recinto | 2009-06-19 13:00 → 2009-06-19 18:00 | 2009-06-19 13:00 → 2009-06-19 18:00 |  | 23.25d → 22.75d |

| ID | Task | Start | Finish | Duration | Total float |
| --- | --- | --- | --- | --- | --- |
| 124 | Cita previa proveedor carpa | 2009-06-19 15:00 → 2009-06-19 18:00 | 2009-06-19 16:00 → 2009-06-19 19:00 |  | 23.25d → 22.75d |
| 125 | Selección carpa | 2009-06-19 16:00 → 2009-06-22 10:00 (+3d) | 2009-06-19 17:00 → 2009-06-22 11:00 (+3d) |  | 23.25d → 22.75d |
| 126 | Firma contrato proveedor carpa | 2009-06-19 17:00 → 2009-06-22 11:00 (+3d) | 2009-06-19 17:00 → 2009-06-22 11:00 (+3d) |  | 23.25d → 22.75d |
| 132 | **Organización banquete** | 2009-06-02 17:00 → 2009-06-02 18:00 |  | 43.25d → 43.12d |  |
| 133 | Concerta cita previa restaurador | 2009-06-02 17:00 → 2009-06-02 18:00 | 2009-06-02 18:00 → 2009-06-02 19:00 |  | 18.12d → 18d |
| 137 | Selección servicio catering | 2009-06-03 10:00 → 2009-06-03 11:00 | 2009-06-03 11:00 → 2009-06-03 12:00 |  | 30.75d → 30.62d |
| 138 | Firma contrato catering | 2009-06-03 11:00 → 2009-06-03 12:00 | 2009-06-03 11:00 → 2009-06-03 12:00 |  | 30.75d → 30.62d |
| 146 | Reserva hotel | 2009-06-22 10:00 → 2009-06-22 11:00 | 2009-06-22 11:00 → 2009-06-22 12:00 |  | 22.75d → 22.62d |
| 147 | Firma contrato hotel | 2009-06-22 11:00 → 2009-06-22 12:00 | 2009-06-22 11:00 → 2009-06-22 12:00 |  | 22.75d → 22.62d |

## Version 5 (saved 2009-06-10)

Last finish stays 2009-08-15.

Added:

| ID | Task | Duration | Start | Finish | Predecessors | Constraint |
| --- | --- | --- | --- | --- | --- | --- |
| 40 | Servicio pel.maq. Concluidos | 0d | 2009-07-28 20:20 | 2009-07-28 20:20 | 39SS | start no earlier than 2009-07-28 09:00 |
| 49 | Reportaje completado | 0d | 2009-08-15 10:00 | 2009-08-15 10:00 | 48 |  |
| 58 | Decoración instalada | 0d | 2009-07-25 09:00 | 2009-07-25 09:00 | 57SS | start no earlier than 2009-07-25 09:00 |
| 70 | Invitaciones entregadas | 0d | 2009-06-12 09:00 | 2009-06-12 09:00 | 69SS | start no earlier than 2009-06-12 09:00 |
| 76 | Regalos entregados | 0d | 2009-07-01 16:00 | 2009-07-01 16:00 | 75 | start no earlier than 2009-06-22 09:00 |
| 82 | Regalos entregados | 0d | 2009-07-10 17:00 | 2009-07-10 17:00 | 81 |  |
| 90 | Actuación completa | 0d | 2009-07-25 19:00 | 2009-07-25 19:00 | 89 |  |
| 97 | Actuación concluida | 0d | 2009-07-25 17:00 | 2009-07-25 17:00 | 96 |  |
| 105 | Servicio desplazamiento concluido | 0d | 2009-07-25 19:00 | 2009-07-25 19:00 | 104 |  |
| 107 | Servicio desplazamiento concluido | 0d | 2009-07-27 11:00 | 2009-07-27 11:00 | 106 |  |
| 117 | Servicios transporte concluido | 0d | 2009-07-25 18:00 | 2009-07-25 18:00 | 116 |  |
| 125 | Certificados entregados | 0d | 2009-06-17 17:00 | 2009-06-17 17:00 | 124 |  |
| 128 | Certificado curso prematrimoniales | 0d | 2009-07-13 10:00 | 2009-07-13 10:00 | 127 |  |
| 141 | Carpa instalada | 0d | 2009-07-24 19:00 | 2009-07-24 19:00 | 140 |  |
| 144 | Carpa retirada | 0d | 2009-07-27 16:00 | 2009-07-27 16:00 | 143 |  |
| 156 | Servicios catering y restaurante | 0d | 2009-07-25 19:00 | 2009-07-25 19:00 | 154, 155 | start no earlier than 2009-07-25 09:00 |
| 165 | Noche de bodas disfrutada | 0d | 2009-07-26 19:00 | 2009-07-26 19:00 | 164 |  |

Changed:

| ID | Task | Start | Finish | Total float | Predecessors | Other |
| --- | --- | --- | --- | --- | --- | --- |
| 1 | **Vestuario** |  |  |  |  | baseline start none → 2009-06-02 10:00; baseline finish none → 2009-07-17 19:00 |
| 2 | **Vestuario del novio** |  |  |  |  | baseline start none → 2009-06-02 16:00; baseline finish none → 2009-06-20 10:00 |
| 3 | Concertar cita previa |  |  |  |  | baseline start none → 2009-06-02 16:00; baseline finish none → 2009-06-02 17:00 |
| 4 | Selección de posibilidades |  |  |  |  | baseline start none → 2009-06-08 19:00; baseline finish none → 2009-06-09 19:00 |
| 5 | Elección traje definitivo |  |  |  |  | baseline start none → 2009-06-09 19:00; baseline finish none → 2009-06-10 19:00 |
| 6 | Selección de complementos |  |  |  |  | baseline start none → 2009-06-10 19:00; baseline finish none → 2009-06-10 20:00 |
| 7 | Elección definitiva de complementos |  |  |  |  | baseline start none → 2009-06-10 20:00; baseline finish none → 2009-06-10 21:00 |
| 8 | Firma de contrato modista |  |  |  |  | baseline start none → 2009-06-10 21:00; baseline finish none → 2009-06-10 21:00 |
| 9 | Realización de arreglos |  |  |  |  | baseline start none → 2009-06-11 09:00; baseline finish none → 2009-06-19 19:00 |
| 10 | Prueba de arreglos |  |  |  |  | baseline start none → 2009-06-20 09:00; baseline finish none → 2009-06-20 10:00 |
| 11 | Entrega del traje |  |  |  |  | baseline start none → 2009-06-20 10:00; baseline finish none → 2009-06-20 10:00 |
| 12 | **Vestuario de la novia** |  |  |  |  | baseline start none → 2009-06-02 10:00; baseline finish none → 2009-06-25 20:00 |
| 13 | Concertar cita previa |  |  |  |  | baseline start none → 2009-06-02 10:00; baseline finish none → 2009-06-02 11:00 |
| 14 | Selección de posibilidades |  |  |  |  | baseline start none → 2009-06-08 19:00; baseline finish none → 2009-06-09 20:00 |
| 15 | Elección traje definitivo |  |  |  |  | baseline start none → 2009-06-09 20:00; baseline finish none → 2009-06-10 20:00 |
| 16 | Selección de complementos |  |  |  |  | baseline start none → 2009-06-10 20:00; baseline finish none → 2009-06-10 21:00 |
| 17 | Elección definitiva de complementos |  |  |  |  | baseline start none → 2009-06-11 19:00; baseline finish none → 2009-06-11 20:00 |
| 18 | Firma de contrato modista |  |  |  |  | baseline start none → 2009-06-11 20:00; baseline finish none → 2009-06-11 20:00 |
| 19 | Realización de arreglos |  |  |  |  | baseline start none → 2009-06-12 09:00; baseline finish none → 2009-06-25 19:00 |
| 20 | Prueba de arregos |  |  |  |  | baseline start none → 2009-06-25 19:00; baseline finish none → 2009-06-25 20:00 |
| 21 | Entrega del traje |  |  |  |  | baseline start none → 2009-06-25 20:00; baseline finish none → 2009-06-25 20:00 |
| 22 | Pago y cierre de vestuario |  |  |  |  | baseline start none → 2009-07-17 09:00; baseline finish none → 2009-07-17 19:00 |
| 23 | **Anillos** |  |  |  |  | baseline start none → 2009-06-02 17:00; baseline finish none → 2009-07-17 19:00 |
| 24 | Concertar cita previa |  |  |  |  | baseline start none → 2009-06-02 17:00; baseline finish none → 2009-06-02 18:00 |
| 25 | Selección de posiblidades |  |  |  |  | baseline start none → 2009-06-11 19:00; baseline finish none → 2009-06-12 19:00 |
| 26 | Elección modelo definitivo |  |  |  |  | baseline start none → 2009-06-12 19:00; baseline finish none → 2009-06-18 20:00 |
| 27 | Firma de contrato joyería |  |  |  |  | baseline start none → 2009-06-18 20:00; baseline finish none → 2009-06-18 20:00 |
| 28 | Arreglos y grabados |  |  |  |  | baseline start none → 2009-06-19 09:00; baseline finish none → 2009-06-29 19:00 |
| 29 | Prueba de arregos |  |  |  |  | baseline start none → 2009-06-29 19:00; baseline finish none → 2009-07-10 21:00 |
| 30 | Entrega de alianzas |  |  |  |  | baseline start none → 2009-07-10 21:00; baseline finish none → 2009-07-10 21:00 |
| 31 | Pago y Cierre contrato alianzas |  |  |  |  | baseline start none → 2009-07-17 09:00; baseline finish none → 2009-07-17 19:00 |
| 32 | **Peinado y maquillaje** |  |  |  |  | baseline start none → 2009-07-10 18:00; baseline finish none → 2009-07-29 19:20 |
| 33 | Concertar cita previa |  |  |  |  | baseline start none → 2009-07-10 18:00; baseline finish none → 2009-07-10 19:00 |
| 34 | Selección de posiblidades |  |  |  |  | baseline start none → 2009-07-11 09:00; baseline finish none → 2009-07-11 10:00 |
| 35 | Prueba de posiblidades |  |  |  |  | baseline start none → 2009-07-22 20:00; baseline finish none → 2009-07-23 21:00 |
| 36 | Selección de peinado definitivo |  |  |  |  | baseline start none → 2009-07-24 19:00; baseline finish none → 2009-07-24 20:00 |
| 37 | Firma de contrato peinado |  |  |  |  | baseline start none → 2009-07-24 20:00; baseline finish none → 2009-07-24 20:00 |
| 38 | Servicio pel/maq fotos estudio |  |  |  |  | baseline start none → 2009-07-25 09:00; baseline finish none → 2009-07-25 11:00 |
| 39 | Servicio de peluquería/maquillaje |  |  |  |  | baseline start none → 2009-07-28 20:20; baseline finish none → 2009-07-29 19:20 |
| 41 | Pago y Cierre contrato peluquería/maq | 2009-07-29 19:20 → 2009-07-29 09:00 | 2009-07-29 19:20 → 2009-07-29 09:00 | 12d → 13d | 39 → 40 | constraint none → start no earlier than 2009-07-29 09:00; baseline start none → 2009-07-29 19:20; baseline finish none → 2009-07-29 19:20 |
| 42 | **Fotografía** |  |  |  |  | baseline start none → 2009-07-13 10:00; baseline finish none → 2009-08-15 10:00 |
| 43 | Concertar cita previa |  |  |  |  | baseline start none → 2009-07-13 10:00; baseline finish none → 2009-07-13 11:00 |
| 44 | Selección de album |  |  |  |  | baseline start none → 2009-07-21 19:00; baseline finish none → 2009-07-21 21:00 |
| 45 | Firma contrato fotógrafo |  |  |  |  | baseline start none → 2009-07-21 21:00; baseline finish none → 2009-07-21 21:00 |
| 46 | Realización fotos estudio |  |  |  |  | baseline start none → 2009-07-25 11:00; baseline finish none → 2009-07-28 20:20 |
| 47 | Realización reportaje fotográfico |  |  |  |  | baseline start none → 2009-07-25 09:00; baseline finish none → 2009-07-28 18:20 |
| 48 | Entrega reportaje completo |  |  |  |  | baseline start none → 2009-08-15 09:00; baseline finish none → 2009-08-15 10:00 |
| 50 | Pago y Cierre contrato fotógrafo |  |  |  | 48 → 49 | baseline start none → 2009-08-15 10:00; baseline finish none → 2009-08-15 10:00 |
| 51 | **Flores y decoración** |  |  |  |  | baseline start none → 2009-07-13 11:00; baseline finish none → 2009-07-28 09:00 |
| 52 | Concertar cita previa |  |  |  |  | baseline start none → 2009-07-13 11:00; baseline finish none → 2009-07-13 12:00 |
| 53 | Selección del tipo de decoración |  |  |  |  | baseline start none → 2009-07-21 20:00; baseline finish none → 2009-07-22 20:00 |
| 54 | Selección tipo plantas |  |  |  |  | baseline start none → 2009-07-22 20:00; baseline finish none → 2009-07-24 19:00 |
| 55 | Selección ramo novia |  |  |  |  | baseline start none → 2009-07-24 19:00; baseline finish none → 2009-07-24 21:00 |
| 56 | Firma contrato floristería |  |  |  |  | baseline start none → 2009-07-24 21:00; baseline finish none → 2009-07-24 21:00 |
| 57 | Instalación decoración iglesia |  |  |  |  | baseline start none → 2009-07-25 09:00; baseline finish none → 2009-07-25 19:00 |
| 59 | Entrega ramo novia |  |  |  | 56 → 56, 58 | baseline start none → 2009-07-25 09:00; baseline finish none → 2009-07-25 09:00 |
| 60 | Pago y Cierre contrato floristería |  |  |  |  | baseline start none → 2009-07-28 09:00; baseline finish none → 2009-07-28 09:00 |
| 61 | **Papelería y regalos** |  |  |  |  | baseline start none → 2009-06-02 19:00; baseline finish none → 2009-07-28 09:00 |
| 62 | **Invitaciones** |  |  | 1d → 1.88d |  | baseline start none → 2009-06-02 19:00; baseline finish none → 2009-06-18 19:00 |
| 63 | Elaboración lista invitados |  |  |  |  | baseline start none → 2009-06-02 19:00; baseline finish none → 2009-06-08 19:00 |
| 64 | Elaboración lista bodas |  |  |  |  | baseline start none → 2009-06-09 09:00; baseline finish none → 2009-06-10 19:00 |
| 65 | Concertar cita previa |  |  |  |  | baseline start none → 2009-06-11 09:00; baseline finish none → 2009-06-11 10:00 |
| 66 | Selección tipo invitación |  |  |  |  | baseline start none → 2009-06-11 10:00; baseline finish none → 2009-06-11 12:00 |
| 67 | Selección texto invitación |  |  |  |  | baseline start none → 2009-06-11 18:00; baseline finish none → 2009-06-11 19:00 |
| 68 | Firma contrato papelería |  |  |  |  | baseline start none → 2009-06-11 19:00; baseline finish none → 2009-06-11 19:00 |
| 69 | Envío invitaciones |  |  |  |  | baseline start none → 2009-06-12 09:00; baseline finish none → 2009-06-18 19:00 |
| 71 | **Regalo madrina** |  |  | 17.38d → 17.88d |  | baseline start none → 2009-06-03 09:00; baseline finish none → 2009-07-01 16:00 |
| 72 | Concertar cita previa |  |  |  |  | baseline start none → 2009-06-03 09:00; baseline finish none → 2009-06-03 10:00 |
| 73 | Selección regalo |  |  |  |  | baseline start none → 2009-06-19 19:00; baseline finish none → 2009-06-19 21:00 |
| 74 | Firma contrato regalos madrina |  |  |  |  | baseline start none → 2009-06-19 21:00; baseline finish none → 2009-06-19 21:00 |

| ID | Task | Total float | Predecessors | Other |
| --- | --- | --- | --- | --- |
| 75 | Entrega regalos madrina |  |  | baseline start none → 2009-06-22 12:00; baseline finish none → 2009-07-01 16:00 |
| 77 | **Regalo padrino** | 10.25d → 10.75d |  | baseline start none → 2009-06-03 10:00; baseline finish none → 2009-07-10 17:00 |
| 78 | Concertar cita previa |  |  | baseline start none → 2009-06-03 10:00; baseline finish none → 2009-06-03 11:00 |
| 79 | Selección regalo |  |  | baseline start none → 2009-06-19 20:00; baseline finish none → 2009-06-20 10:00 |
| 80 | Firma contrato regalo padrino |  |  | baseline start none → 2009-06-20 10:00; baseline finish none → 2009-06-20 10:00 |
| 81 | Entrega regalos padrino |  |  | baseline start none → 2009-07-01 16:00; baseline finish none → 2009-07-10 17:00 |
| 83 | Pago y Cierre contrato papelería y regalos |  |  | baseline start none → 2009-07-28 09:00; baseline finish none → 2009-07-28 09:00 |
| 84 | **Orquesta y música** |  |  | baseline start none → 2009-07-10 17:00; baseline finish none → 2009-07-31 09:00 |
| 85 | **Música ceremonia** |  |  | baseline start none → 2009-07-13 09:00; baseline finish none → 2009-07-28 09:00 |
| 86 | Concertar cita previa |  |  | baseline start none → 2009-07-13 09:00; baseline finish none → 2009-07-13 10:00 |
| 87 | Selección repertorio |  |  | baseline start none → 2009-07-17 19:00; baseline finish none → 2009-07-20 21:00 |
| 88 | Firma contrato música ceremonia |  |  | baseline start none → 2009-07-20 21:00; baseline finish none → 2009-07-20 21:00 |
| 89 | Actuación día boda |  |  | baseline start none → 2009-07-25 09:00; baseline finish none → 2009-07-25 19:00 |
| 91 | Pago y Cierre contrato grupo |  | 89 → 90 | baseline start none → 2009-07-28 09:00; baseline finish none → 2009-07-28 09:00 |
| 92 | **Música banquete** |  |  | baseline start none → 2009-07-10 17:00; baseline finish none → 2009-07-31 09:00 |
| 93 | Concertar cita previa |  |  | baseline start none → 2009-07-10 17:00; baseline finish none → 2009-07-10 18:00 |
| 94 | Selección tipo música |  |  | baseline start none → 2009-07-11 09:00; baseline finish none → 2009-07-17 20:00 |
| 95 | Firma contrato música banquete |  |  | baseline start none → 2009-07-17 20:00; baseline finish none → 2009-07-17 20:00 |
| 96 | Actuación día boda |  |  | baseline start none → 2009-07-25 09:00; baseline finish none → 2009-07-25 17:00 |
| 98 | Pago y Cierre contrato música |  | 96 → 97 | baseline start none → 2009-07-31 09:00; baseline finish none → 2009-07-31 09:00 |
| 99 | **Transporte** |  |  | baseline start none → 2009-07-13 12:00; baseline finish none → 2009-07-31 09:00 |
| 100 | **Transporte novios** |  |  | baseline start none → 2009-07-13 12:00; baseline finish none → 2009-07-31 09:00 |
| 101 | Concertar cita previa |  |  | baseline start none → 2009-07-13 12:00; baseline finish none → 2009-07-13 13:00 |
| 102 | Selección del tipo de transporte |  |  | baseline start none → 2009-07-20 20:00; baseline finish none → 2009-07-21 20:00 |
| 103 | Firma contrato |  |  | baseline start none → 2009-07-21 20:00; baseline finish none → 2009-07-21 20:00 |
| 104 | Desplazamiento de los novios iglesia |  |  | baseline start none → 2009-07-25 09:00; baseline finish none → 2009-07-25 19:00 |
| 106 | Desplazamiento novios hotel noche bodas |  | 104 → 105 | baseline start none → 2009-07-27 09:00; baseline finish none → 2009-07-27 11:00 |
| 108 | Pago y Cierre del contrato |  | 106 → 107 | baseline start none → 2009-07-31 09:00; baseline finish none → 2009-07-31 09:00 |
| 109 | **Transporte invitados** |  |  | baseline start none → 2009-07-13 15:00; baseline finish none → 2009-07-31 09:00 |
| 110 | Concertar cita previa |  |  | baseline start none → 2009-07-13 15:00; baseline finish none → 2009-07-13 16:00 |
| 111 | Selección del tipo de vehículo |  |  | baseline start none → 2009-07-13 16:00; baseline finish none → 2009-07-13 19:00 |
| 112 | Determinación servicios a prestar |  |  | baseline start none → 2009-07-14 10:00; baseline finish none → 2009-07-14 11:00 |
| 113 | Firma del contrato |  |  | baseline start none → 2009-07-14 11:00; baseline finish none → 2009-07-14 11:00 |
| 114 | Servicio de transporte ida |  |  | baseline start none → 2009-07-25 09:00; baseline finish none → 2009-07-25 10:00 |
| 115 | Servicio transporte vuelta 1 |  |  | baseline start none → 2009-07-25 10:00; baseline finish none → 2009-07-25 13:00 |
| 116 | Servicio transporte vuelta 2 |  |  | baseline start none → 2009-07-25 15:00; baseline finish none → 2009-07-25 18:00 |
| 118 | Pago y Cierre de contrato |  | 116 → 117 | baseline start none → 2009-07-31 09:00; baseline finish none → 2009-07-31 09:00 |
| 119 | **Trámites administrativos** |  |  | baseline start none → 2009-06-02 11:00; baseline finish none → 2009-07-27 19:00 |
| 120 | **Iglesia** |  |  | baseline start none → 2009-06-02 11:00; baseline finish none → 2009-07-27 19:00 |
| 121 | Concertar cita previa párroco |  |  | baseline start none → 2009-06-02 11:00; baseline finish none → 2009-06-02 12:00 |
| 122 | Reserva fecha boda |  |  | baseline start none → 2009-06-02 12:00; baseline finish none → 2009-06-02 13:00 |
| 123 | Selección fechas cursos prematrimoniales |  |  | baseline start none → 2009-06-02 15:00; baseline finish none → 2009-06-02 19:00 |
| 124 | Obtención certificados bautismo |  |  | baseline start none → 2009-06-03 12:00; baseline finish none → 2009-06-17 17:00 |
| 126 | Realización cursos prematrimoniales |  |  | baseline start none → 2009-06-26 18:00; baseline finish none → 2009-07-10 21:00 |
| 127 | Entrega certificados |  | 126, 124 → 126, 125 | baseline start none → 2009-07-13 09:00; baseline finish none → 2009-07-13 10:00 |
| 129 | Limpieza iglesia |  |  | baseline start none → 2009-07-24 09:00; baseline finish none → 2009-07-24 19:00 |
| 130 | Celebración ceremonia |  |  | baseline start none → 2009-07-25 09:00; baseline finish none → 2009-07-25 11:00 |
| 131 | Recogida y limpieza iglesia |  |  | baseline start none → 2009-07-27 09:00; baseline finish none → 2009-07-27 19:00 |
| 132 | Iglesia recogida |  |  | baseline start none → 2009-07-27 19:00; baseline finish none → 2009-07-27 19:00 |
| 133 | **Recinto banquete** |  |  | baseline start none → 2009-06-17 17:00; baseline finish none → 2009-07-27 16:00 |
| 134 | Cita previa ayuntamiento |  |  | baseline start none → 2009-06-17 17:00; baseline finish none → 2009-06-17 18:00 |
| 135 | Obtención permiso celebración evento |  |  | baseline start none → 2009-06-17 18:00; baseline finish none → 2009-06-19 18:00 |
| 136 | Firma contrato uso recinto |  |  | baseline start none → 2009-06-19 18:00; baseline finish none → 2009-06-19 18:00 |
| 137 | Cita previa proveedor carpa |  |  | baseline start none → 2009-06-19 18:00; baseline finish none → 2009-06-19 19:00 |
| 138 | Selección carpa |  |  | baseline start none → 2009-06-22 10:00; baseline finish none → 2009-06-22 11:00 |
| 139 | Firma contrato proveedor carpa |  |  | baseline start none → 2009-06-22 11:00; baseline finish none → 2009-06-22 11:00 |
| 140 | Instalación carpa |  |  | baseline start none → 2009-07-24 09:00; baseline finish none → 2009-07-24 19:00 |
| 142 | Celebración evento |  | 140 → 141 | baseline start none → 2009-07-25 09:00; baseline finish none → 2009-07-25 19:00 |
| 143 | Retirada carpa |  |  | baseline start none → 2009-07-27 09:00; baseline finish none → 2009-07-27 16:00 |
| 145 | Cierre contrato ayuntamiento |  | 143 → 144 | baseline start none → 2009-07-27 16:00; baseline finish none → 2009-07-27 16:00 |
| 146 | Cierre contrato proveedor carpa |  |  | baseline start none → 2009-07-27 16:00; baseline finish none → 2009-07-27 16:00 |
| 147 | **Organización banquete** |  |  | baseline start none → 2009-06-02 18:00; baseline finish none → 2009-07-31 09:00 |
| 148 | Concerta cita previa restaurador |  |  | baseline start none → 2009-06-02 18:00; baseline finish none → 2009-06-02 19:00 |
| 149 | Selección menú boda |  |  | baseline start none → 2009-06-12 18:00; baseline finish none → 2009-06-18 19:00 |
| 150 | Prueba menú boda |  |  | baseline start none → 2009-06-18 19:00; baseline finish none → 2009-06-19 20:00 |
| 151 | Firma contrato restaurante |  |  | baseline start none → 2009-06-19 20:00; baseline finish none → 2009-06-19 20:00 |
| 152 | Selección servicio catering |  |  | baseline start none → 2009-06-03 11:00; baseline finish none → 2009-06-03 12:00 |
| 153 | Firma contrato catering |  |  | baseline start none → 2009-06-03 12:00; baseline finish none → 2009-06-03 12:00 |
| 154 | Servicio restaurante boda |  |  | baseline start none → 2009-07-25 09:00; baseline finish none → 2009-07-25 19:00 |
| 155 | Servicio catering boda |  |  | baseline start none → 2009-07-25 09:00; baseline finish none → 2009-07-25 19:00 |

| ID | Task | Predecessors | Other |
| --- | --- | --- | --- |
| 157 | Pago y Cierre contrato restaurante | 154 → 156 | baseline start none → 2009-07-31 09:00; baseline finish none → 2009-07-31 09:00 |
| 158 | Pago y Cierre contrato catering | 155 → 156 | baseline start none → 2009-07-31 09:00; baseline finish none → 2009-07-31 09:00 |
| 159 | **Noche de bodas** |  | baseline start none → 2009-06-20 10:00; baseline finish none → 2009-07-31 09:00 |
| 160 | Selección destino noche bodas |  | baseline start none → 2009-06-20 10:00; baseline finish none → 2009-06-20 11:00 |
| 161 | Selección hotel |  | baseline start none → 2009-06-20 11:00; baseline finish none → 2009-06-22 10:00 |
| 162 | Reserva hotel |  | baseline start none → 2009-06-22 11:00; baseline finish none → 2009-06-22 12:00 |
| 163 | Firma contrato hotel |  | baseline start none → 2009-06-22 12:00; baseline finish none → 2009-06-22 12:00 |
| 164 | Noche de bodas hotel |  | baseline start none → 2009-07-24 09:00; baseline finish none → 2009-07-26 19:00 |
| 166 | Cierre contrato hotel | 164 → 165 | baseline start none → 2009-07-31 09:00; baseline finish none → 2009-07-31 09:00 |
| 167 | **Reuniones de seguimiento** |  | baseline start none → 2009-06-02 09:00; baseline finish none → 2009-08-11 10:00 |
| 168 | Reuniones de seguimiento 1 |  | baseline start none → 2009-06-02 09:00; baseline finish none → 2009-06-02 10:00 |
| 169 | Reuniones de seguimiento 2 |  | baseline start none → 2009-06-09 09:00; baseline finish none → 2009-06-09 10:00 |
| 170 | Reuniones de seguimiento 3 |  | baseline start none → 2009-06-16 09:00; baseline finish none → 2009-06-16 10:00 |
| 171 | Reuniones de seguimiento 4 |  | baseline start none → 2009-06-23 09:00; baseline finish none → 2009-06-23 10:00 |
| 172 | Reuniones de seguimiento 5 |  | baseline start none → 2009-06-30 09:00; baseline finish none → 2009-06-30 10:00 |
| 173 | Reuniones de seguimiento 6 |  | baseline start none → 2009-07-07 09:00; baseline finish none → 2009-07-07 10:00 |
| 174 | Reuniones de seguimiento 7 |  | baseline start none → 2009-07-14 09:00; baseline finish none → 2009-07-14 10:00 |
| 175 | Reuniones de seguimiento 8 |  | baseline start none → 2009-07-21 09:00; baseline finish none → 2009-07-21 10:00 |
| 176 | Reuniones de seguimiento 9 |  | baseline start none → 2009-07-28 09:00; baseline finish none → 2009-07-28 10:00 |
| 177 | Reuniones de seguimiento 10 |  | baseline start none → 2009-08-04 09:00; baseline finish none → 2009-08-04 10:00 |
| 178 | Reuniones de seguimiento 11 |  | baseline start none → 2009-08-11 09:00; baseline finish none → 2009-08-11 10:00 |

## Version 6 (saved 2009-06-11)

Last finish 2009-08-15 → 2009-08-25 (+10d).

Added:

| ID | Task | Duration | Start | Finish | Predecessors | Constraint |
| --- | --- | --- | --- | --- | --- | --- |
| 179 | **Cobro al cliente** | 62d | 2009-06-02 09:00 | 2009-08-25 09:00 |  |  |
| 180 | Entrega primer plazo | 0d | 2009-06-02 09:00 | 2009-06-02 09:00 |  |  |
| 181 | Entrega segundo plazo | 0d | 2009-07-18 09:00 | 2009-07-18 09:00 | 180 | start no earlier than 2009-07-18 09:00 |
| 182 | Entrega tercer plazo | 0d | 2009-08-25 09:00 | 2009-08-25 09:00 | 181 | start no earlier than 2009-08-25 09:00 |
| 183 | Cierre contrato cliente | 0d | 2009-08-25 09:00 | 2009-08-25 09:00 | 182 |  |

Changed:

| ID | Task | Duration | Total float |
| --- | --- | --- | --- |
| 32 | **Peinado y maquillaje** | 14.12d → 15.12d | 10d → 18d |
| 42 | **Fotografía** | 25.88d → 26.88d | 0d → 6d |
| 51 | **Flores y decoración** | 11.75d → 12.75d | 14d → 20d |
| 61 | **Papelería y regalos** | 40d → 41d |  |
| 84 | **Orquesta y música** | 15.25d → 16.25d | 11d → 17d |
| 85 | **Música ceremonia** | 12d → 13d | 14d → 20d |
| 92 | **Música banquete** | 15.25d → 16.25d | 11d → 17d |
| 99 | **Transporte** | 14.62d → 15.62d | 11d → 17d |
| 100 | **Transporte novios** | 14.62d → 15.62d | 11d → 17d |
| 109 | **Transporte invitados** | 14.5d → 15.5d | 11d → 17d |
| 119 | **Trámites administrativos** | 40.75d → 41.75d | 14d → 20d |
| 120 | **Iglesia** | 40.75d → 41.75d | 14d → 20d |
| 133 | **Recinto banquete** | 28.88d → 29.88d | 14.38d → 20.38d |
| 147 | **Organización banquete** | 43.12d → 44.12d | 11d → 17d |
| 159 | **Noche de bodas** | 30d → 31d | 11d → 17d |
| 167 | **Reuniones de seguimiento** | 51.12d → 52.12d | 3.88d → 9.88d |
