# Comercial Juguetes Wingtip

How a schedule from MS Project changed from version to version. A marks actual dates.

## Version 1 (saved 2007-12-21, file Comercial Juguetes Wingtip 4.mpp)

| ID | WBS | Task | Duration | Start | Finish | Predecessors | Total float |
| --- | --- | --- | --- | --- | --- | --- | --- |
| 1 | 1 | **Preproducción** | 8.5d | 2005-01-03 | 2005-01-13 |  | 0d |
| 2 |  | Revisar guión | 2.5d | 2005-01-03 | 2005-01-05 |  | 0d |
| 3 |  | Reunir personal de producción | 3d | 2005-01-05 | 2005-01-10 | 2 | 0d |
| 4 |  | Elegir lugares | 1d | 2005-01-10 | 2005-01-11 | 3 | 0d |
| 5 |  | Realizar audiciones | 2d | 2005-01-11 | 2005-01-13 | 4 | 0d |
| 6 |  | ¡Preproducción completada! | 0d | 2005-01-13 | 2005-01-13 | 5 | 0d |
| 7 | 2 | **Producción** | 4.5d | 2005-01-13 | 2005-01-19 | 1 | 0d |
| 8 |  | Ensayos | 2.25d | 2005-01-13 | 2005-01-17 |  | 0d |
| 9 |  | Proyección del video | 2d | 2005-01-17 | 2005-01-18 | 8 | 0d |
| 10 |  | Montaje de película | 1d | 2005-01-19 | 2005-01-19 | 9 | 0d |
| 11 |  | ¡Producción completada! | 0d | 2005-01-19 | 2005-01-19 | 10 | 0d |
| 12 | 3 | **Postproducción** | 3.5d | 2005-01-20 | 2005-01-25 | 7 | 0d |
| 13 |  | Montaje | 2d | 2005-01-20 | 2005-01-21 |  | 0d |
| 14 |  | Añadir sonido final | 1d | 2005-01-24 | 2005-01-24 | 13 | 0d |
| 15 |  | Copia final para el cliente | 4h | 2005-01-25 | 2005-01-25 | 14 | 0d |

## Version 2 (data date 2005-01-10, saved 2007-12-21, file Comercial Juguetes WingTip 6.mpp)

Last finish 2005-01-25 → 2005-01-31 (+6d). Complete tasks 0 → 6.

Changed:

| ID | Task | Start | Finish | Duration | Complete | Total float | Other |
| --- | --- | --- | --- | --- | --- | --- | --- |
| 1 | **Preproducción** | 2005-01-03 A |  | 8.5d → 9d | 0% → 99% | 0d → 7d | baseline start none → 2005-01-03; baseline finish none → 2005-01-13 |
| 2 | Revisar guión | 2005-01-03 A | 2005-01-05 A |  | 0% → 100% | 0d → none | baseline start none → 2005-01-03; baseline finish none → 2005-01-05 |
| 3 | Reunir personal de producción | 2005-01-05 A | 2005-01-10 A |  | 0% → 100% | 0d → none | baseline start none → 2005-01-05; baseline finish none → 2005-01-10 |
| 4 | Elegir lugares | 2005-01-10 A | 2005-01-11 A |  | 0% → 100% | 0d → none | baseline start none → 2005-01-10; baseline finish none → 2005-01-11 |
| 5 | Realizar audiciones | 2005-01-11 A | 2005-01-13 A | 2d → 2.5d | 0% → 100% | 0d → none | baseline start none → 2005-01-11; baseline finish none → 2005-01-13 |
| 6 | ¡Preproducción completada! |  |  |  |  | 0d → 7d | baseline start none → 2005-01-13; baseline finish none → 2005-01-13 |
| 7 | **Producción** | 2005-01-13 → 2005-01-17 A (+4d) | 2005-01-19 → 2005-01-25 (+6d) | 4.5d → 7d | 0% → 86% |  | baseline start none → 2005-01-13; baseline finish none → 2005-01-19 |
| 8 | Ensayos | 2005-01-13 → 2005-01-17 A (+4d) | 2005-01-17 → 2005-01-19 A (+2d) | 2.25d → 3d | 0% → 100% | 0d → none | baseline start none → 2005-01-13; baseline finish none → 2005-01-17 |
| 9 | Proyección del video | 2005-01-17 → 2005-01-19 A (+2d) | 2005-01-18 → 2005-01-24 A (+6d) | 2d → 3d | 0% → 100% | 0d → none | baseline start none → 2005-01-17; baseline finish none → 2005-01-18 |
| 10 | Montaje de película | 2005-01-19 → 2005-01-25 (+6d) | 2005-01-19 → 2005-01-25 (+6d) |  |  |  | baseline start none → 2005-01-19; baseline finish none → 2005-01-19 |
| 11 | ¡Producción completada! | 2005-01-19 → 2005-01-25 (+6d) | 2005-01-19 → 2005-01-25 (+6d) |  |  |  | baseline start none → 2005-01-19; baseline finish none → 2005-01-19 |
| 12 | **Postproducción** | 2005-01-20 → 2005-01-26 (+6d) | 2005-01-25 → 2005-01-31 (+6d) |  |  |  | baseline start none → 2005-01-20; baseline finish none → 2005-01-25 |
| 13 | Montaje | 2005-01-20 → 2005-01-26 (+6d) | 2005-01-21 → 2005-01-27 (+6d) |  |  |  | baseline start none → 2005-01-20; baseline finish none → 2005-01-21 |
| 14 | Añadir sonido final | 2005-01-24 → 2005-01-28 (+4d) | 2005-01-24 → 2005-01-28 (+4d) |  |  |  | baseline start none → 2005-01-24; baseline finish none → 2005-01-24 |
| 15 | Copia final para el cliente | 2005-01-25 → 2005-01-31 (+6d) | 2005-01-25 → 2005-01-31 (+6d) |  |  |  | baseline start none → 2005-01-25; baseline finish none → 2005-01-25 |

## Version 3 (saved 2009-05-06, file Comercial Juguetes WingTip 5.mpp)

Last finish 2005-01-31 → 2005-01-25 (-6d). Complete tasks 6 → 0.

Changed:

| ID | Task | Start | Finish | Duration | Complete | Total float | Other |
| --- | --- | --- | --- | --- | --- | --- | --- |
| 1 | **Preproducción** | 2005-01-03 A → 2005-01-03 |  | 9d → 8.5d | 99% → 0% | 7d → 0d | baseline start 2005-01-03 → none; baseline finish 2005-01-13 → none |
| 2 | Revisar guión | 2005-01-03 A → 2005-01-03 | 2005-01-05 A → 2005-01-05 |  | 100% → 0% | none → 0d | baseline start 2005-01-03 → none; baseline finish 2005-01-05 → none |
| 3 | Reunir personal de producción | 2005-01-05 A → 2005-01-05 | 2005-01-10 A → 2005-01-10 |  | 100% → 0% | none → 0d | baseline start 2005-01-05 → none; baseline finish 2005-01-10 → none |
| 4 | Elegir lugares | 2005-01-10 A → 2005-01-10 | 2005-01-11 A → 2005-01-11 |  | 100% → 0% | none → 0d | baseline start 2005-01-10 → none; baseline finish 2005-01-11 → none |
| 5 | Realizar audiciones | 2005-01-11 A → 2005-01-11 | 2005-01-13 A → 2005-01-13 | 2.5d → 2d | 100% → 0% | none → 0d | baseline start 2005-01-11 → none; baseline finish 2005-01-13 → none |
| 6 | ¡Preproducción completada! |  |  |  |  | 7d → 0d | baseline start 2005-01-13 → none; baseline finish 2005-01-13 → none |
| 7 | **Producción** | 2005-01-17 A → 2005-01-13 (-4d) | 2005-01-25 → 2005-01-19 (-6d) | 7d → 4.5d | 86% → 0% |  | baseline start 2005-01-13 → none; baseline finish 2005-01-19 → none |
| 8 | Ensayos | 2005-01-17 A → 2005-01-13 (-4d) | 2005-01-19 A → 2005-01-17 (-2d) | 3d → 2.25d | 100% → 0% | none → 0d | baseline start 2005-01-13 → none; baseline finish 2005-01-17 → none |
| 9 | Proyección del video | 2005-01-19 A → 2005-01-17 (-2d) | 2005-01-24 A → 2005-01-18 (-6d) | 3d → 2d | 100% → 0% | none → 0d | baseline start 2005-01-17 → none; baseline finish 2005-01-18 → none |
| 10 | Montaje de película | 2005-01-25 → 2005-01-19 (-6d) | 2005-01-25 → 2005-01-19 (-6d) |  |  |  | baseline start 2005-01-19 → none; baseline finish 2005-01-19 → none |
| 11 | ¡Producción completada! | 2005-01-25 → 2005-01-19 (-6d) | 2005-01-25 → 2005-01-19 (-6d) |  |  |  | baseline start 2005-01-19 → none; baseline finish 2005-01-19 → none |
| 12 | **Postproducción** | 2005-01-26 → 2005-01-20 (-6d) | 2005-01-31 → 2005-01-25 (-6d) |  |  |  | baseline start 2005-01-20 → none; baseline finish 2005-01-25 → none |
| 13 | Montaje | 2005-01-26 → 2005-01-20 (-6d) | 2005-01-27 → 2005-01-21 (-6d) |  |  |  | baseline start 2005-01-20 → none; baseline finish 2005-01-21 → none |
| 14 | Añadir sonido final | 2005-01-28 → 2005-01-24 (-4d) | 2005-01-28 → 2005-01-24 (-4d) |  |  |  | baseline start 2005-01-24 → none; baseline finish 2005-01-24 → none |
| 15 | Copia final para el cliente | 2005-01-31 → 2005-01-25 (-6d) | 2005-01-31 → 2005-01-25 (-6d) |  |  |  | baseline start 2005-01-25 → none; baseline finish 2005-01-25 → none |

## Version 4 (data date 2005-01-10, saved 2009-05-07, file Comercial Juguetes WingTip 7.mpp)

Last finish 2005-01-25 → 2005-01-31 (+6d). Complete tasks 0 → 6.

Changed:

| ID | Task | Start | Finish | Duration | Complete | Total float | Predecessors | Other |
| --- | --- | --- | --- | --- | --- | --- | --- | --- |
| 1 | **Preproducción** | 2005-01-03 A |  | 8.5d → 9d | 0% → 99% | 0d → 7d |  | baseline start none → 2005-01-03; baseline finish none → 2005-01-13 |
| 2 | Revisar guión | 2005-01-03 A | 2005-01-05 A |  | 0% → 100% | 0d → none |  | baseline start none → 2005-01-03; baseline finish none → 2005-01-05 |
| 3 | Reunir personal de producción | 2005-01-05 A | 2005-01-10 A |  | 0% → 100% | 0d → none |  | baseline start none → 2005-01-05; baseline finish none → 2005-01-10 |
| 4 | Elegir lugares | 2005-01-10 A | 2005-01-11 A |  | 0% → 100% | 0d → none |  | baseline start none → 2005-01-10; baseline finish none → 2005-01-11 |
| 5 | Realizar audiciones | 2005-01-11 A | 2005-01-13 A | 2d → 2.5d | 0% → 100% | 0d → none |  | baseline start none → 2005-01-11; baseline finish none → 2005-01-13 |
| 6 | ¡Preproducción completada! |  |  |  |  | 0d → 7d |  | baseline start none → 2005-01-13; baseline finish none → 2005-01-13 |
| 7 | **Producción** | 2005-01-13 → 2005-01-17 A (+4d) | 2005-01-19 → 2005-01-25 (+6d) | 4.5d → 7d | 0% → 86% |  |  | baseline start none → 2005-01-13; baseline finish none → 2005-01-19 |
| 8 | Ensayos | 2005-01-13 → 2005-01-17 A (+4d) | 2005-01-17 → 2005-01-19 A (+2d) | 2.25d → 3d | 0% → 100% | 0d → none |  | baseline start none → 2005-01-13; baseline finish none → 2005-01-17 |
| 9 | Proyección del video | 2005-01-17 → 2005-01-19 A (+2d) | 2005-01-18 → 2005-01-24 A (+6d) | 2d → 3d | 0% → 100% | 0d → none | 8 → 8FS-5% | baseline start none → 2005-01-17; baseline finish none → 2005-01-18 |
| 10 | Montaje de película | 2005-01-19 → 2005-01-25 (+6d) | 2005-01-19 → 2005-01-25 (+6d) |  |  |  |  | baseline start none → 2005-01-19; baseline finish none → 2005-01-19 |
| 11 | ¡Producción completada! | 2005-01-19 → 2005-01-25 (+6d) | 2005-01-19 → 2005-01-25 (+6d) |  |  |  |  | baseline start none → 2005-01-19; baseline finish none → 2005-01-19 |
| 12 | **Postproducción** | 2005-01-20 → 2005-01-26 (+6d) | 2005-01-25 → 2005-01-31 (+6d) |  |  |  |  | baseline start none → 2005-01-20; baseline finish none → 2005-01-25 |
| 13 | Montaje | 2005-01-20 → 2005-01-26 (+6d) | 2005-01-21 → 2005-01-27 (+6d) |  |  |  |  | baseline start none → 2005-01-20; baseline finish none → 2005-01-21 |
| 14 | Añadir sonido final | 2005-01-24 → 2005-01-28 (+4d) | 2005-01-24 → 2005-01-28 (+4d) |  |  |  |  | baseline start none → 2005-01-24; baseline finish none → 2005-01-24 |
| 15 | Copia final para el cliente | 2005-01-25 → 2005-01-31 (+6d) | 2005-01-25 → 2005-01-31 (+6d) |  |  |  |  | baseline start none → 2005-01-25; baseline finish none → 2005-01-25 |
